| Task_UID | Row_ID | Project | WBS | Outline_Level | Task_Name | Is_Summary | Is_Milestone | Is_Critical | Phase | Planned_Start | Planned_Finish | Actual_Start | Pct_Complete | Duration_Days | Remaining_Days | Owners | Next_Action_Owner | Status | Derail_Status | Derail_Days | Proof_URL | Document_URL | Notes | Last_Updated_By | Last_Updated_At | Last_Synced | Source_File | Sync_Version | Action_Required | Parent_WBS | Actual_Finish |
| --- | --- | --- | --- | --- | --- | --- | --- | --- | --- | --- | --- | --- | --- | --- | --- | --- | --- | --- | --- | --- | --- | --- | --- | --- | --- | --- | --- | --- | --- | --- | --- |
| 157 | 157 | Chembur School Module MSP_Template | 1 | 1 | Chembur School Extension | Yes | No | Yes | Chembur School Extension | 2026-03-19T18:30:00.000Z | 2030-06-26T18:30:00.000Z | 2026-03-19T18:30:00.000Z | 50 | 1115 | 557.5 | PMD | PMD | In Progress | On Track | 0 | https://drive.google.com/file/d/1W_R16nRqLuoACoZWaWpAL_FxggTWinOs/view?usp=drive_link | https://drive.google.com/file/d/1W_R16nRqLuoACoZWaWpAL_FxggTWinOs/view?usp=drive_link | Lorem Ipsum, Lorem Ipsum | system@app.local | 2026-05-22T07:36:37.429Z | 2026-05-22T07:36:37.429Z | Avanta Module MSP.xml | 2026-05-22T07:36:37.429Z | No |  |  |
| 149 | 149 | Chembur School Module MSP_Template | 1.1 | 2 | Precon Design Works | Yes | No | No | Chembur School Extension | 2026-03-19T18:30:00.000Z | 2027-03-17T18:30:00.000Z | 2026-03-19T18:30:00.000Z | 88 | 260 | 32.3 | PMD | PMD | In Progress | On Track | 0 | https://docs.google.com/document/d/1sASnIowHtyPzguBG3cW_xhnnZkGKcKhSpAJ_a5ciAsM/edit?usp=sharing | https://docs.google.com/document/d/1sASnIowHtyPzguBG3cW_xhnnZkGKcKhSpAJ_a5ciAsM/edit?usp=sharing | Lorem Ipsum, Lorem Ipsum | system@app.local | 2026-05-22T07:36:37.429Z | 2026-05-22T07:36:37.429Z | Avanta Module MSP.xml | 2026-05-22T07:36:37.429Z | No | 1 |  |
| 1 | 1 | Chembur School Module MSP_Template | 1.1.1 | 3 | F1 Feasibility Take off | Yes | No | No | Precon Design Works | 2026-03-19T18:30:00.000Z | 2026-05-03T18:30:00.000Z | 2026-03-19T18:30:00.000Z | 100 | 32 | 0 | PMD | PMD | Complete | On Track | 0 | https://drive.google.com/file/d/13vYSKJ2PiJIzHgslhr9DZMFRK7AAq3Nb/view?usp=sharing | https://drive.google.com/file/d/13vYSKJ2PiJIzHgslhr9DZMFRK7AAq3Nb/view?usp=sharing | Lorem Ipsum, Lorem Ipsum | system@app.local | 2026-05-22T07:36:37.429Z | 2026-05-22T07:36:37.429Z | Avanta Module MSP.xml | 2026-05-22T07:36:37.429Z | No | 1.1 | 2026-05-03T18:30:00.000Z |
| 2 |  | Pawna Project | 1.1.1.1 | 4 | F1.1 Initial Management Note |  | No | Yes | F1 - Feasibility & Concept | 2026-03-24T02:30:00.000Z | 2026-05-04T11:30:00.000Z |  | 0 |  |  |  |  | Not Started |  | 18 |  |  |  |  | 2026-05-22T14:04:10.000Z |  |  |  | No |  |  |
| 3 |  | Pawna Project | 1.1.1.2 | 4 | F1.2 Legal Title check |  | No | Yes | F1 - Feasibility & Concept | 2026-05-05T02:30:00.000Z | 2026-06-15T11:30:00.000Z |  | 0 |  |  |  |  | Not Started |  | 0 |  |  |  |  | 2026-05-22T14:04:10.000Z |  |  |  | No |  |  |
| 4 |  | Pawna Project | 1.1.1.3 | 4 | F1.3 Initial Liaison Note |  | No | Yes | F1 - Feasibility & Concept | 2026-05-05T02:30:00.000Z | 2026-06-15T11:30:00.000Z |  | 0 |  |  |  |  | Not Started |  | 0 |  |  |  |  | 2026-05-22T14:04:10.000Z |  |  |  | No |  |  |
| 5 |  | Pawna Project | 1.1.1.4 | 4 | F1.4 Initial Sales & Marketing Note |  | No | Yes | F1 - Feasibility & Concept | 2026-05-05T02:30:00.000Z | 2026-06-15T11:30:00.000Z |  | 0 |  |  |  |  | Not Started |  | 0 |  |  |  |  | 2026-05-22T14:04:10.000Z |  |  |  | No |  |  |
| 6 |  | Pawna Project | 1.1.1.5 | 4 | F1.5 Initial Architectural Note |  | No | Yes | F1 - Feasibility & Concept | 2026-05-05T02:30:00.000Z | 2026-06-15T11:30:00.000Z |  | 0 |  |  |  |  | Not Started |  | 0 |  |  |  |  | 2026-05-22T14:04:10.000Z |  |  |  | No |  |  |
| 11 |  | Pawna Project | 1.1.1.6 | 4 | F1.7 Project VISION Doc Sign off |  | No | Yes | F1 - Feasibility & Concept | 2026-07-07T02:30:00.000Z | 2026-07-13T11:30:00.000Z |  | 0 |  |  |  |  | Not Started |  | 0 |  |  |  |  | 2026-05-22T14:04:10.000Z |  |  |  | No |  |  |
| 12 | 12 | Chembur School Module MSP_Template | 1.1.2 | 3 | F2 Feasibility Study Advance | Yes | No | No | Precon Design Works | 2026-03-19T18:30:00.000Z | 2026-04-08T18:30:00.000Z | 2026-03-19T18:30:00.000Z | 100 | 15 | 0 | PMD | PMD | Complete | On Track | 0 | https://drive.google.com/file/d/1uaikEnfTgQRfd8tUTaxPVXR_wDY7ugVH/view?usp=sharing | https://drive.google.com/file/d/1uaikEnfTgQRfd8tUTaxPVXR_wDY7ugVH/view?usp=sharing | Lorem Ipsum, Lorem Ipsum | system@app.local | 2026-05-22T07:36:37.429Z | 2026-05-22T07:36:37.429Z | Avanta Module MSP.xml | 2026-05-22T07:36:37.429Z | No | 1.1 | 2026-04-08T18:30:00.000Z |
| 13 |  | Pawna Project | 1.1.2.1 | 4 | F2.1 Appoint Liaison Arch |  | No | Yes | F2 - Preliminary Design | 2026-07-14T02:30:00.000Z | 2026-08-03T11:30:00.000Z |  | 0 |  |  |  |  | Not Started |  | 0 |  |  |  |  | 2026-05-22T14:04:10.000Z |  |  |  | No |  |  |
| 14 |  | Pawna Project | 1.1.2.2 | 4 | F2.2 Appoint Architect (Feasibility Study only) |  | No | Yes | F1 - Feasibility & Concept | 2026-07-14T02:30:00.000Z | 2026-08-03T11:30:00.000Z |  | 0 |  |  |  |  | Not Started |  | 0 |  |  |  |  | 2026-05-22T14:04:10.000Z |  |  |  | No |  |  |
| 15 |  | Pawna Project | 1.1.2.3 | 4 | F2.3 Appoint Structural consultant |  | No | Yes | F2 - Preliminary Design | 2026-07-14T02:30:00.000Z | 2026-08-03T11:30:00.000Z |  | 0 |  |  |  |  | Not Started |  | 0 |  |  |  |  | 2026-05-22T14:04:10.000Z |  |  |  | No |  |  |
| 16 |  | Pawna Project | 1.1.2.4 | 4 | F2.4 Legal team check initial TITLE Check |  | No | Yes | F2 - Preliminary Design | 2026-07-14T02:30:00.000Z | 2026-08-03T11:30:00.000Z |  | 0 |  |  |  |  | Not Started |  | 0 |  |  |  |  | 2026-05-22T14:04:10.000Z |  |  |  | No |  |  |
| 17 |  | Pawna Project | 1.1.2.5 | 4 | F2.5 Appoint Cost Consultant |  | No | Yes | F2 - Preliminary Design | 2026-07-14T02:30:00.000Z | 2026-08-03T11:30:00.000Z |  | 0 |  |  |  |  | Not Started |  | 0 |  |  |  |  | 2026-05-22T14:04:10.000Z |  |  |  | No |  |  |
| 18 |  | Pawna Project | 1.1.2.6 | 4 | F2.6 Appoint Geo-Technical Agency |  | No | Yes | F2 - Preliminary Design | 2026-07-14T02:30:00.000Z | 2026-08-03T11:30:00.000Z |  | 0 |  |  |  |  | Not Started |  | 0 |  |  |  |  | 2026-05-22T14:04:10.000Z |  |  |  | No |  |  |
| 19 |  | Pawna Project | 1.1.2.7 | 4 | F2.7 Appoint Surveyor |  | No | Yes | F2 - Preliminary Design | 2026-07-14T02:30:00.000Z | 2026-08-03T11:30:00.000Z |  | 0 |  |  |  |  | Not Started |  | 0 |  |  |  |  | 2026-05-22T14:04:10.000Z |  |  |  | No |  |  |
| 20 |  | Pawna Project | 1.1.2.8 | 4 | F2.8 Appoint MOEF Consultant |  | No | Yes | F2 - Preliminary Design | 2026-07-14T02:30:00.000Z | 2026-08-03T11:30:00.000Z |  | 0 |  |  |  |  | Not Started |  | 0 |  |  |  |  | 2026-05-22T14:04:10.000Z |  |  |  | No |  |  |
| 21 |  | Pawna Project | 1.1.2.9 | 4 | F2.9 Sign off |  | No | Yes | F2 - Preliminary Design | 2026-08-04T02:30:00.000Z | 2026-08-10T11:30:00.000Z |  | 0 |  |  |  |  | Not Started |  | 0 |  |  |  |  | 2026-05-22T14:04:10.000Z |  |  |  | No |  |  |
| 22 | 22 | Chembur School Module MSP_Template | 1.1.3 | 3 | F3 Feasibility Approval | Yes | No | No | Precon Design Works | 2026-03-19T18:30:00.000Z | 2026-04-29T18:30:00.000Z | 2026-03-19T18:30:00.000Z | 100 | 30 | 0 | Architect | Architect | Complete | On Track | 0 | https://drive.google.com/file/d/1W_R16nRqLuoACoZWaWpAL_FxggTWinOs/view?usp=drive_link | https://drive.google.com/file/d/1W_R16nRqLuoACoZWaWpAL_FxggTWinOs/view?usp=drive_link | Lorem Ipsum, Lorem Ipsum | system@app.local | 2026-05-22T07:36:37.429Z | 2026-05-22T07:36:37.429Z | Avanta Module MSP.xml | 2026-05-22T07:36:37.429Z | No | 1.1 | 2026-04-29T18:30:00.000Z |
| 23 |  | Pawna Project | 1.1.3.1 | 4 | F3.1 Conduct Commercial Due Diligence |  | No | Yes | F3 - Detailed Design | 2026-08-11T02:30:00.000Z | 2026-09-21T11:30:00.000Z |  | 0 |  |  |  |  | Not Started |  | 0 |  |  |  |  | 2026-05-22T14:04:10.000Z |  |  |  | No |  |  |
| 24 |  | Pawna Project | 1.1.3.2 | 4 | F3.1 Conduct PRE -Legal Due Diligence |  | No | Yes | F3 - Detailed Design | 2026-08-11T02:30:00.000Z | 2026-09-21T11:30:00.000Z |  | 0 |  |  |  |  | Not Started |  | 0 |  |  |  |  | 2026-05-22T14:04:10.000Z |  |  |  | No |  |  |
| 25 |  | Pawna Project | 1.1.3.3 | 4 | F3.1 Conduct Preliminary Liaison DD |  | No | Yes | F2 - Preliminary Design | 2026-08-11T02:30:00.000Z | 2026-09-21T11:30:00.000Z |  | 0 |  |  |  |  | Not Started |  | 0 |  |  |  |  | 2026-05-22T14:04:10.000Z |  |  |  | No |  |  |
| 26 |  | Pawna Project | 1.1.3.4 | 4 | F3.1 Conduct Preliminary Construction Due Diligence |  | No | Yes | F2 - Preliminary Design | 2026-08-11T02:30:00.000Z | 2026-09-21T11:30:00.000Z |  | 0 |  |  |  |  | Not Started |  | 0 |  |  |  |  | 2026-05-22T14:04:10.000Z |  |  |  | No |  |  |
| 27 |  | Pawna Project | 1.1.3.5 | 4 | F3.4 FINAL Feasibility Report |  | No | No | F1 - Feasibility & Concept | 2026-10-27T02:30:00.000Z | 2026-11-02T11:30:00.000Z |  | 0 |  |  |  |  | Not Started |  | 0 |  |  |  |  | 2026-05-22T14:04:10.000Z |  |  |  | No |  |  |
| 28 |  | Pawna Project | 1.1.3.6 | 4 | F3.5 Land Acquisition |  | Yes | Yes | F3 - Detailed Design | 2026-10-26T11:30:00.000Z | 2026-10-26T11:30:00.000Z |  | 0 |  |  |  |  | Not Started |  | 0 |  |  |  |  | 2026-05-22T14:04:10.000Z |  |  |  | No |  |  |
| 29 | 29 | Chembur School Module MSP_Template | 1.1.4 | 3 | C1 Develop Project Master Plan & Concept | Yes | No | No | Precon Design Works | 2026-03-19T18:30:00.000Z | 2026-04-29T18:30:00.000Z | 2026-03-19T18:30:00.000Z | 100 | 30 | 0 | Architect | Architect | Complete | On Track | 0 | https://docs.google.com/document/d/1sASnIowHtyPzguBG3cW_xhnnZkGKcKhSpAJ_a5ciAsM/edit?usp=sharing | https://docs.google.com/document/d/1sASnIowHtyPzguBG3cW_xhnnZkGKcKhSpAJ_a5ciAsM/edit?usp=sharing | Lorem Ipsum, Lorem Ipsum | system@app.local | 2026-05-22T07:36:37.429Z | 2026-05-22T07:36:37.429Z | Avanta Module MSP.xml | 2026-05-22T07:36:37.429Z | No | 1.1 | 2026-04-29T18:30:00.000Z |
| 30 |  | Pawna Project | 1.1.4.1 | 4 | C1.1 ERP Creation of WBS (Limited to Costs related to Concept Budget only) |  | No | Yes | F1 - Feasibility & Concept | 2026-10-27T02:30:00.000Z | 2026-10-28T11:30:00.000Z |  | 0 |  |  |  |  | Not Started |  | 0 |  |  |  |  | 2026-05-22T14:04:10.000Z |  |  |  | No |  |  |
| 31 |  | Pawna Project | 1.1.4.2 | 4 | C1.1 Appointment of Consultants |  | No | Yes | General | 2026-10-29T02:30:00.000Z | 2026-11-04T11:30:00.000Z |  | 0 |  |  |  |  | Not Started |  | 0 |  |  |  |  | 2026-05-22T14:04:10.000Z |  |  |  | No |  |  |
| 32 |  | Pawna Project | 1.1.4.3 | 4 | C1.2 Master Layout Concept Initiation |  | No | Yes | F1 - Feasibility & Concept | 2026-11-05T02:30:00.000Z | 2026-12-16T11:30:00.000Z |  | 0 |  |  |  |  | Not Started |  | 0 |  |  |  |  | 2026-05-22T14:04:10.000Z |  |  |  | No |  |  |
| 33 |  | Pawna Project | 1.1.4.4 | 4 | C1.2 Preparation of Arch Concept Package |  | No | Yes | F1 - Feasibility & Concept | 2026-11-05T02:30:00.000Z | 2026-12-16T11:30:00.000Z |  | 0 |  |  |  |  | Not Started |  | 0 |  |  |  |  | 2026-05-22T14:04:10.000Z |  |  |  | No |  |  |
| 34 |  | Pawna Project | 1.1.4.5 | 4 | C1.2 Structural |  | No | Yes | E3 - Structural Work | 2026-11-05T02:30:00.000Z | 2026-12-16T11:30:00.000Z |  | 0 |  |  |  |  | Not Started |  | 0 |  |  |  |  | 2026-05-22T14:04:10.000Z |  |  |  | No |  |  |
| 35 |  | Pawna Project | 1.1.4.6 | 4 | C1.2 Services (MEP Inputs) |  | No | Yes | General | 2026-11-05T02:30:00.000Z | 2026-12-16T11:30:00.000Z |  | 0 |  |  |  |  | Not Started |  | 0 |  |  |  |  | 2026-05-22T14:04:10.000Z |  |  |  | No |  |  |
| 36 |  | Pawna Project | 1.1.4.7 | 4 | C1.2 Liaison |  | No | Yes | General | 2026-12-17T02:30:00.000Z | 2026-12-30T11:30:00.000Z |  | 0 |  |  |  |  | Not Started |  | 0 |  |  |  |  | 2026-05-22T14:04:10.000Z |  |  |  | No |  |  |
| 37 |  | Pawna Project | 1.1.4.8 | 4 | C1.3 Project Schedule |  | No | Yes | General | 2027-01-20T02:30:00.000Z | 2027-01-22T11:30:00.000Z |  | 0 |  |  |  |  | Not Started |  | 0 |  |  |  |  | 2026-05-22T14:04:10.000Z |  |  |  | No |  |  |
| 38 |  | Pawna Project | 1.1.4.9 | 4 | C1.3 Signoff Directors + PMD Head |  | No | Yes | General | 2027-01-25T02:30:00.000Z | 2027-01-28T11:30:00.000Z |  | 0 |  |  |  |  | Not Started |  | 0 |  |  |  |  | 2026-05-22T14:04:10.000Z |  |  |  | No |  |  |
| 39 | 39 | Chembur School Module MSP_Template | 1.1.5 | 3 | C2 Project Review C2 stage & Approval | Yes | No | No | Precon Design Works | 2026-03-19T18:30:00.000Z | 2026-04-08T18:30:00.000Z | 2026-03-19T18:30:00.000Z | 100 | 15 | 0 | Architect | Architect | Complete | On Track | 0 | https://drive.google.com/file/d/13vYSKJ2PiJIzHgslhr9DZMFRK7AAq3Nb/view?usp=sharing | https://drive.google.com/file/d/13vYSKJ2PiJIzHgslhr9DZMFRK7AAq3Nb/view?usp=sharing | Lorem Ipsum, Lorem Ipsum | system@app.local | 2026-05-22T07:36:37.429Z | 2026-05-22T07:36:37.429Z | Avanta Module MSP.xml | 2026-05-22T07:36:37.429Z | No | 1.1 | 2026-04-08T18:30:00.000Z |
| 40 |  | Pawna Project | 1.1.5.1 | 4 | C2.1 Add Comments, Suggestions in Concept stage Approvals. |  | No | Yes | F1 - Feasibility & Concept | 2027-01-29T02:30:00.000Z | 2027-02-18T11:30:00.000Z |  | 0 |  |  |  |  | Not Started |  | 0 |  |  |  |  | 2026-05-22T14:04:10.000Z |  |  |  | No |  |  |
| 41 |  | Pawna Project | 1.1.5.2 | 4 | C2.1 Arch Design Concept stage 1 closure |  | No | Yes | F1 - Feasibility & Concept | 2027-02-19T02:30:00.000Z | 2027-03-11T11:30:00.000Z |  | 0 |  |  |  |  | Not Started |  | 0 |  |  |  |  | 2026-05-22T14:04:10.000Z |  |  |  | No |  |  |
| 42 |  | Pawna Project | 1.1.5.3 | 4 | C2.2 Update Project Plan in MSP. |  | No | Yes | General | 2027-03-12T02:30:00.000Z | 2027-03-18T11:30:00.000Z |  | 0 |  |  |  |  | Not Started |  | 0 |  |  |  |  | 2026-05-22T14:04:10.000Z |  |  |  | No |  |  |
| 43 |  | Pawna Project | 1.1.5.4 | 4 | C2.3 Review for Approvability - Advance Concept |  | No | Yes | F1 - Feasibility & Concept | 2027-03-19T02:30:00.000Z | 2027-03-25T11:30:00.000Z |  | 0 |  |  |  |  | Not Started |  | 0 |  |  |  |  | 2026-05-22T14:04:10.000Z |  |  |  | No |  |  |
| 150 |  | Pawna Project | 1.1.5.5 | 4 | C2.3 LAND Acquisition to complete |  | Yes | No | General | 2026-03-24T02:30:00.000Z | 2026-03-24T02:30:00.000Z |  | 0 |  |  |  |  | Not Started |  | 59 |  |  |  |  | 2026-05-22T14:04:10.000Z |  |  |  | No |  |  |
| 151 |  | Pawna Project | 1.1.5.6 | 4 | Signoff Directors + PMD Head |  | No | Yes | General | 2027-03-26T02:30:00.000Z | 2027-04-01T11:30:00.000Z |  | 0 |  |  |  |  | Not Started |  | 0 |  |  |  |  | 2026-05-22T14:04:10.000Z |  |  |  | No |  |  |
| 44 | 44 | Chembur School Module MSP_Template | 1.1.6 | 3 | S1 Schematic - 50% | Yes | No | No | Precon Design Works | 2026-03-19T18:30:00.000Z | 2026-05-20T18:30:00.000Z | 2026-03-19T18:30:00.000Z | 100 | 45 | 0 | Architect | Architect | Complete | On Track | 0 | https://drive.google.com/file/d/1isCvTW920OPh2NLZD3_rXpN_5f70t7rv/view?usp=sharing | https://drive.google.com/file/d/1isCvTW920OPh2NLZD3_rXpN_5f70t7rv/view?usp=sharing | Lorem Ipsum, Lorem Ipsum | system@app.local | 2026-05-22T07:36:37.429Z | 2026-05-22T07:36:37.429Z | Avanta Module MSP.xml | 2026-05-22T07:36:37.429Z | No | 1.1 | 2026-05-20T18:30:00.000Z |
| 45 |  | Pawna Project | 1.1.6.1 | 4 | S1.1 Initial DBR STAGE - Structure + MEP to initiate design |  | No | Yes | S1 - Schematic Design | 2027-04-02T02:30:00.000Z | 2027-04-08T11:30:00.000Z |  | 0 |  |  |  |  | Not Started |  | 0 |  |  |  |  | 2026-05-22T14:04:11.000Z |  |  |  | No |  |  |
| 46 |  | Pawna Project | 1.1.6.2 | 4 | S1.2 Architectural Schematic Drawings |  | No | Yes | S1 - Schematic Design | 2027-04-09T02:30:00.000Z | 2027-05-13T11:30:00.000Z |  | 0 |  |  |  |  | Not Started |  | 0 |  |  |  |  | 2026-05-22T14:04:11.000Z |  |  |  | No |  |  |
| 47 |  | Pawna Project | 1.1.6.3 | 4 | S1.2 Structural Schematic Drawings |  | No | Yes | S1 - Schematic Design | 2027-04-09T02:30:00.000Z | 2027-05-13T11:30:00.000Z |  | 0 |  |  |  |  | Not Started |  | 0 |  |  |  |  | 2026-05-22T14:04:11.000Z |  |  |  | No |  |  |
| 48 |  | Pawna Project | 1.1.6.4 | 4 | S1.2 MEP Schematic drawings |  | No | Yes | S1 - Schematic Design | 2027-04-09T02:30:00.000Z | 2027-05-13T11:30:00.000Z |  | 0 |  |  |  |  | Not Started |  | 0 |  |  |  |  | 2026-05-22T14:04:11.000Z |  |  |  | No |  |  |
| 49 |  | Pawna Project | 1.1.6.5 | 4 | S1.2 Landscape schematic dwgs |  | No | Yes | S1 - Schematic Design | 2027-04-09T02:30:00.000Z | 2027-05-13T11:30:00.000Z |  | 0 |  |  |  |  | Not Started |  | 0 |  |  |  |  | 2026-05-22T14:04:11.000Z |  |  |  | No |  |  |
| 50 |  | Pawna Project | 1.1.6.6 | 4 | S1.2 Coordinated drwgs Workshop will All Consultants & Stakeholders |  | No | Yes | S1 - Schematic Design | 2027-04-09T02:30:00.000Z | 2027-05-13T11:30:00.000Z |  | 0 |  |  |  |  | Not Started |  | 0 |  |  |  |  | 2026-05-22T14:04:11.000Z |  |  |  | No |  |  |
| 51 |  | Pawna Project | 1.1.6.7 | 4 | S1.2 Sign off Coordinated Drwgs |  | No | Yes | S1 - Schematic Design | 2027-05-14T02:30:00.000Z | 2027-05-20T11:30:00.000Z |  | 0 |  |  |  |  | Not Started |  | 0 |  |  |  |  | 2026-05-22T14:04:11.000Z |  |  |  | No |  |  |
| 52 |  | Pawna Project | 1.1.6.8 | 4 | S1.3 Project Schedule |  | No | No | S1 - Schematic Design | 2027-05-21T02:30:00.000Z | 2027-06-24T11:30:00.000Z |  | 0 |  |  |  |  | Not Started |  | 0 |  |  |  |  | 2026-05-22T14:04:11.000Z |  |  |  | No |  |  |
| 53 |  | Pawna Project | 1.1.6.9 | 4 | S1.4 Construction of Experience centre/Sales office/Sample flat,show flat |  | No | No | S1 - Schematic Design | 2027-05-14T02:30:00.000Z | 2027-07-15T11:30:00.000Z |  | 0 |  |  |  |  | Not Started |  | 0 |  |  |  |  | 2026-05-22T14:04:11.000Z |  |  |  | No |  |  |
| 152 |  | Pawna Project | 1.1.6.10 | 4 | Sign Off |  | No | No | General | 2027-07-16T02:30:00.000Z | 2027-07-22T11:30:00.000Z |  | 0 |  |  |  |  | Not Started |  | 0 |  |  |  |  | 2026-05-22T14:04:11.000Z |  |  |  | No |  |  |
| 54 | 54 | Chembur School Module MSP_Template | 1.1.7 | 3 | S2 Schematic - 100% | Yes | No | No | Precon Design Works | 2026-03-19T18:30:00.000Z | 2026-05-03T18:30:00.000Z | 2026-03-19T18:30:00.000Z | 100 | 32 | 0 | Architect | Architect | Complete | On Track | 0 | https://drive.google.com/file/d/1uaikEnfTgQRfd8tUTaxPVXR_wDY7ugVH/view?usp=sharing | https://drive.google.com/file/d/1uaikEnfTgQRfd8tUTaxPVXR_wDY7ugVH/view?usp=sharing | Lorem Ipsum, Lorem Ipsum | system@app.local | 2026-05-22T07:36:37.429Z | 2026-05-22T07:36:37.429Z | Avanta Module MSP.xml | 2026-05-22T07:36:37.429Z | No | 1.1 | 2026-05-03T18:30:00.000Z |
| 55 |  | Pawna Project | 1.1.7.1 | 4 | S2.1 Shortlisting of products and vendors |  | No | No | S2 - BIM Coordination | 2026-03-24T02:30:00.000Z | 2026-03-24T11:30:00.000Z |  | 0 |  |  |  |  | Not Started |  | 59 |  |  |  |  | 2026-05-22T14:04:11.000Z |  |  |  | No |  |  |
| 56 |  | Pawna Project | 1.1.7.2 | 4 | S2.2 Structural |  | No | Yes | S2 - BIM Coordination | 2027-05-21T02:30:00.000Z | 2027-06-10T11:30:00.000Z |  | 0 |  |  |  |  | Not Started |  | 0 |  |  |  |  | 2026-05-22T14:04:11.000Z |  |  |  | No |  |  |
| 57 |  | Pawna Project | 1.1.7.3 | 4 | S2.2 Architecture |  | No | Yes | S2 - BIM Coordination | 2027-05-21T02:30:00.000Z | 2027-06-10T11:30:00.000Z |  | 0 |  |  |  |  | Not Started |  | 0 |  |  |  |  | 2026-05-22T14:04:11.000Z |  |  |  | No |  |  |
| 58 |  | Pawna Project | 1.1.7.4 | 4 | S2.2 MEP (Services) |  | No | Yes | S2 - BIM Coordination | 2027-05-21T02:30:00.000Z | 2027-06-10T11:30:00.000Z |  | 0 |  |  |  |  | Not Started |  | 0 |  |  |  |  | 2026-05-22T14:04:11.000Z |  |  |  | No |  |  |
| 59 |  | Pawna Project | 1.1.7.5 | 4 | S2.3 BIM Drwg Coordination |  | Yes | No | S2 - BIM Coordination | 2027-06-10T11:30:00.000Z | 2027-06-10T11:30:00.000Z |  | 0 |  |  |  |  | Not Started |  | 0 |  |  |  |  | 2026-05-22T14:04:11.000Z |  |  |  | No |  |  |
| 60 |  | Pawna Project | 1.1.7.6 | 4 | Sign Off |  | No | Yes | General | 2027-06-22T02:30:00.000Z | 2027-06-28T11:30:00.000Z |  | 0 |  |  |  |  | Not Started |  | 0 |  |  |  |  | 2026-05-22T14:04:11.000Z |  |  |  | No |  |  |
| 61 | 61 | Chembur School Module MSP_Template | 1.1.8 | 3 | D1 DD 1 - 50% | Yes | No | No | Precon Design Works | 2026-04-16T18:30:00.000Z | 2026-07-22T18:30:00.000Z | 2026-04-16T18:30:00.000Z | 100 | 70 | 0 | Architect | Architect | Complete | On Track | 0 | https://drive.google.com/file/d/1W_R16nRqLuoACoZWaWpAL_FxggTWinOs/view?usp=drive_link | https://drive.google.com/file/d/1W_R16nRqLuoACoZWaWpAL_FxggTWinOs/view?usp=drive_link | Lorem Ipsum, Lorem Ipsum | system@app.local | 2026-05-22T07:36:37.429Z | 2026-05-22T07:36:37.429Z | Avanta Module MSP.xml | 2026-05-22T07:36:37.429Z | No | 1.1 | 2026-07-22T18:30:00.000Z |
| 62 |  | Pawna Project | 1.1.8.1 | 4 | D1.1 Collation & syncronisation of all consultant designs |  | No | No | D1 - Design Development | 2027-06-29T02:30:00.000Z | 2027-08-09T11:30:00.000Z |  | 0 |  |  |  |  | Not Started |  | 0 |  |  |  |  | 2026-05-22T14:04:11.000Z |  |  |  | No |  |  |
| 63 |  | Pawna Project | 1.1.8.2 | 4 | D 1.2 Interiors Stage |  | No | Yes | General | 2027-06-29T02:30:00.000Z | 2027-08-09T11:30:00.000Z |  | 0 |  |  |  |  | Not Started |  | 0 |  |  |  |  | 2026-05-22T14:04:11.000Z |  |  |  | No |  |  |
| 65 |  | Pawna Project | 1.1.8.3 | 4 | D1.4 Schedule & Site Logistics |  | No | No | D1 - Design Development | 2027-06-11T02:30:00.000Z | 2027-06-24T11:30:00.000Z |  | 0 |  |  |  |  | Not Started |  | 0 |  |  |  |  | 2026-05-22T14:04:11.000Z |  |  |  | No |  |  |
| 66 |  | Pawna Project | 1.1.8.4 | 4 | D1.5 DD1 Budget Review & Approval |  | No | Yes | D1 - Design Development | 2027-08-31T02:30:00.000Z | 2027-09-06T11:30:00.000Z |  | 0 |  |  |  |  | Not Started |  | 0 |  |  |  |  | 2026-05-22T14:04:11.000Z |  |  |  | No |  |  |
| 67 |  | Pawna Project | 1.1.8.5 | 4 | D1.7 BIM Model Update & Controls |  | Yes | No | D1 - Design Development | 2027-09-06T11:30:00.000Z | 2027-09-06T11:30:00.000Z |  | 0 |  |  |  |  | Not Started |  | 0 |  |  |  |  | 2026-05-22T14:04:11.000Z |  |  |  | No |  |  |
| 68 |  | Pawna Project | 1.1.8.6 | 4 | D1.8 Finance Review & Tracking |  | No | Yes | D1 - Design Development | 2027-09-07T02:30:00.000Z | 2027-09-13T11:30:00.000Z |  | 0 |  |  |  |  | Not Started |  | 0 |  |  |  |  | 2026-05-22T14:04:11.000Z |  |  |  | No |  |  |
| 69 |  | Pawna Project | 1.1.8.7 | 4 | D1 STAGE GATE |  | No | Yes | D1 - Design Development | 2027-09-14T02:30:00.000Z | 2027-09-16T11:30:00.000Z |  | 0 |  |  |  |  | Not Started |  | 0 |  |  |  |  | 2026-05-22T14:04:11.000Z |  |  |  | No |  |  |
| 70 | 70 | Chembur School Module MSP_Template | 1.1.9 | 3 | D2 DD 2 - 100% | Yes | No | Yes | Precon Design Works | 2026-07-23T18:30:00.000Z | 2026-09-30T18:30:00.000Z | 2026-07-23T18:30:00.000Z | 64 | 50 | 17.9 | Architect | Architect | In Progress | On Track | 0 | https://docs.google.com/document/d/1sASnIowHtyPzguBG3cW_xhnnZkGKcKhSpAJ_a5ciAsM/edit?usp=sharing | https://docs.google.com/document/d/1sASnIowHtyPzguBG3cW_xhnnZkGKcKhSpAJ_a5ciAsM/edit?usp=sharing | Lorem Ipsum, Lorem Ipsum | system@app.local | 2026-05-22T07:36:37.429Z | 2026-05-22T07:36:37.429Z | Avanta Module MSP.xml | 2026-05-22T07:36:37.429Z | No | 1.1 |  |

| Task_UID | Row_ID | Project | WBS | Outline_Level | Task_Name | Is_Summary | Is_Milestone | Is_Critical | Phase | Planned_Start | Planned_Finish | Actual_Start | Pct_Complete | Duration_Days | Remaining_Days | Owners | Next_Action_Owner | Status | Derail_Status | Derail_Days | Proof_URL | Document_URL | Notes | Last_Updated_By | Last_Updated_At | Last_Synced | Source_File | Sync_Version | Action_Required | Parent_WBS |
| --- | --- | --- | --- | --- | --- | --- | --- | --- | --- | --- | --- | --- | --- | --- | --- | --- | --- | --- | --- | --- | --- | --- | --- | --- | --- | --- | --- | --- | --- | --- |
| 71 |  | Pawna Project | 1.1.9.1 | 4 | D2.1 Stage Coordinated Drwgs |  | No | Yes | D2 - Construction Documentation | 2027-09-17T02:30:00.000Z | 2027-10-07T11:30:00.000Z |  | 0 |  |  |  |  | Not Started |  | 0 |  |  |  |  | 2026-05-22T14:04:11.000Z |  |  |  | No |  |
| 72 |  | Pawna Project | 1.1.9.2 | 4 | D2.2 Final Package Interior Finishes: Material Selection & Approval (Stage-wise) |  | No | Yes | D2 - Construction Documentation | 2027-09-17T02:30:00.000Z | 2027-10-07T11:30:00.000Z |  | 0 |  |  |  |  | Not Started |  | 0 |  |  |  |  | 2026-05-22T14:04:11.000Z |  |  |  | No |  |
| 73 |  | Pawna Project | 1.1.9.3 | 4 | D2.2 Construction of Sample flat (at actual location/as per discussion with Management) |  | No | Yes | D2 - Construction Documentation | 2027-09-17T02:30:00.000Z | 2027-10-07T11:30:00.000Z |  | 0 |  |  |  |  | Not Started |  | 0 |  |  |  |  | 2026-05-22T14:04:11.000Z |  |  |  | No |  |
| 74 |  | Pawna Project | 1.1.9.4 | 4 | D2.3 Schedule,ERP readiness to be reviewed & Approved |  | No | Yes | D2 - Construction Documentation | 2027-10-08T02:30:00.000Z | 2027-10-21T11:30:00.000Z |  | 0 |  |  |  |  | Not Started |  | 0 |  |  |  |  | 2026-05-22T14:04:11.000Z |  |  |  | No |  |
| 75 |  | Pawna Project | 1.1.9.5 | 4 | D2.4 System finalization of Special Contracts |  | No | Yes | D2 - Construction Documentation | 2027-10-22T02:30:00.000Z | 2027-11-11T11:30:00.000Z |  | 0 |  |  |  |  | Not Started |  | 0 |  |  |  |  | 2026-05-22T14:04:11.000Z |  |  |  | No |  |
| 76 |  | Pawna Project | 1.1.9.6 | 4 | D2.5 Contract & Procurement Strategy - Finalization |  | No | Yes | D2 - Construction Documentation | 2027-10-22T02:30:00.000Z | 2027-11-11T11:30:00.000Z |  | 0 |  |  |  |  | Not Started |  | 0 |  |  |  |  | 2026-05-22T14:04:11.000Z |  |  |  | No |  |
| 77 |  | Pawna Project | 1.1.9.7 | 4 | D2.6 Finance Review & Approval |  | No | Yes | D2 - Construction Documentation | 2027-11-12T02:30:00.000Z | 2027-11-18T11:30:00.000Z |  | 0 |  |  |  |  | Not Started |  | 0 |  |  |  |  | 2026-05-22T14:04:11.000Z |  |  |  | No |  |
| 78 |  | Pawna Project | 1.1.9.8 | 4 | DD2 STAGE GATE |  | No | Yes | D1 - Design Development | 2027-11-19T02:30:00.000Z | 2027-11-25T11:30:00.000Z |  | 0 |  |  |  |  | Not Started |  | 0 |  |  |  |  | 2026-05-22T14:04:11.000Z |  |  |  | No |  |
| 79 | 79 | Chembur School Module MSP_Template | 1.1.10 | 3 | T1 Tender Issue Doc | Yes | No | No | Precon Design Works | 2026-03-19T18:30:00.000Z | 2027-03-17T18:30:00.000Z | 2026-03-19T18:30:00.000Z | 12 | 260 | 228.8 | Architect | Architect | In Progress | On Track | 0 | https://drive.google.com/file/d/13vYSKJ2PiJIzHgslhr9DZMFRK7AAq3Nb/view?usp=sharing | https://drive.google.com/file/d/13vYSKJ2PiJIzHgslhr9DZMFRK7AAq3Nb/view?usp=sharing | Lorem Ipsum, Lorem Ipsum | system@app.local | 2026-05-22T07:36:37.429Z | 2026-05-22T07:36:37.429Z | Avanta Module MSP.xml | 2026-05-22T07:36:37.429Z | No | 1.1 |
| 80 |  | Mulund School Extension | 1.1.1.1 | 4 | T1.1 Issue of Tender drwgs for Tendering purpose |  | No | Yes | T1 - Tender Stage | 2026-03-24T02:30:00.000Z | 2026-04-06T11:30:00.000Z |  | 0 |  |  |  |  | Not Started |  | 46 |  |  |  |  | 2026-05-22T14:05:56.000Z |  |  |  | No |  |
| 81 |  | Mulund School Extension | 1.1.1.2 | 4 | T1.2 Prepration of Boq & Tender Doc for Floating tender/Review |  | No | No | T1 - Tender Stage | 2026-04-07T02:30:00.000Z | 2026-04-16T11:30:00.000Z |  | 0 |  |  |  |  | Not Started |  | 36 |  |  |  |  | 2026-05-22T14:05:56.000Z |  |  |  | No |  |
| 83 |  | Pawna Project | 1.1.10.3 | 4 | T1.4 Tender Issuance |  | No | No | T1 - Tender Stage | 2028-01-21T02:30:00.000Z | 2028-05-04T11:30:00.000Z |  | 0 |  |  |  |  | Not Started |  | 0 |  |  |  |  | 2026-05-22T14:04:12.000Z |  |  |  | No |  |
| 84 |  | Pawna Project | 1.1.10.4 | 4 | T1.5 Project Schedule |  | No | No | T1 - Tender Stage | 2028-05-05T02:30:00.000Z | 2028-05-11T11:30:00.000Z |  | 0 |  |  |  |  | Not Started |  | 0 |  |  |  |  | 2026-05-22T14:04:12.000Z |  |  |  | No |  |
| 85 |  | Pawna Project | 1.1.10.5 | 4 | T1.6 ERP |  | No | No | T1 - Tender Stage | 2026-03-24T02:30:00.000Z | 2026-04-13T11:30:00.000Z |  | 0 |  |  |  |  | Not Started |  | 39 |  |  |  |  | 2026-05-22T14:04:12.000Z |  |  |  | No |  |
| 86 | 86 | Chembur School Module MSP_Template | 1.2 | 2 | B Stages of Budgeting | Yes | No | No | Chembur School Extension | 2026-03-26T18:30:00.000Z | 2026-11-25T18:30:00.000Z | 2026-03-26T18:30:00.000Z | 91 | 175 | 15.4 | Architect | Architect | In Progress | On Track | 0 | https://drive.google.com/file/d/1isCvTW920OPh2NLZD3_rXpN_5f70t7rv/view?usp=sharing | https://drive.google.com/file/d/1isCvTW920OPh2NLZD3_rXpN_5f70t7rv/view?usp=sharing | Lorem Ipsum, Lorem Ipsum | system@app.local | 2026-05-22T07:36:37.429Z | 2026-05-22T07:36:37.429Z | Avanta Module MSP.xml | 2026-05-22T07:36:37.429Z | No | 1 |
| 87 |  | Pawna Project | 1.2.1 | 3 | B F1 Feasibility Stage Budget & P&L PB1 |  | No | Yes | F1 - Feasibility & Concept | 2026-06-16T02:30:00.000Z | 2026-07-06T11:30:00.000Z |  | 0 |  |  |  |  | Not Started |  | 0 |  |  |  |  | 2026-05-22T14:04:12.000Z |  |  |  | No |  |
| 88 |  | Pawna Project | 1.2.2 | 3 | B F3 Collate Thumb rule data Per sqft basis & prepare Preliminary Feasibility Budget to be part of Feasibility report. |  | No | Yes | F1 - Feasibility & Concept | 2026-09-22T02:30:00.000Z | 2026-10-12T11:30:00.000Z |  | 0 |  |  |  |  | Not Started |  | 0 |  |  |  |  | 2026-05-22T14:04:12.000Z |  |  |  | No |  |
| 89 |  | Pawna Project | 1.2.3 | 3 | B F3 Feasibility Stage Budget V3 |  | No | Yes | F1 - Feasibility & Concept | 2026-10-13T02:30:00.000Z | 2026-10-19T11:30:00.000Z |  | 0 |  |  |  |  | Not Started |  | 0 |  |  |  |  | 2026-05-22T14:04:12.000Z |  |  |  | No |  |
| 90 |  | Pawna Project | 1.2.4 | 3 | B F3 Cash flow & Financial Projection for Project |  | No | Yes | F3 - Detailed Design | 2026-10-20T02:30:00.000Z | 2026-10-26T11:30:00.000Z |  | 0 |  |  |  |  | Not Started |  | 0 |  |  |  |  | 2026-05-22T14:04:12.000Z |  |  |  | No |  |
| 91 |  | Pawna Project | 1.2.5 | 3 | B C1 Budget (Work Out Rough Cost) |  | No | Yes | General | 2026-12-31T02:30:00.000Z | 2027-01-08T11:30:00.000Z |  | 0 |  |  |  |  | Not Started |  | 0 |  |  |  |  | 2026-05-22T14:04:12.000Z |  |  |  | No |  |
| 92 |  | Pawna Project | 1.2.6 | 3 | B C1 Cost Efficiency and VE Review of Pre-concept package **CRITICAL Stage to be done in concert with Dir & CP |  | No | Yes | F1 - Feasibility & Concept | 2027-01-11T02:30:00.000Z | 2027-01-19T11:30:00.000Z |  | 0 |  |  |  |  | Not Started |  | 0 |  |  |  |  | 2026-05-22T14:04:12.000Z |  |  |  | No |  |
| 93 |  | Pawna Project | 1.2.7 | 3 | B C2 Work Out Concept Costing & Check |  | No | Yes | F1 - Feasibility & Concept | 2027-03-12T02:30:00.000Z | 2027-03-25T11:30:00.000Z |  | 0 |  |  |  |  | Not Started |  | 0 |  |  |  |  | 2026-05-22T14:04:12.000Z |  |  |  | No |  |
| 94 |  | Pawna Project | 1.2.8 | 3 | B S1 Budget Stage 3A |  | No | No | S1 - Schematic Design | 2027-05-21T02:30:00.000Z | 2027-05-31T11:30:00.000Z |  | 0 |  |  |  |  | Not Started |  | 0 |  |  |  |  | 2026-05-22T14:04:12.000Z |  |  |  | No |  |
| 95 |  | Pawna Project | 1.2.9 | 3 | B S2 Budget Stage 3B |  | No | Yes | S2 - BIM Coordination | 2027-06-11T02:30:00.000Z | 2027-06-21T11:30:00.000Z |  | 0 |  |  |  |  | Not Started |  | 0 |  |  |  |  | 2026-05-22T14:04:12.000Z |  |  |  | No |  |
| 96 |  | Pawna Project | 1.2.10 | 3 | B DD1 Revised Budget with all Package & Special Contracts to be captured |  | No | Yes | D1 - Design Development | 2027-08-10T02:30:00.000Z | 2027-08-30T11:30:00.000Z |  | 0 |  |  |  |  | Not Started |  | 0 |  |  |  |  | 2026-05-22T14:04:12.000Z |  |  |  | No |  |
| 97 |  | Pawna Project | 1.2.11 | 3 | B DD2 Stage Budget |  | No | Yes | D1 - Design Development | 2027-10-08T02:30:00.000Z | 2027-10-21T11:30:00.000Z |  | 0 |  |  |  |  | Not Started |  | 0 |  |  |  |  | 2026-05-22T14:04:12.000Z |  |  |  | No |  |
| 98 |  | Mulund School Extension | 1.2.1 | 3 | B T Budget to be reviewed if any major changes & Highlighted |  | No | No | General | 2026-04-17T02:30:00.000Z | 2026-04-30T11:30:00.000Z |  | 0 |  |  |  |  | Not Started |  | 22 |  |  |  |  | 2026-05-22T14:05:56.000Z |  |  |  | No |  |
| 99 | 99 | Chembur School Module MSP_Template | 1.3 | 2 | L Stages of Liason | Yes | No | No | Chembur School Extension | 2026-03-19T18:30:00.000Z | 2030-04-03T18:30:00.000Z | 2026-03-19T18:30:00.000Z | 54 | 1055 | 481.6 | Architect | Architect | In Progress | On Track | 0 | https://drive.google.com/file/d/1uaikEnfTgQRfd8tUTaxPVXR_wDY7ugVH/view?usp=sharing | https://drive.google.com/file/d/1uaikEnfTgQRfd8tUTaxPVXR_wDY7ugVH/view?usp=sharing | Lorem Ipsum, Lorem Ipsum | system@app.local | 2026-05-22T07:36:37.429Z | 2026-05-22T07:36:37.429Z | Avanta Module MSP.xml | 2026-05-22T07:36:37.429Z | No | 1 |
| 100 |  | Pawna Project | 1.3.1 | 3 | L 1.1: 0 FSI IOD - Submit |  | No | No | General | 2027-03-12T02:30:00.000Z | 2027-04-08T11:30:00.000Z |  | 0 |  |  |  |  | Not Started |  | 0 |  |  |  |  | 2026-05-22T14:04:12.000Z |  |  |  | No |  |
| 101 |  | Pawna Project | 1.3.2 | 3 | L 1.2 0 FSI IOD - Recieve |  | No | No | General | 2027-04-09T02:30:00.000Z | 2027-04-29T11:30:00.000Z |  | 0 |  |  |  |  | Not Started |  | 0 |  |  |  |  | 2026-05-22T14:04:12.000Z |  |  |  | No |  |
| 102 |  | Pawna Project | 1.3.3 | 3 | L 2.1 0 FSI CC - Submit |  | No | No | General | 2027-04-30T02:30:00.000Z | 2027-07-01T11:30:00.000Z |  | 0 |  |  |  |  | Not Started |  | 0 |  |  |  |  | 2026-05-22T14:04:12.000Z |  |  |  | No |  |
| 103 |  | Pawna Project | 1.3.4 | 3 | L 2.2 0 FSI CC - Recieve |  | No | No | General | 2027-07-02T02:30:00.000Z | 2027-07-22T11:30:00.000Z |  | 0 |  |  |  |  | Not Started |  | 0 |  |  |  |  | 2026-05-22T14:04:12.000Z |  |  |  | No |  |
| 104 |  | Pawna Project | 1.3.5 | 3 | L 3.1 MOEF -Submit |  | No | No | General | 2027-05-21T02:30:00.000Z | 2027-07-01T11:30:00.000Z |  | 0 |  |  |  |  | Not Started |  | 0 |  |  |  |  | 2026-05-22T14:04:12.000Z |  |  |  | No |  |
| 105 |  | Pawna Project | 1.3.6 | 3 | L 3.2 MOEF -Recieve |  | No | No | General | 2027-07-02T02:30:00.000Z | 2028-01-25T11:30:00.000Z |  | 0 |  |  |  |  | Not Started |  | 0 |  |  |  |  | 2026-05-22T14:04:12.000Z |  |  |  | No |  |
| 106 |  | Pawna Project | 1.3.7 | 3 | L 4.1 CFO NOC -Submit |  | No | No | General | 2027-05-21T02:30:00.000Z | 2027-06-10T11:30:00.000Z |  | 0 |  |  |  |  | Not Started |  | 0 |  |  |  |  | 2026-05-22T14:04:12.000Z |  |  |  | No |  |
| 107 |  | Pawna Project | 1.3.8 | 3 | L 4.2 CFO NOC -Recieve |  | No | No | General | 2027-06-11T02:30:00.000Z | 2027-07-22T11:30:00.000Z |  | 0 |  |  |  |  | Not Started |  | 0 |  |  |  |  | 2026-05-22T14:04:12.000Z |  |  |  | No |  |
| 108 |  | Pawna Project | 1.3.9 | 3 | L 5.1 Concessions -Submit |  | No | No | General | 2027-05-21T02:30:00.000Z | 2027-07-29T11:30:00.000Z |  | 0 |  |  |  |  | Not Started |  | 0 |  |  |  |  | 2026-05-22T14:04:12.000Z |  |  |  | No |  |
| 109 |  | Pawna Project | 1.3.10 | 3 | L 5.2 Concessions -Recieve |  | No | No | General | 2027-07-30T02:30:00.000Z | 2027-09-30T11:30:00.000Z |  | 0 |  |  |  |  | Not Started |  | 0 |  |  |  |  | 2026-05-22T14:04:12.000Z |  |  |  | No |  |
| 110 |  | Pawna Project | 1.3.11 | 3 | L 6.1 Full IOD -Submit |  | No | No | General | 2027-09-20T02:30:00.000Z | 2027-11-19T11:30:00.000Z |  | 0 |  |  |  |  | Not Started |  | 0 |  |  |  |  | 2026-05-22T14:04:12.000Z |  |  |  | No |  |
| 111 |  | Chembur School Extension | 1.3.1 | 3 | L 1 UD Permission |  | No | No | General | 2026-04-07T02:30:00.000Z | 2026-04-20T11:30:00.000Z |  | 0 |  |  |  |  | Not Started |  | 32 |  |  |  |  | 2026-05-22T14:05:40.000Z |  |  |  | No |  |
| 112 |  | Pawna Project | 1.3.13 | 3 | L 7.1 Society/Collector NOC -Submit |  | No | No | General | 2027-10-01T02:30:00.000Z | 2027-10-07T11:30:00.000Z |  | 0 |  |  |  |  | Not Started |  | 0 |  |  |  |  | 2026-05-22T14:04:12.000Z |  |  |  | No |  |
| 113 |  | Chembur School Extension | 1.3.2 | 3 | L 2 Full IOD Permission |  | No | No | General | 2026-04-21T02:30:00.000Z | 2026-05-11T11:30:00.000Z |  | 0 |  |  |  |  | Not Started |  | 11 |  |  |  |  | 2026-05-22T14:05:40.000Z |  |  |  | No |  |
| 114 |  | Pawna Project | 1.3.15 | 3 | L 8.1 Plinth CC -Submit |  | No | No | General | 2028-01-24T02:30:00.000Z | 2028-03-03T11:30:00.000Z |  | 0 |  |  |  |  | Not Started |  | 0 |  |  |  |  | 2026-05-22T14:04:12.000Z |  |  |  | No |  |
| 115 |  | Pawna Project | 1.3.16 | 3 | L 8.2 Plinth CC -Recieve |  | No | No | General | 2028-03-06T02:30:00.000Z | 2028-03-24T11:30:00.000Z |  | 0 |  |  |  |  | Not Started |  | 0 |  |  |  |  | 2026-05-22T14:04:12.000Z |  |  |  | No |  |
| 156 |  | Pawna Project | 1.3.17 | 3 | L 8.3 CC beyond Plinth - Submit |  | No | Yes | General | 2028-08-04T02:30:00.000Z | 2028-08-24T11:30:00.000Z |  | 0 |  |  |  |  | Not Started |  | 0 |  |  |  |  | 2026-05-22T14:04:12.000Z |  |  |  | No |  |
| 154 |  | Pawna Project | 1.3.18 | 3 | L 8.4 CC beyond Plinth - Recieve |  | No | Yes | General | 2028-08-25T02:30:00.000Z | 2028-10-05T11:30:00.000Z |  | 0 |  |  |  |  | Not Started |  | 0 |  |  |  |  | 2026-05-22T14:04:12.000Z |  |  |  | No |  |
| 116 |  | Chembur School Extension | 1.3.4 | 3 | L 4 CC for 8th to 11th floor |  | No | No | General | 2026-06-23T02:30:00.000Z | 2026-07-06T11:30:00.000Z |  | 0 |  |  |  |  | Not Started |  | 0 |  |  |  |  | 2026-05-22T14:05:40.000Z |  |  |  | No |  |
| 117 |  | Mulund School Extension | 1.3.1 | 3 | L 1 Part CFO 6th floor |  | No | Yes | General | 2026-10-12T02:30:00.000Z | 2026-10-30T11:30:00.000Z |  | 0 |  |  |  |  | Not Started |  | 0 |  |  |  |  | 2026-05-22T14:05:56.000Z |  |  |  | No |  |
| 121 |  | Chembur School Extension | 1.3.5 | 3 | L 5 Final CFO - Recieve |  | No | No | General | 2027-07-26T02:30:00.000Z | 2027-08-25T11:30:00.000Z |  | 0 |  |  |  |  | Not Started |  | 0 |  |  |  |  | 2026-05-22T14:05:40.000Z |  |  |  | No |  |
| 122 |  | Mulund School Extension | 1.3.2 | 3 | L 11.1 Part OC 6th floor |  | No | Yes | General | 2026-11-02T02:30:00.000Z | 2026-12-11T11:30:00.000Z |  | 0 |  |  |  |  | Not Started |  | 0 |  |  |  |  | 2026-05-22T14:05:56.000Z |  |  |  | No |  |
| 124 |  | Chembur School Extension | 1.3.6 | 3 | L 6 OC - Recieve |  | No | No | General | 2027-09-02T02:30:00.000Z | 2027-11-24T11:30:00.000Z |  | 0 |  |  |  |  | Not Started |  | 0 |  |  |  |  | 2026-05-22T14:05:40.000Z |  |  |  | No |  |
| 125 | 125 | Chembur School Module MSP_Template | 1.4 | 2 | LG Stages of Legal | Yes | No | No | Chembur School Extension | 2026-03-19T18:30:00.000Z | 2026-12-17T18:30:00.000Z | 2026-03-19T18:30:00.000Z | 51 | 196 | 96.4 | Architect | Architect | In Progress | On Track | 0 | https://drive.google.com/file/d/1W_R16nRqLuoACoZWaWpAL_FxggTWinOs/view?usp=drive_link | https://drive.google.com/file/d/1W_R16nRqLuoACoZWaWpAL_FxggTWinOs/view?usp=drive_link | Lorem Ipsum, Lorem Ipsum | system@app.local | 2026-05-22T07:36:37.429Z | 2026-05-22T07:36:37.429Z | Avanta Module MSP.xml | 2026-05-22T07:36:37.429Z | No | 1 |
| 126 |  | Pawna Project | 1.4.1 | 3 | LG 1 Legal 1: Project Acquisition Package |  | No | No | General | 2026-03-24T02:30:00.000Z | 2026-03-24T11:30:00.000Z |  | 0 |  |  |  |  | Not Started |  | 59 |  |  |  |  | 2026-05-22T14:04:12.000Z |  |  |  | No |  |
| 127 |  | Pawna Project | 1.4.2 | 3 | LG 2 Legal 2: Customer Legal Set Package |  | No | No | General | 2027-11-22T02:30:00.000Z | 2027-12-10T11:30:00.000Z |  | 0 |  |  |  |  | Not Started |  | 0 |  |  |  |  | 2026-05-22T14:04:12.000Z |  |  |  | No |  |
| 128 |  | Pawna Project | 1.4.3 | 3 | LG 3 Legal 3: Sales Process Documents Package |  | No | No | General | 2028-01-24T02:30:00.000Z | 2028-02-11T11:30:00.000Z |  | 0 |  |  |  |  | Not Started |  | 0 |  |  |  |  | 2026-05-22T14:04:12.000Z |  |  |  | No |  |
| 129 |  | Pawna Project | 1.4.4 | 3 | LG 4 Legal 4: RERA Submission Package |  | No | No | General | 2027-10-01T02:30:00.000Z | 2027-10-21T11:30:00.000Z |  | 0 |  |  |  |  | Not Started |  | 0 |  |  |  |  | 2026-05-22T14:04:12.000Z |  |  |  | No |  |
| 130 |  | Pawna Project | 1.4.5 | 3 | LG5 Legal 5: Project Legal Closing Package |  | No | No | General | 2026-03-24T02:30:00.000Z | 2026-04-13T11:30:00.000Z |  | 0 |  |  |  |  | Not Started |  | 39 |  |  |  |  | 2026-05-22T14:04:12.000Z |  |  |  | No |  |
| 131 | 131 | Chembur School Module MSP_Template | 1.5 | 2 | M Marketing | Yes | No | No | Chembur School Extension | 2026-03-25T18:30:00.000Z | 2026-11-29T18:30:00.000Z | 2026-03-25T18:30:00.000Z | 80 | 178 | 34.9 | Architect | Architect | In Progress | On Track | 0 | https://docs.google.com/document/d/1sASnIowHtyPzguBG3cW_xhnnZkGKcKhSpAJ_a5ciAsM/edit?usp=sharing | https://docs.google.com/document/d/1sASnIowHtyPzguBG3cW_xhnnZkGKcKhSpAJ_a5ciAsM/edit?usp=sharing | Lorem Ipsum, Lorem Ipsum | system@app.local | 2026-05-22T07:36:37.429Z | 2026-05-22T07:36:37.429Z | Avanta Module MSP.xml | 2026-05-22T07:36:37.429Z | No | 1 |
| 132 |  | Pawna Project | 1.5.1 | 3 | M1: TEASER |  | No | No | General | 2027-01-29T02:30:00.000Z | 2027-06-03T11:30:00.000Z |  | 0 |  |  |  |  | Not Started |  | 0 |  |  |  |  | 2026-05-22T14:04:12.000Z |  |  |  | No |  |
| 133 |  | Pawna Project | 1.5.2 | 3 | M2: Expression Of Interest |  | No | No | General | 2027-05-21T02:30:00.000Z | 2027-12-02T11:30:00.000Z |  | 0 |  |  |  |  | Not Started |  | 0 |  |  |  |  | 2026-05-22T14:04:12.000Z |  |  |  | No |  |
| 134 |  | Pawna Project | 1.5.3 | 3 | M3: Pre Launch |  | No | No | General | 2027-05-21T02:30:00.000Z | 2027-11-04T11:30:00.000Z |  | 0 |  |  |  |  | Not Started |  | 0 |  |  |  |  | 2026-05-22T14:04:12.000Z |  |  |  | No |  |
| 135 |  | Pawna Project | 1.5.4 | 3 | M4: LAUNCH |  | No | No | General | 2027-06-29T02:30:00.000Z | 2028-01-24T11:30:00.000Z |  | 0 |  |  |  |  | Not Started |  | 0 |  |  |  |  | 2026-05-22T14:04:12.000Z |  |  |  | No |  |
| 136 | 136 | Chembur School Module MSP_Template | 1.6 | 2 | CP Contract & Procurement | Yes | No | Yes | Chembur School Extension | 2026-11-12T18:30:00.000Z | 2027-02-24T18:30:00.000Z |  | 0 | 75 | 75 | Architect | Architect | Not Started | On Track | 0 | https://drive.google.com/file/d/13vYSKJ2PiJIzHgslhr9DZMFRK7AAq3Nb/view?usp=sharing | https://drive.google.com/file/d/13vYSKJ2PiJIzHgslhr9DZMFRK7AAq3Nb/view?usp=sharing | Lorem Ipsum, Lorem Ipsum | system@app.local | 2026-05-22T07:36:37.429Z | 2026-05-22T07:36:37.429Z | Avanta Module MSP.xml | 2026-05-22T07:36:37.429Z | No | 1 |
| 137 |  | Chembur School Extension | 1.4.1 | 3 | CP1 PEB Work |  | No | No | CP1 - Procurement | 2026-04-17T02:30:00.000Z | 2026-05-07T11:30:00.000Z |  | 0 |  |  |  |  | Not Started |  | 15 |  |  |  |  | 2026-05-22T14:05:40.000Z |  |  |  | No |  |
| 138 |  | Chembur School Extension | 1.4.2 | 3 | CP2 Interior Finishing & MEP |  | No | No | CP2 - Construction Execution | 2026-05-01T02:30:00.000Z | 2026-06-11T11:30:00.000Z |  | 0 |  |  |  |  | Not Started |  | 0 |  |  |  |  | 2026-05-22T14:05:40.000Z |  |  |  | No |  |
| 139 |  | Chembur School Extension | 1.4.3 | 3 | CP3 Lift |  | No | No | General | 2026-05-01T02:30:00.000Z | 2026-06-11T11:30:00.000Z |  | 0 |  |  |  |  | Not Started |  | 0 |  |  |  |  | 2026-05-22T14:05:40.000Z |  |  |  | No |  |
| 140 |  | Mulund School Extension | 1.4.1 | 3 | CP1 Interior Work Finishing & MEP |  | No | No | CP1 - Procurement | 2026-04-17T02:30:00.000Z | 2026-05-21T11:30:00.000Z |  | 0 |  |  |  |  | Not Started |  | 1 |  |  |  |  | 2026-05-22T14:05:56.000Z |  |  |  | No |  |
| 141 |  | Mulund School Extension | 1.4.2 | 3 | CP2 HVAC Work |  | No | No | CP2 - Construction Execution | 2026-04-17T02:30:00.000Z | 2026-05-21T11:30:00.000Z |  | 0 |  |  |  |  | Not Started |  | 1 |  |  |  |  | 2026-05-22T14:05:56.000Z |  |  |  | No |  |
| 142 |  | Chembur School Extension | 1.4.6 | 3 | CP6 HVAC Works |  | No | No | General | 2026-05-01T02:30:00.000Z | 2026-06-11T11:30:00.000Z |  | 0 |  |  |  |  | Not Started |  | 0 |  |  |  |  | 2026-05-22T14:05:41.000Z |  |  |  | No |  |
| 143 | 143 | Chembur School Module MSP_Template | 1.7 | 2 | E Execution | Yes | No | Yes | Chembur School Extension | 2026-04-09T18:30:00.000Z | 2030-06-26T18:30:00.000Z | 2026-04-09T18:30:00.000Z | 4 | 1100 | 1052.8 | Architect | Architect | In Progress | On Track | 0 | https://drive.google.com/file/d/1isCvTW920OPh2NLZD3_rXpN_5f70t7rv/view?usp=sharing | https://drive.google.com/file/d/1isCvTW920OPh2NLZD3_rXpN_5f70t7rv/view?usp=sharing | Lorem Ipsum, Lorem Ipsum | system@app.local | 2026-05-22T07:36:37.429Z | 2026-05-22T07:36:37.429Z | Avanta Module MSP.xml | 2026-05-22T07:36:37.429Z | No | 1 |

| Task_UID | Row_ID | Project | WBS | Outline_Level | Task_Name | Is_Summary | Is_Milestone | Is_Critical | Phase | Planned_Start | Planned_Finish | Pct_Complete | Duration_Days | Remaining_Days | Status | Derail_Status | Derail_Days | Last_Updated_By | Last_Updated_At | Last_Synced | Source_File | Sync_Version | Action_Required | Parent_WBS |
| --- | --- | --- | --- | --- | --- | --- | --- | --- | --- | --- | --- | --- | --- | --- | --- | --- | --- | --- | --- | --- | --- | --- | --- | --- |
| 144 |  | Chembur School Extension | 1.5.1 | 3 | E1 Site Preparation & Precon Works |  | No | No | E1 - Mobilization | 2026-03-20T02:30:00.000Z | 2026-05-21T11:30:00.000Z | 0 |  |  | Not Started |  | 1 |  | 2026-05-22T14:05:41.000Z |  |  |  | No |  |
| 145 |  | Chembur School Extension | 1.5.2 | 3 | E2.1 PEB Work |  | No | No | E2 - Foundation Work | 2026-05-08T02:30:00.000Z | 2026-11-09T11:30:00.000Z | 0 |  |  | Not Started |  | 0 |  | 2026-05-22T14:05:41.000Z |  |  |  | No |  |
| 146 |  | Pawna Project | 1.7.3 | 3 | E3 Substructure Work |  | No | Yes | E3 - Structural Work | 2028-06-02T02:30:00.000Z | 2028-08-24T11:30:00.000Z | 0 |  |  | Not Started |  | 0 |  | 2026-05-22T14:04:12.000Z |  |  |  | No |  |
| 147 |  | Pawna Project | 1.7.4 | 3 | E4 Super Structure Work |  | No | Yes | E3 - Structural Work | 2028-10-06T02:30:00.000Z | 2029-06-14T11:30:00.000Z | 0 |  |  | Not Started |  | 0 |  | 2026-05-22T14:04:12.000Z |  |  |  | No |  |
| 148 |  | Mulund School Extension | 1.5.2 | 3 | E2 Finishing & MEP Work |  | No | Yes | E2 - Foundation Work | 2026-06-08T02:30:00.000Z | 2026-11-20T11:30:00.000Z | 0 |  |  | Not Started |  | 0 |  | 2026-05-22T14:05:56.000Z |  |  |  | No |  |
| 153 |  | Mulund School Extension | 1.5.3 | 3 | E3 Soft Handover |  | No | No | E3 - Structural Work | 2026-11-23T02:30:00.000Z | 2026-12-11T11:30:00.000Z | 0 |  |  | Not Started |  | 0 |  | 2026-05-22T14:05:56.000Z |  |  |  | No |  |
| 157 | 157 | Chembur School Module MSP | 1 | 1 | Chembur School Extension | Yes | No | Yes | Chembur School Extension | 2026-03-19T18:30:00.000Z | 2030-06-26T18:30:00.000Z | 0 | 439 | 1115 | In Progress | On Track | 0 | system@app.local | 2026-05-22T07:36:41.400Z | 2026-05-22T07:36:41.400Z | Chembur School Module MSP.xml | 2026-05-22T07:36:41.400Z | No |  |
| 149 | 149 | Chembur School Module MSP | 1.1 | 2 | Precon Design Works | Yes | No | No | Chembur School Extension | 2026-03-31T18:30:00.000Z | 2026-04-29T18:30:00.000Z | 0 | 22 | 22 | Overdue | Delayed | 22 | system@app.local | 2026-05-22T07:36:41.400Z | 2026-05-22T07:36:41.400Z | Chembur School Module MSP.xml | 2026-05-22T07:36:41.400Z | Yes | 1 |
| 79 | 79 | Chembur School Module MSP | 1.1.1 | 3 | T1 Tender Issue Doc | Yes | No | No | Precon Design Works | 2026-03-31T18:30:00.000Z | 2026-04-29T18:30:00.000Z | 0 | 22 | 22 | Overdue | Delayed | 22 | system@app.local | 2026-05-22T07:36:41.400Z | 2026-05-22T07:36:41.400Z | Chembur School Module MSP.xml | 2026-05-22T07:36:41.400Z | Yes | 1.1 |
| 80 | 80 | Chembur School Module MSP | 1.1.1.1 | 4 | T1.1 Issue of Tender drwgs for Tendering purpose | No | No | No | T1 Tender Issue Doc | 2026-03-31T18:30:00.000Z | 2026-04-15T18:30:00.000Z | 0 | 12 | 12 | Overdue | Delayed | 36 | system@app.local | 2026-05-22T07:36:41.400Z | 2026-05-22T07:36:41.400Z | Chembur School Module MSP.xml | 2026-05-22T07:36:41.400Z | Yes | 1.1.1 |
| 81 | 81 | Chembur School Module MSP | 1.1.1.2 | 4 | T1.2 Prepration of Boq & Tender Doc for Floating tender/Review | No | No | No | T1 Tender Issue Doc | 2026-04-16T18:30:00.000Z | 2026-04-29T18:30:00.000Z | 0 | 10 | 10 | Overdue | Delayed | 22 | system@app.local | 2026-05-22T07:36:41.400Z | 2026-05-22T07:36:41.400Z | Chembur School Module MSP.xml | 2026-05-22T07:36:41.400Z | Yes | 1.1.1 |
| 86 | 86 | Chembur School Module MSP | 1.2 | 2 | B Stages of Budgeting | Yes | No | No | Chembur School Extension | 2026-04-16T18:30:00.000Z | 2026-04-29T18:30:00.000Z | 0 | 10 | 10 | Overdue | Delayed | 22 | system@app.local | 2026-05-22T07:36:41.400Z | 2026-05-22T07:36:41.400Z | Chembur School Module MSP.xml | 2026-05-22T07:36:41.400Z | Yes | 1 |
| 98 | 98 | Chembur School Module MSP | 1.2.1 | 3 | B T Budget to be reviewed if any major changes & Highlighted | No | No | No | B Stages of Budgeting | 2026-04-16T18:30:00.000Z | 2026-04-29T18:30:00.000Z | 0 | 10 | 10 | Overdue | Delayed | 22 | system@app.local | 2026-05-22T07:36:41.400Z | 2026-05-22T07:36:41.400Z | Chembur School Module MSP.xml | 2026-05-22T07:36:41.400Z | Yes | 1.2 |
| 99 | 99 | Chembur School Module MSP | 1.3 | 2 | L Stages of Liason | Yes | No | No | Chembur School Extension | 2026-04-06T18:30:00.000Z | 2027-11-23T18:30:00.000Z | 0 | 427 | 427 | In Progress | On Track | 0 | system@app.local | 2026-05-22T07:36:41.400Z | 2026-05-22T07:36:41.400Z | Chembur School Module MSP.xml | 2026-05-22T07:36:41.400Z | No | 1 |
| 111 | 111 | Chembur School Module MSP | 1.3.1 | 3 | L 1 UD Permission | No | No | No | L Stages of Liason | 2026-04-06T18:30:00.000Z | 2026-04-19T18:30:00.000Z | 0 | 10 | 10 | Overdue | Delayed | 32 | system@app.local | 2026-05-22T07:36:41.400Z | 2026-05-22T07:36:41.400Z | Chembur School Module MSP.xml | 2026-05-22T07:36:41.400Z | Yes | 1.3 |
| 113 | 113 | Chembur School Module MSP | 1.3.2 | 3 | L 2 Full IOD Permission | No | No | No | L Stages of Liason | 2026-04-20T18:30:00.000Z | 2026-05-10T18:30:00.000Z | 0 | 15 | 15 | Overdue | Delayed | 11 | system@app.local | 2026-05-22T07:36:41.400Z | 2026-05-22T07:36:41.400Z | Chembur School Module MSP.xml | 2026-05-22T07:36:41.400Z | Yes | 1.3 |
| 164 |  | Chembur School Extension | 1.3.3 | 3 | L 3 IOD Compliance |  | No | No | General | 2026-05-12T02:30:00.000Z | 2026-06-22T11:30:00.000Z | 0 |  |  | Not Started |  | 0 |  | 2026-05-22T14:05:40.000Z |  |  |  | No |  |
| 116 | 116 | Chembur School Module MSP | 1.3.4 | 3 | L 4 CC for 8th to 11th floor | No | No | No | L Stages of Liason | 2026-06-22T18:30:00.000Z | 2026-07-05T18:30:00.000Z | 0 | 10 | 10 | Not Started | On Track | 0 | system@app.local | 2026-05-22T07:36:41.400Z | 2026-05-22T07:36:41.400Z | Chembur School Module MSP.xml | 2026-05-22T07:36:41.400Z | No | 1.3 |
| 121 | 121 | Chembur School Module MSP | 1.3.5 | 3 | L 5 Final CFO - Recieve | No | No | No | L Stages of Liason | 2027-07-25T18:30:00.000Z | 2027-08-24T18:30:00.000Z | 0 | 23 | 23 | Not Started | On Track | 0 | system@app.local | 2026-05-22T07:36:41.400Z | 2026-05-22T07:36:41.400Z | Chembur School Module MSP.xml | 2026-05-22T07:36:41.400Z | No | 1.3 |
| 124 | 124 | Chembur School Module MSP | 1.3.6 | 3 | L 6 OC - Recieve | No | No | No | L Stages of Liason | 2027-09-01T18:30:00.000Z | 2027-11-23T18:30:00.000Z | 0 | 60 | 60 | Not Started | On Track | 0 | system@app.local | 2026-05-22T07:36:41.400Z | 2026-05-22T07:36:41.400Z | Chembur School Module MSP.xml | 2026-05-22T07:36:41.400Z | No | 1.3 |
| 136 | 136 | Chembur School Module MSP | 1.4 | 2 | CP Contract & Procurement | Yes | No | No | Chembur School Extension | 2026-04-16T18:30:00.000Z | 2026-06-10T18:30:00.000Z | 0 | 40 | 40 | In Progress | On Track | 0 | system@app.local | 2026-05-22T07:36:41.400Z | 2026-05-22T07:36:41.400Z | Chembur School Module MSP.xml | 2026-05-22T07:36:41.400Z | No | 1 |
| 137 | 137 | Chembur School Module MSP | 1.4.1 | 3 | CP1 PEB Work | No | No | No | CP Contract & Procurement | 2026-04-16T18:30:00.000Z | 2026-05-06T18:30:00.000Z | 0 | 15 | 15 | Overdue | Delayed | 15 | system@app.local | 2026-05-22T07:36:41.400Z | 2026-05-22T07:36:41.400Z | Chembur School Module MSP.xml | 2026-05-22T07:36:41.400Z | Yes | 1.4 |
| 138 | 138 | Chembur School Module MSP | 1.4.2 | 3 | CP2 Interior Finishing & MEP | No | No | No | CP Contract & Procurement | 2026-04-30T18:30:00.000Z | 2026-06-10T18:30:00.000Z | 0 | 30 | 30 | In Progress | On Track | 0 | system@app.local | 2026-05-22T07:36:41.400Z | 2026-05-22T07:36:41.400Z | Chembur School Module MSP.xml | 2026-05-22T07:36:41.400Z | No | 1.4 |
| 139 | 139 | Chembur School Module MSP | 1.4.3 | 3 | CP3 Lift | No | No | No | CP Contract & Procurement | 2026-04-30T18:30:00.000Z | 2026-06-10T18:30:00.000Z | 0 | 30 | 30 | In Progress | On Track | 0 | system@app.local | 2026-05-22T07:36:41.400Z | 2026-05-22T07:36:41.400Z | Chembur School Module MSP.xml | 2026-05-22T07:36:41.400Z | No | 1.4 |
| 140 | 140 | Chembur School Module MSP | 1.4.4 | 3 | CP4 Interior Work for 11th floor Office | No | No | No | CP Contract & Procurement | 2026-04-30T18:30:00.000Z | 2026-06-10T18:30:00.000Z | 0 | 30 | 30 | In Progress | On Track | 0 | system@app.local | 2026-05-22T07:36:41.400Z | 2026-05-22T07:36:41.400Z | Chembur School Module MSP.xml | 2026-05-22T07:36:41.400Z | No | 1.4 |
| 141 | 141 | Chembur School Module MSP | 1.4.5 | 3 | CP5 Fire Fighting Works | No | No | No | CP Contract & Procurement | 2026-04-30T18:30:00.000Z | 2026-06-10T18:30:00.000Z | 0 | 30 | 30 | In Progress | On Track | 0 | system@app.local | 2026-05-22T07:36:41.400Z | 2026-05-22T07:36:41.400Z | Chembur School Module MSP.xml | 2026-05-22T07:36:41.400Z | No | 1.4 |
| 142 | 142 | Chembur School Module MSP | 1.4.6 | 3 | CP6 HVAC Works | No | No | No | CP Contract & Procurement | 2026-04-30T18:30:00.000Z | 2026-06-10T18:30:00.000Z | 0 | 30 | 30 | In Progress | On Track | 0 | system@app.local | 2026-05-22T07:36:41.400Z | 2026-05-22T07:36:41.400Z | Chembur School Module MSP.xml | 2026-05-22T07:36:41.400Z | No | 1.4 |
| 143 | 143 | Chembur School Module MSP | 1.5 | 2 | E Execution | Yes | No | No | Chembur School Extension | 2026-03-19T18:30:00.000Z | 2027-08-26T18:30:00.000Z | 0 | 376 | 376 | In Progress | On Track | 0 | system@app.local | 2026-05-22T07:36:41.400Z | 2026-05-22T07:36:41.400Z | Chembur School Module MSP.xml | 2026-05-22T07:36:41.400Z | No | 1 |
| 144 | 144 | Chembur School Module MSP | 1.5.1 | 3 | E1 Site Preparation & Precon Works | No | No | No | E Execution | 2026-03-19T18:30:00.000Z | 2026-05-20T18:30:00.000Z | 0 | 45 | 45 | Overdue | Delayed | 1 | system@app.local | 2026-05-22T07:36:41.400Z | 2026-05-22T07:36:41.400Z | Chembur School Module MSP.xml | 2026-05-22T07:36:41.400Z | Yes | 1.5 |
| 145 | 145 | Chembur School Module MSP | 1.5.2 | 3 | E2.1 PEB Work | No | No | No | E Execution | 2026-05-07T18:30:00.000Z | 2026-11-08T18:30:00.000Z | 0 | 132 | 132 | In Progress | On Track | 0 | system@app.local | 2026-05-22T07:36:41.400Z | 2026-05-22T07:36:41.400Z | Chembur School Module MSP.xml | 2026-05-22T07:36:41.400Z | No | 1.5 |
| 162 |  | Chembur School Extension | 1.5.3 | 3 | E2.2 Civil Work |  | No | No | E2 - Foundation Work | 2026-06-09T02:30:00.000Z | 2027-01-25T11:30:00.000Z | 0 |  |  | Not Started |  | 0 |  | 2026-05-22T14:05:41.000Z |  |  |  | No |  |
| 148 | 148 | Chembur School Module MSP | 1.5.4 | 3 | E3 Finishing & MEP Work | No | No | No | E Execution | 2026-06-29T18:30:00.000Z | 2026-12-23T18:30:00.000Z | 0 | 128 | 128 | Not Started | On Track | 0 | system@app.local | 2026-05-22T07:36:41.400Z | 2026-05-22T07:36:41.400Z | Chembur School Module MSP.xml | 2026-05-22T07:36:41.400Z | No | 1.5 |
| 161 |  | Chembur School Extension | 1.5.5 | 3 | E4 Interior Work for 11th floor Office |  | No | No | General | 2026-11-10T02:30:00.000Z | 2027-04-12T11:30:00.000Z | 0 |  |  | Not Started |  | 0 |  | 2026-05-22T14:05:41.000Z |  |  |  | No |  |
| 160 |  | Mulund School Extension | 1.5.4 | 3 | E4 Final Handover |  | No | Yes | General | 2026-12-14T02:30:00.000Z | 2026-12-18T11:30:00.000Z | 0 |  |  | Not Started |  | 0 |  | 2026-05-22T14:05:56.000Z |  |  |  | No |  |
| 159 |  | Mulund School Extension | 1.5.1 | 3 | E1 Blcok Work, Gypsum & Electrical conduct Work |  | No | Yes | E1 - Mobilization | 2026-04-27T02:30:00.000Z | 2026-06-26T11:30:00.000Z | 0 |  |  | Not Started |  | 0 |  | 2026-05-22T14:05:56.000Z |  |  |  | No |  |
| 158 |  | Mulund School Extension | 1.4.3 | 3 | CP 3 Block Work, Gypsum & Electrical conduct Work |  | No | Yes | General | 2026-04-07T02:30:00.000Z | 2026-04-20T11:30:00.000Z | 0 |  |  | Not Started |  | 32 |  | 2026-05-22T14:05:56.000Z |  |  |  | No |  |
| 153 | 153 | Chembur School Module MSP | 1.5.9 | 3 | E8 Handover to school team | No | No | No | E Execution | 2027-07-18T18:30:00.000Z | 2027-08-26T18:30:00.000Z | 0 | 30 | 30 | Not Started | On Track | 0 | system@app.local | 2026-05-22T07:36:41.400Z | 2026-05-22T07:36:41.400Z | Chembur School Module MSP.xml | 2026-05-22T07:36:41.400Z | No | 1.5 |
| 157 | 157 | Mulund School Module MSP | 1 | 1 | Mulund School Extension 6th Floor | Yes | No | Yes | Mulund School Extension 6th Floor | 2026-03-23T18:30:00.000Z | 2026-12-17T18:30:00.000Z | 0 | 194 | 194 | In Progress | On Track | 0 | system@app.local | 2026-05-22T07:36:42.894Z | 2026-05-22T07:36:42.894Z | Mulund School Module MSP.xml | 2026-05-22T07:36:42.894Z | No |  |
| 149 | 149 | Mulund School Module MSP | 1.1 | 2 | Precon Design Works | Yes | No | Yes | Mulund School Extension 6th Floor | 2026-03-23T18:30:00.000Z | 2026-04-15T18:30:00.000Z | 0 | 18 | 18 | Overdue | Delayed | 36 | system@app.local | 2026-05-22T07:36:42.894Z | 2026-05-22T07:36:42.894Z | Mulund School Module MSP.xml | 2026-05-22T07:36:42.894Z | Yes | 1 |
| 79 | 79 | Mulund School Module MSP | 1.1.1 | 3 | T1 Tender Issue Doc | Yes | No | Yes | Precon Design Works | 2026-03-23T18:30:00.000Z | 2026-04-15T18:30:00.000Z | 0 | 18 | 18 | Overdue | Delayed | 36 | system@app.local | 2026-05-22T07:36:42.894Z | 2026-05-22T07:36:42.894Z | Mulund School Module MSP.xml | 2026-05-22T07:36:42.894Z | Yes | 1.1 |
| 80 | 80 | Mulund School Module MSP | 1.1.1.1 | 4 | T1.1 Issue of Tender drwgs for Tendering purpose | No | No | Yes | T1 Tender Issue Doc | 2026-03-23T18:30:00.000Z | 2026-04-05T18:30:00.000Z | 0 | 10 | 10 | Overdue | Delayed | 46 | system@app.local | 2026-05-22T07:36:42.894Z | 2026-05-22T07:36:42.894Z | Mulund School Module MSP.xml | 2026-05-22T07:36:42.894Z | Yes | 1.1.1 |
| 81 | 81 | Mulund School Module MSP | 1.1.1.2 | 4 | T1.2 Prepration of Boq & Tender Doc for Floating tender/Review | No | No | No | T1 Tender Issue Doc | 2026-04-06T18:30:00.000Z | 2026-04-15T18:30:00.000Z | 0 | 8 | 8 | Overdue | Delayed | 36 | system@app.local | 2026-05-22T07:36:42.894Z | 2026-05-22T07:36:42.894Z | Mulund School Module MSP.xml | 2026-05-22T07:36:42.894Z | Yes | 1.1.1 |
| 86 | 86 | Mulund School Module MSP | 1.2 | 2 | B Stages of Budgeting | Yes | No | No | Mulund School Extension 6th Floor | 2026-04-16T18:30:00.000Z | 2026-04-29T18:30:00.000Z | 0 | 10 | 10 | Overdue | Delayed | 22 | system@app.local | 2026-05-22T07:36:42.894Z | 2026-05-22T07:36:42.894Z | Mulund School Module MSP.xml | 2026-05-22T07:36:42.894Z | Yes | 1 |
| 98 | 98 | Mulund School Module MSP | 1.2.1 | 3 | B T Budget to be reviewed if any major changes & Highlighted | No | No | No | B Stages of Budgeting | 2026-04-16T18:30:00.000Z | 2026-04-29T18:30:00.000Z | 0 | 10 | 10 | Overdue | Delayed | 22 | system@app.local | 2026-05-22T07:36:42.894Z | 2026-05-22T07:36:42.894Z | Mulund School Module MSP.xml | 2026-05-22T07:36:42.894Z | Yes | 1.2 |
| 99 | 99 | Mulund School Module MSP | 1.3 | 2 | L Stages of Liason | Yes | No | Yes | Mulund School Extension 6th Floor | 2026-10-11T18:30:00.000Z | 2026-12-10T18:30:00.000Z | 0 | 45 | 45 | Not Started | On Track | 0 | system@app.local | 2026-05-22T07:36:42.894Z | 2026-05-22T07:36:42.894Z | Mulund School Module MSP.xml | 2026-05-22T07:36:42.894Z | No | 1 |
| 117 | 117 | Mulund School Module MSP | 1.3.1 | 3 | L 1 Part CFO 6th floor | No | No | Yes | L Stages of Liason | 2026-10-11T18:30:00.000Z | 2026-10-29T18:30:00.000Z | 0 | 15 | 15 | Not Started | On Track | 0 | system@app.local | 2026-05-22T07:36:42.894Z | 2026-05-22T07:36:42.894Z | Mulund School Module MSP.xml | 2026-05-22T07:36:42.894Z | No | 1.3 |
| 122 | 122 | Mulund School Module MSP | 1.3.2 | 3 | L 11.1 Part OC 6th floor | No | No | Yes | L Stages of Liason | 2026-11-01T18:30:00.000Z | 2026-12-10T18:30:00.000Z | 0 | 30 | 30 | Not Started | On Track | 0 | system@app.local | 2026-05-22T07:36:42.894Z | 2026-05-22T07:36:42.894Z | Mulund School Module MSP.xml | 2026-05-22T07:36:42.894Z | No | 1.3 |
| 136 | 136 | Mulund School Module MSP | 1.4 | 2 | CP Contract & Procurement | Yes | No | Yes | Mulund School Extension 6th Floor | 2026-04-06T18:30:00.000Z | 2026-05-20T18:30:00.000Z | 0 | 33 | 33 | Overdue | Delayed | 1 | system@app.local | 2026-05-22T07:36:42.894Z | 2026-05-22T07:36:42.894Z | Mulund School Module MSP.xml | 2026-05-22T07:36:42.894Z | Yes | 1 |
| 140 | 140 | Mulund School Module MSP | 1.4.1 | 3 | CP1 Interior Work Finishing & MEP | No | No | No | CP Contract & Procurement | 2026-04-16T18:30:00.000Z | 2026-05-20T18:30:00.000Z | 0 | 25 | 25 | Overdue | Delayed | 1 | system@app.local | 2026-05-22T07:36:42.894Z | 2026-05-22T07:36:42.894Z | Mulund School Module MSP.xml | 2026-05-22T07:36:42.894Z | Yes | 1.4 |
| 141 | 141 | Mulund School Module MSP | 1.4.2 | 3 | CP2 HVAC Work | No | No | No | CP Contract & Procurement | 2026-04-16T18:30:00.000Z | 2026-05-20T18:30:00.000Z | 0 | 25 | 25 | Overdue | Delayed | 1 | system@app.local | 2026-05-22T07:36:42.894Z | 2026-05-22T07:36:42.894Z | Mulund School Module MSP.xml | 2026-05-22T07:36:42.894Z | Yes | 1.4 |
| 158 | 158 | Mulund School Module MSP | 1.4.3 | 3 | CP 3 Block Work, Gypsum & Electrical conduct Work | No | No | Yes | CP Contract & Procurement | 2026-04-06T18:30:00.000Z | 2026-04-19T18:30:00.000Z | 0 | 10 | 10 | Overdue | Delayed | 32 | system@app.local | 2026-05-22T07:36:42.894Z | 2026-05-22T07:36:42.894Z | Mulund School Module MSP.xml | 2026-05-22T07:36:42.894Z | Yes | 1.4 |
| 143 | 143 | Mulund School Module MSP | 1.5 | 2 | E Execution | Yes | No | Yes | Mulund School Extension 6th Floor | 2026-04-26T18:30:00.000Z | 2026-12-17T18:30:00.000Z | 0 | 170 | 170 | In Progress | On Track | 0 | system@app.local | 2026-05-22T07:36:42.894Z | 2026-05-22T07:36:42.894Z | Mulund School Module MSP.xml | 2026-05-22T07:36:42.894Z | No | 1 |
| 159 | 159 | Mulund School Module MSP | 1.5.1 | 3 | E1 Blcok Work, Gypsum & Electrical conduct Work | No | No | Yes | E Execution | 2026-04-26T18:30:00.000Z | 2026-06-25T18:30:00.000Z | 0 | 45 | 45 | In Progress | On Track | 0 | system@app.local | 2026-05-22T07:36:42.894Z | 2026-05-22T07:36:42.894Z | Mulund School Module MSP.xml | 2026-05-22T07:36:42.894Z | No | 1.5 |
| 148 | 148 | Mulund School Module MSP | 1.5.2 | 3 | E2 Finishing & MEP Work | No | No | Yes | E Execution | 2026-06-07T18:30:00.000Z | 2026-11-19T18:30:00.000Z | 0 | 120 | 120 | Not Started | On Track | 0 | system@app.local | 2026-05-22T07:36:42.894Z | 2026-05-22T07:36:42.894Z | Mulund School Module MSP.xml | 2026-05-22T07:36:42.894Z | No | 1.5 |
| 153 | 153 | Mulund School Module MSP | 1.5.3 | 3 | E3 Soft Handover | No | No | No | E Execution | 2026-11-22T18:30:00.000Z | 2026-12-10T18:30:00.000Z | 0 | 15 | 15 | Not Started | On Track | 0 | system@app.local | 2026-05-22T07:36:42.894Z | 2026-05-22T07:36:42.894Z | Mulund School Module MSP.xml | 2026-05-22T07:36:42.894Z | No | 1.5 |
| 160 | 160 | Mulund School Module MSP | 1.5.4 | 3 | E4 Final Handover | No | No | Yes | E Execution | 2026-12-13T18:30:00.000Z | 2026-12-17T18:30:00.000Z | 0 | 5 | 5 | Not Started | On Track | 0 | system@app.local | 2026-05-22T07:36:42.894Z | 2026-05-22T07:36:42.894Z | Mulund School Module MSP.xml | 2026-05-22T07:36:42.894Z | No | 1.5 |
| 157 | 157 | Pawna Module MSP | 1 | 1 | Pawna Project | Yes | No | Yes | Pawna Project | 2026-03-23T18:30:00.000Z | 2031-01-01T18:30:00.000Z | 0 | 1248 | 1248 | In Progress | On Track | 0 | system@app.local | 2026-05-22T07:36:45.222Z | 2026-05-22T07:36:45.222Z | Pawna Module MSP.xml | 2026-05-22T07:36:45.222Z | No |  |
| 149 | 149 | Pawna Module MSP | 1.1 | 2 | Precon Design Works | Yes | No | Yes | Pawna Project | 2026-03-23T18:30:00.000Z | 2028-05-10T18:30:00.000Z | 0 | 558 | 558 | In Progress | On Track | 0 | system@app.local | 2026-05-22T07:36:45.222Z | 2026-05-22T07:36:45.222Z | Pawna Module MSP.xml | 2026-05-22T07:36:45.222Z | No | 1 |
| 1 | 1 | Pawna Module MSP | 1.1.1 | 3 | F1 Feasibility Take off | Yes | No | Yes | Precon Design Works | 2026-03-23T18:30:00.000Z | 2026-07-12T18:30:00.000Z | 0 | 80 | 80 | In Progress | On Track | 0 | system@app.local | 2026-05-22T07:36:45.222Z | 2026-05-22T07:36:45.222Z | Pawna Module MSP.xml | 2026-05-22T07:36:45.222Z | No | 1.1 |
| 2 | 2 | Pawna Module MSP | 1.1.1.1 | 4 | F1.1 Initial Management Note | No | No | Yes | F1 Feasibility Take off | 2026-03-23T18:30:00.000Z | 2026-05-03T18:30:00.000Z | 0 | 30 | 30 | Overdue | Delayed | 18 | system@app.local | 2026-05-22T07:36:45.222Z | 2026-05-22T07:36:45.222Z | Pawna Module MSP.xml | 2026-05-22T07:36:45.222Z | Yes | 1.1.1 |
| 3 | 3 | Pawna Module MSP | 1.1.1.2 | 4 | F1.2 Legal Title check | No | No | Yes | F1 Feasibility Take off | 2026-05-04T18:30:00.000Z | 2026-06-14T18:30:00.000Z | 0 | 30 | 30 | In Progress | On Track | 0 | system@app.local | 2026-05-22T07:36:45.222Z | 2026-05-22T07:36:45.222Z | Pawna Module MSP.xml | 2026-05-22T07:36:45.222Z | No | 1.1.1 |
| 4 | 4 | Pawna Module MSP | 1.1.1.3 | 4 | F1.3 Initial Liaison Note | No | No | Yes | F1 Feasibility Take off | 2026-05-04T18:30:00.000Z | 2026-06-14T18:30:00.000Z | 0 | 30 | 30 | In Progress | On Track | 0 | system@app.local | 2026-05-22T07:36:45.222Z | 2026-05-22T07:36:45.222Z | Pawna Module MSP.xml | 2026-05-22T07:36:45.222Z | No | 1.1.1 |
| 5 | 5 | Pawna Module MSP | 1.1.1.4 | 4 | F1.4 Initial Sales & Marketing Note | No | No | Yes | F1 Feasibility Take off | 2026-05-04T18:30:00.000Z | 2026-06-14T18:30:00.000Z | 0 | 30 | 30 | In Progress | On Track | 0 | system@app.local | 2026-05-22T07:36:45.222Z | 2026-05-22T07:36:45.222Z | Pawna Module MSP.xml | 2026-05-22T07:36:45.222Z | No | 1.1.1 |
| 6 | 6 | Pawna Module MSP | 1.1.1.5 | 4 | F1.5 Initial Architectural Note | No | No | Yes | F1 Feasibility Take off | 2026-05-04T18:30:00.000Z | 2026-06-14T18:30:00.000Z | 0 | 30 | 30 | In Progress | On Track | 0 | system@app.local | 2026-05-22T07:36:45.222Z | 2026-05-22T07:36:45.222Z | Pawna Module MSP.xml | 2026-05-22T07:36:45.222Z | No | 1.1.1 |
| 11 | 11 | Pawna Module MSP | 1.1.1.6 | 4 | F1.7 Project VISION Doc Sign off | No | No | Yes | F1 Feasibility Take off | 2026-07-06T18:30:00.000Z | 2026-07-12T18:30:00.000Z | 0 | 5 | 5 | Not Started | On Track | 0 | system@app.local | 2026-05-22T07:36:45.222Z | 2026-05-22T07:36:45.222Z | Pawna Module MSP.xml | 2026-05-22T07:36:45.222Z | No | 1.1.1 |
| 12 | 12 | Pawna Module MSP | 1.1.2 | 3 | F2 Feasibility Study Advance | Yes | No | Yes | Precon Design Works | 2026-07-13T18:30:00.000Z | 2026-08-09T18:30:00.000Z | 0 | 20 | 20 | Not Started | On Track | 0 | system@app.local | 2026-05-22T07:36:45.222Z | 2026-05-22T07:36:45.222Z | Pawna Module MSP.xml | 2026-05-22T07:36:45.222Z | No | 1.1 |
| 13 | 13 | Pawna Module MSP | 1.1.2.1 | 4 | F2.1 Appoint Liaison Arch | No | No | Yes | F2 Feasibility Study Advance | 2026-07-13T18:30:00.000Z | 2026-08-02T18:30:00.000Z | 0 | 15 | 15 | Not Started | On Track | 0 | system@app.local | 2026-05-22T07:36:45.222Z | 2026-05-22T07:36:45.222Z | Pawna Module MSP.xml | 2026-05-22T07:36:45.222Z | No | 1.1.2 |
| 14 | 14 | Pawna Module MSP | 1.1.2.2 | 4 | F2.2 Appoint Architect (Feasibility Study only) | No | No | Yes | F2 Feasibility Study Advance | 2026-07-13T18:30:00.000Z | 2026-08-02T18:30:00.000Z | 0 | 15 | 15 | Not Started | On Track | 0 | system@app.local | 2026-05-22T07:36:45.222Z | 2026-05-22T07:36:45.222Z | Pawna Module MSP.xml | 2026-05-22T07:36:45.222Z | No | 1.1.2 |
| 15 | 15 | Pawna Module MSP | 1.1.2.3 | 4 | F2.3 Appoint Structural consultant | No | No | Yes | F2 Feasibility Study Advance | 2026-07-13T18:30:00.000Z | 2026-08-02T18:30:00.000Z | 0 | 15 | 15 | Not Started | On Track | 0 | system@app.local | 2026-05-22T07:36:45.222Z | 2026-05-22T07:36:45.222Z | Pawna Module MSP.xml | 2026-05-22T07:36:45.222Z | No | 1.1.2 |
| 16 | 16 | Pawna Module MSP | 1.1.2.4 | 4 | F2.4 Legal team check initial TITLE Check | No | No | Yes | F2 Feasibility Study Advance | 2026-07-13T18:30:00.000Z | 2026-08-02T18:30:00.000Z | 0 | 15 | 15 | Not Started | On Track | 0 | system@app.local | 2026-05-22T07:36:45.222Z | 2026-05-22T07:36:45.222Z | Pawna Module MSP.xml | 2026-05-22T07:36:45.222Z | No | 1.1.2 |

| Task_UID | Row_ID | Project | WBS | Outline_Level | Task_Name | Is_Summary | Is_Milestone | Is_Critical | Phase | Planned_Start | Planned_Finish | Pct_Complete | Duration_Days | Remaining_Days | Status | Derail_Status | Derail_Days | Last_Updated_By | Last_Updated_At | Last_Synced | Source_File | Sync_Version | Action_Required | Parent_WBS |
| --- | --- | --- | --- | --- | --- | --- | --- | --- | --- | --- | --- | --- | --- | --- | --- | --- | --- | --- | --- | --- | --- | --- | --- | --- |
| 17 | 17 | Pawna Module MSP | 1.1.2.5 | 4 | F2.5 Appoint Cost Consultant | No | No | Yes | F2 Feasibility Study Advance | 2026-07-13T18:30:00.000Z | 2026-08-02T18:30:00.000Z | 0 | 15 | 15 | Not Started | On Track | 0 | system@app.local | 2026-05-22T07:36:45.222Z | 2026-05-22T07:36:45.222Z | Pawna Module MSP.xml | 2026-05-22T07:36:45.222Z | No | 1.1.2 |
| 18 | 18 | Pawna Module MSP | 1.1.2.6 | 4 | F2.6 Appoint Geo-Technical Agency | No | No | Yes | F2 Feasibility Study Advance | 2026-07-13T18:30:00.000Z | 2026-08-02T18:30:00.000Z | 0 | 15 | 15 | Not Started | On Track | 0 | system@app.local | 2026-05-22T07:36:45.222Z | 2026-05-22T07:36:45.222Z | Pawna Module MSP.xml | 2026-05-22T07:36:45.222Z | No | 1.1.2 |
| 19 | 19 | Pawna Module MSP | 1.1.2.7 | 4 | F2.7 Appoint Surveyor | No | No | Yes | F2 Feasibility Study Advance | 2026-07-13T18:30:00.000Z | 2026-08-02T18:30:00.000Z | 0 | 15 | 15 | Not Started | On Track | 0 | system@app.local | 2026-05-22T07:36:45.222Z | 2026-05-22T07:36:45.222Z | Pawna Module MSP.xml | 2026-05-22T07:36:45.222Z | No | 1.1.2 |
| 20 | 20 | Pawna Module MSP | 1.1.2.8 | 4 | F2.8 Appoint MOEF Consultant | No | No | Yes | F2 Feasibility Study Advance | 2026-07-13T18:30:00.000Z | 2026-08-02T18:30:00.000Z | 0 | 15 | 15 | Not Started | On Track | 0 | system@app.local | 2026-05-22T07:36:45.222Z | 2026-05-22T07:36:45.222Z | Pawna Module MSP.xml | 2026-05-22T07:36:45.222Z | No | 1.1.2 |
| 21 | 21 | Pawna Module MSP | 1.1.2.9 | 4 | F2.9 Sign off | No | No | Yes | F2 Feasibility Study Advance | 2026-08-03T18:30:00.000Z | 2026-08-09T18:30:00.000Z | 0 | 5 | 5 | Not Started | On Track | 0 | system@app.local | 2026-05-22T07:36:45.222Z | 2026-05-22T07:36:45.222Z | Pawna Module MSP.xml | 2026-05-22T07:36:45.222Z | No | 1.1.2 |
| 22 | 22 | Pawna Module MSP | 1.1.3 | 3 | F3 Feasibility Approval | Yes | No | Yes | Precon Design Works | 2026-08-10T18:30:00.000Z | 2026-11-01T18:30:00.000Z | 0 | 60 | 60 | Not Started | On Track | 0 | system@app.local | 2026-05-22T07:36:45.222Z | 2026-05-22T07:36:45.222Z | Pawna Module MSP.xml | 2026-05-22T07:36:45.222Z | No | 1.1 |
| 23 | 23 | Pawna Module MSP | 1.1.3.1 | 4 | F3.1 Conduct Commercial Due Diligence | No | No | Yes | F3 Feasibility Approval | 2026-08-10T18:30:00.000Z | 2026-09-20T18:30:00.000Z | 0 | 30 | 30 | Not Started | On Track | 0 | system@app.local | 2026-05-22T07:36:45.222Z | 2026-05-22T07:36:45.222Z | Pawna Module MSP.xml | 2026-05-22T07:36:45.222Z | No | 1.1.3 |
| 24 | 24 | Pawna Module MSP | 1.1.3.2 | 4 | F3.1 Conduct PRE -Legal Due Diligence | No | No | Yes | F3 Feasibility Approval | 2026-08-10T18:30:00.000Z | 2026-09-20T18:30:00.000Z | 0 | 30 | 30 | Not Started | On Track | 0 | system@app.local | 2026-05-22T07:36:45.222Z | 2026-05-22T07:36:45.222Z | Pawna Module MSP.xml | 2026-05-22T07:36:45.222Z | No | 1.1.3 |
| 25 | 25 | Pawna Module MSP | 1.1.3.3 | 4 | F3.1 Conduct Preliminary Liaison DD | No | No | Yes | F3 Feasibility Approval | 2026-08-10T18:30:00.000Z | 2026-09-20T18:30:00.000Z | 0 | 30 | 30 | Not Started | On Track | 0 | system@app.local | 2026-05-22T07:36:45.222Z | 2026-05-22T07:36:45.222Z | Pawna Module MSP.xml | 2026-05-22T07:36:45.222Z | No | 1.1.3 |
| 26 | 26 | Pawna Module MSP | 1.1.3.4 | 4 | F3.1 Conduct Preliminary Construction Due Diligence | No | No | Yes | F3 Feasibility Approval | 2026-08-10T18:30:00.000Z | 2026-09-20T18:30:00.000Z | 0 | 30 | 30 | Not Started | On Track | 0 | system@app.local | 2026-05-22T07:36:45.222Z | 2026-05-22T07:36:45.222Z | Pawna Module MSP.xml | 2026-05-22T07:36:45.222Z | No | 1.1.3 |
| 27 | 27 | Pawna Module MSP | 1.1.3.5 | 4 | F3.4 FINAL Feasibility Report | No | No | No | F3 Feasibility Approval | 2026-10-26T18:30:00.000Z | 2026-11-01T18:30:00.000Z | 0 | 5 | 5 | Not Started | On Track | 0 | system@app.local | 2026-05-22T07:36:45.222Z | 2026-05-22T07:36:45.222Z | Pawna Module MSP.xml | 2026-05-22T07:36:45.222Z | No | 1.1.3 |
| 28 | 28 | Pawna Module MSP | 1.1.3.6 | 4 | F3.5 Land Acquisition | No | Yes | Yes | F3 Feasibility Approval | 2026-10-25T18:30:00.000Z | 2026-10-25T18:30:00.000Z | 0 | 0 | 0 | Not Started | On Track | 0 | system@app.local | 2026-05-22T07:36:45.222Z | 2026-05-22T07:36:45.222Z | Pawna Module MSP.xml | 2026-05-22T07:36:45.222Z | No | 1.1.3 |
| 29 | 29 | Pawna Module MSP | 1.1.4 | 3 | C1 Develop Project Master Plan & Concept | Yes | No | Yes | Precon Design Works | 2026-10-26T18:30:00.000Z | 2027-01-27T18:30:00.000Z | 0 | 68 | 68 | Not Started | On Track | 0 | system@app.local | 2026-05-22T07:36:45.222Z | 2026-05-22T07:36:45.222Z | Pawna Module MSP.xml | 2026-05-22T07:36:45.222Z | No | 1.1 |
| 30 | 30 | Pawna Module MSP | 1.1.4.1 | 4 | C1.1 ERP Creation of WBS (Limited to Costs related to Concept Budget only) | No | No | Yes | C1 Develop Project Master Plan & Concept | 2026-10-26T18:30:00.000Z | 2026-10-27T18:30:00.000Z | 0 | 2 | 2 | Not Started | On Track | 0 | system@app.local | 2026-05-22T07:36:45.222Z | 2026-05-22T07:36:45.222Z | Pawna Module MSP.xml | 2026-05-22T07:36:45.222Z | No | 1.1.4 |
| 31 | 31 | Pawna Module MSP | 1.1.4.2 | 4 | C1.1 Appointment of Consultants | No | No | Yes | C1 Develop Project Master Plan & Concept | 2026-10-28T18:30:00.000Z | 2026-11-03T18:30:00.000Z | 0 | 5 | 5 | Not Started | On Track | 0 | system@app.local | 2026-05-22T07:36:45.222Z | 2026-05-22T07:36:45.222Z | Pawna Module MSP.xml | 2026-05-22T07:36:45.222Z | No | 1.1.4 |
| 32 | 32 | Pawna Module MSP | 1.1.4.3 | 4 | C1.2 Master Layout Concept Initiation | No | No | Yes | C1 Develop Project Master Plan & Concept | 2026-11-04T18:30:00.000Z | 2026-12-15T18:30:00.000Z | 0 | 30 | 30 | Not Started | On Track | 0 | system@app.local | 2026-05-22T07:36:45.222Z | 2026-05-22T07:36:45.222Z | Pawna Module MSP.xml | 2026-05-22T07:36:45.222Z | No | 1.1.4 |
| 33 | 33 | Pawna Module MSP | 1.1.4.4 | 4 | C1.2 Preparation of Arch Concept Package | No | No | Yes | C1 Develop Project Master Plan & Concept | 2026-11-04T18:30:00.000Z | 2026-12-15T18:30:00.000Z | 0 | 30 | 30 | Not Started | On Track | 0 | system@app.local | 2026-05-22T07:36:45.222Z | 2026-05-22T07:36:45.222Z | Pawna Module MSP.xml | 2026-05-22T07:36:45.222Z | No | 1.1.4 |
| 34 | 34 | Pawna Module MSP | 1.1.4.5 | 4 | C1.2 Structural | No | No | Yes | C1 Develop Project Master Plan & Concept | 2026-11-04T18:30:00.000Z | 2026-12-15T18:30:00.000Z | 0 | 30 | 30 | Not Started | On Track | 0 | system@app.local | 2026-05-22T07:36:45.222Z | 2026-05-22T07:36:45.222Z | Pawna Module MSP.xml | 2026-05-22T07:36:45.222Z | No | 1.1.4 |
| 35 | 35 | Pawna Module MSP | 1.1.4.6 | 4 | C1.2 Services (MEP Inputs) | No | No | Yes | C1 Develop Project Master Plan & Concept | 2026-11-04T18:30:00.000Z | 2026-12-15T18:30:00.000Z | 0 | 30 | 30 | Not Started | On Track | 0 | system@app.local | 2026-05-22T07:36:45.222Z | 2026-05-22T07:36:45.222Z | Pawna Module MSP.xml | 2026-05-22T07:36:45.222Z | No | 1.1.4 |
| 36 | 36 | Pawna Module MSP | 1.1.4.7 | 4 | C1.2 Liaison | No | No | Yes | C1 Develop Project Master Plan & Concept | 2026-12-16T18:30:00.000Z | 2026-12-29T18:30:00.000Z | 0 | 10 | 10 | Not Started | On Track | 0 | system@app.local | 2026-05-22T07:36:45.222Z | 2026-05-22T07:36:45.222Z | Pawna Module MSP.xml | 2026-05-22T07:36:45.222Z | No | 1.1.4 |
| 37 | 37 | Pawna Module MSP | 1.1.4.8 | 4 | C1.3 Project Schedule | No | No | Yes | C1 Develop Project Master Plan & Concept | 2027-01-19T18:30:00.000Z | 2027-01-21T18:30:00.000Z | 0 | 3 | 3 | Not Started | On Track | 0 | system@app.local | 2026-05-22T07:36:45.222Z | 2026-05-22T07:36:45.222Z | Pawna Module MSP.xml | 2026-05-22T07:36:45.222Z | No | 1.1.4 |
| 38 | 38 | Pawna Module MSP | 1.1.4.9 | 4 | C1.3 Signoff Directors + PMD Head | No | No | Yes | C1 Develop Project Master Plan & Concept | 2027-01-24T18:30:00.000Z | 2027-01-27T18:30:00.000Z | 0 | 4 | 4 | Not Started | On Track | 0 | system@app.local | 2026-05-22T07:36:45.222Z | 2026-05-22T07:36:45.222Z | Pawna Module MSP.xml | 2026-05-22T07:36:45.222Z | No | 1.1.4 |
| 39 | 39 | Pawna Module MSP | 1.1.5 | 3 | C2 Project Review C2 stage & Approval | Yes | No | No | Precon Design Works | 2026-03-23T18:30:00.000Z | 2027-03-31T18:30:00.000Z | 0 | 268 | 268 | In Progress | On Track | 0 | system@app.local | 2026-05-22T07:36:45.222Z | 2026-05-22T07:36:45.222Z | Pawna Module MSP.xml | 2026-05-22T07:36:45.222Z | No | 1.1 |
| 40 | 40 | Pawna Module MSP | 1.1.5.1 | 4 | C2.1 Add Comments, Suggestions in Concept stage Approvals. | No | No | Yes | C2 Project Review C2 stage & Approval | 2027-01-28T18:30:00.000Z | 2027-02-17T18:30:00.000Z | 0 | 15 | 15 | Not Started | On Track | 0 | system@app.local | 2026-05-22T07:36:45.222Z | 2026-05-22T07:36:45.222Z | Pawna Module MSP.xml | 2026-05-22T07:36:45.222Z | No | 1.1.5 |
| 41 | 41 | Pawna Module MSP | 1.1.5.2 | 4 | C2.1 Arch Design Concept stage 1 closure | No | No | Yes | C2 Project Review C2 stage & Approval | 2027-02-18T18:30:00.000Z | 2027-03-10T18:30:00.000Z | 0 | 15 | 15 | Not Started | On Track | 0 | system@app.local | 2026-05-22T07:36:45.222Z | 2026-05-22T07:36:45.222Z | Pawna Module MSP.xml | 2026-05-22T07:36:45.222Z | No | 1.1.5 |
| 42 | 42 | Pawna Module MSP | 1.1.5.3 | 4 | C2.2 Update Project Plan in MSP. | No | No | Yes | C2 Project Review C2 stage & Approval | 2027-03-11T18:30:00.000Z | 2027-03-17T18:30:00.000Z | 0 | 5 | 5 | Not Started | On Track | 0 | system@app.local | 2026-05-22T07:36:45.222Z | 2026-05-22T07:36:45.222Z | Pawna Module MSP.xml | 2026-05-22T07:36:45.222Z | No | 1.1.5 |
| 43 | 43 | Pawna Module MSP | 1.1.5.4 | 4 | C2.3 Review for Approvability - Advance Concept | No | No | Yes | C2 Project Review C2 stage & Approval | 2027-03-18T18:30:00.000Z | 2027-03-24T18:30:00.000Z | 0 | 5 | 5 | Not Started | On Track | 0 | system@app.local | 2026-05-22T07:36:45.222Z | 2026-05-22T07:36:45.222Z | Pawna Module MSP.xml | 2026-05-22T07:36:45.222Z | No | 1.1.5 |
| 150 | 150 | Pawna Module MSP | 1.1.5.5 | 4 | C2.3 LAND Acquisition to complete | No | Yes | No | C2 Project Review C2 stage & Approval | 2026-03-23T18:30:00.000Z | 2026-03-23T18:30:00.000Z | 0 | 0 | 0 | Overdue | Delayed | 59 | system@app.local | 2026-05-22T07:36:45.222Z | 2026-05-22T07:36:45.222Z | Pawna Module MSP.xml | 2026-05-22T07:36:45.222Z | Yes | 1.1.5 |
| 151 | 151 | Pawna Module MSP | 1.1.5.6 | 4 | Signoff Directors + PMD Head | No | No | Yes | C2 Project Review C2 stage & Approval | 2027-03-25T18:30:00.000Z | 2027-03-31T18:30:00.000Z | 0 | 5 | 5 | Not Started | On Track | 0 | system@app.local | 2026-05-22T07:36:45.222Z | 2026-05-22T07:36:45.222Z | Pawna Module MSP.xml | 2026-05-22T07:36:45.222Z | No | 1.1.5 |
| 44 | 44 | Pawna Module MSP | 1.1.6 | 3 | S1 Schematic - 50% | Yes | No | Yes | Precon Design Works | 2027-04-01T18:30:00.000Z | 2027-07-21T18:30:00.000Z | 0 | 80 | 80 | Not Started | On Track | 0 | system@app.local | 2026-05-22T07:36:45.222Z | 2026-05-22T07:36:45.222Z | Pawna Module MSP.xml | 2026-05-22T07:36:45.222Z | No | 1.1 |
| 45 | 45 | Pawna Module MSP | 1.1.6.1 | 4 | S1.1 Initial DBR STAGE - Structure + MEP to initiate design | No | No | Yes | S1 Schematic - 50% | 2027-04-01T18:30:00.000Z | 2027-04-07T18:30:00.000Z | 0 | 5 | 5 | Not Started | On Track | 0 | system@app.local | 2026-05-22T07:36:45.222Z | 2026-05-22T07:36:45.222Z | Pawna Module MSP.xml | 2026-05-22T07:36:45.222Z | No | 1.1.6 |
| 46 | 46 | Pawna Module MSP | 1.1.6.2 | 4 | S1.2 Architectural Schematic Drawings | No | No | Yes | S1 Schematic - 50% | 2027-04-08T18:30:00.000Z | 2027-05-12T18:30:00.000Z | 0 | 25 | 25 | Not Started | On Track | 0 | system@app.local | 2026-05-22T07:36:45.222Z | 2026-05-22T07:36:45.222Z | Pawna Module MSP.xml | 2026-05-22T07:36:45.222Z | No | 1.1.6 |
| 47 | 47 | Pawna Module MSP | 1.1.6.3 | 4 | S1.2 Structural Schematic Drawings | No | No | Yes | S1 Schematic - 50% | 2027-04-08T18:30:00.000Z | 2027-05-12T18:30:00.000Z | 0 | 25 | 25 | Not Started | On Track | 0 | system@app.local | 2026-05-22T07:36:45.222Z | 2026-05-22T07:36:45.222Z | Pawna Module MSP.xml | 2026-05-22T07:36:45.222Z | No | 1.1.6 |
| 48 | 48 | Pawna Module MSP | 1.1.6.4 | 4 | S1.2 MEP Schematic drawings | No | No | Yes | S1 Schematic - 50% | 2027-04-08T18:30:00.000Z | 2027-05-12T18:30:00.000Z | 0 | 25 | 25 | Not Started | On Track | 0 | system@app.local | 2026-05-22T07:36:45.222Z | 2026-05-22T07:36:45.222Z | Pawna Module MSP.xml | 2026-05-22T07:36:45.222Z | No | 1.1.6 |
| 49 | 49 | Pawna Module MSP | 1.1.6.5 | 4 | S1.2 Landscape schematic dwgs | No | No | Yes | S1 Schematic - 50% | 2027-04-08T18:30:00.000Z | 2027-05-12T18:30:00.000Z | 0 | 25 | 25 | Not Started | On Track | 0 | system@app.local | 2026-05-22T07:36:45.222Z | 2026-05-22T07:36:45.222Z | Pawna Module MSP.xml | 2026-05-22T07:36:45.222Z | No | 1.1.6 |
| 50 | 50 | Pawna Module MSP | 1.1.6.6 | 4 | S1.2 Coordinated drwgs Workshop will All Consultants & Stakeholders | No | No | Yes | S1 Schematic - 50% | 2027-04-08T18:30:00.000Z | 2027-05-12T18:30:00.000Z | 0 | 25 | 25 | Not Started | On Track | 0 | system@app.local | 2026-05-22T07:36:45.222Z | 2026-05-22T07:36:45.222Z | Pawna Module MSP.xml | 2026-05-22T07:36:45.222Z | No | 1.1.6 |
| 51 | 51 | Pawna Module MSP | 1.1.6.7 | 4 | S1.2 Sign off Coordinated Drwgs | No | No | Yes | S1 Schematic - 50% | 2027-05-13T18:30:00.000Z | 2027-05-19T18:30:00.000Z | 0 | 5 | 5 | Not Started | On Track | 0 | system@app.local | 2026-05-22T07:36:45.222Z | 2026-05-22T07:36:45.222Z | Pawna Module MSP.xml | 2026-05-22T07:36:45.222Z | No | 1.1.6 |
| 52 | 52 | Pawna Module MSP | 1.1.6.8 | 4 | S1.3 Project Schedule | No | No | No | S1 Schematic - 50% | 2027-05-20T18:30:00.000Z | 2027-06-23T18:30:00.000Z | 0 | 25 | 25 | Not Started | On Track | 0 | system@app.local | 2026-05-22T07:36:45.222Z | 2026-05-22T07:36:45.222Z | Pawna Module MSP.xml | 2026-05-22T07:36:45.222Z | No | 1.1.6 |
| 53 | 53 | Pawna Module MSP | 1.1.6.9 | 4 | S1.4 Construction of Experience centre/Sales office/Sample flat,show flat | No | No | No | S1 Schematic - 50% | 2027-05-13T18:30:00.000Z | 2027-07-14T18:30:00.000Z | 0 | 45 | 45 | Not Started | On Track | 0 | system@app.local | 2026-05-22T07:36:45.222Z | 2026-05-22T07:36:45.222Z | Pawna Module MSP.xml | 2026-05-22T07:36:45.222Z | No | 1.1.6 |
| 152 | 152 | Pawna Module MSP | 1.1.6.10 | 4 | Sign Off | No | No | No | S1 Schematic - 50% | 2027-07-15T18:30:00.000Z | 2027-07-21T18:30:00.000Z | 0 | 5 | 5 | Not Started | On Track | 0 | system@app.local | 2026-05-22T07:36:45.222Z | 2026-05-22T07:36:45.222Z | Pawna Module MSP.xml | 2026-05-22T07:36:45.222Z | No | 1.1.6 |
| 54 | 54 | Pawna Module MSP | 1.1.7 | 3 | S2 Schematic - 100% | Yes | No | No | Precon Design Works | 2026-03-23T18:30:00.000Z | 2027-06-27T18:30:00.000Z | 0 | 330 | 330 | In Progress | On Track | 0 | system@app.local | 2026-05-22T07:36:45.222Z | 2026-05-22T07:36:45.222Z | Pawna Module MSP.xml | 2026-05-22T07:36:45.222Z | No | 1.1 |
| 55 | 55 | Pawna Module MSP | 1.1.7.1 | 4 | S2.1 Shortlisting of products and vendors | No | No | No | S2 Schematic - 100% | 2026-03-23T18:30:00.000Z | 2026-03-23T18:30:00.000Z | 0 | 1 | 1 | Overdue | Delayed | 59 | system@app.local | 2026-05-22T07:36:45.222Z | 2026-05-22T07:36:45.222Z | Pawna Module MSP.xml | 2026-05-22T07:36:45.222Z | Yes | 1.1.7 |
| 56 | 56 | Pawna Module MSP | 1.1.7.2 | 4 | S2.2 Structural | No | No | Yes | S2 Schematic - 100% | 2027-05-20T18:30:00.000Z | 2027-06-09T18:30:00.000Z | 0 | 15 | 15 | Not Started | On Track | 0 | system@app.local | 2026-05-22T07:36:45.222Z | 2026-05-22T07:36:45.222Z | Pawna Module MSP.xml | 2026-05-22T07:36:45.222Z | No | 1.1.7 |
| 57 | 57 | Pawna Module MSP | 1.1.7.3 | 4 | S2.2 Architecture | No | No | Yes | S2 Schematic - 100% | 2027-05-20T18:30:00.000Z | 2027-06-09T18:30:00.000Z | 0 | 15 | 15 | Not Started | On Track | 0 | system@app.local | 2026-05-22T07:36:45.222Z | 2026-05-22T07:36:45.222Z | Pawna Module MSP.xml | 2026-05-22T07:36:45.222Z | No | 1.1.7 |
| 58 | 58 | Pawna Module MSP | 1.1.7.4 | 4 | S2.2 MEP (Services) | No | No | Yes | S2 Schematic - 100% | 2027-05-20T18:30:00.000Z | 2027-06-09T18:30:00.000Z | 0 | 15 | 15 | Not Started | On Track | 0 | system@app.local | 2026-05-22T07:36:45.222Z | 2026-05-22T07:36:45.222Z | Pawna Module MSP.xml | 2026-05-22T07:36:45.222Z | No | 1.1.7 |
| 59 | 59 | Pawna Module MSP | 1.1.7.5 | 4 | S2.3 BIM Drwg Coordination | No | Yes | No | S2 Schematic - 100% | 2027-06-09T18:30:00.000Z | 2027-06-09T18:30:00.000Z | 0 | 0 | 0 | Not Started | On Track | 0 | system@app.local | 2026-05-22T07:36:45.222Z | 2026-05-22T07:36:45.222Z | Pawna Module MSP.xml | 2026-05-22T07:36:45.222Z | No | 1.1.7 |
| 60 | 60 | Pawna Module MSP | 1.1.7.6 | 4 | Sign Off | No | No | Yes | S2 Schematic - 100% | 2027-06-21T18:30:00.000Z | 2027-06-27T18:30:00.000Z | 0 | 5 | 5 | Not Started | On Track | 0 | system@app.local | 2026-05-22T07:36:45.222Z | 2026-05-22T07:36:45.222Z | Pawna Module MSP.xml | 2026-05-22T07:36:45.222Z | No | 1.1.7 |
| 61 | 61 | Pawna Module MSP | 1.1.8 | 3 | D1 DD 1 - 50% | Yes | No | No | Precon Design Works | 2027-06-10T18:30:00.000Z | 2027-09-15T18:30:00.000Z | 0 | 70 | 70 | Not Started | On Track | 0 | system@app.local | 2026-05-22T07:36:45.222Z | 2026-05-22T07:36:45.222Z | Pawna Module MSP.xml | 2026-05-22T07:36:45.222Z | No | 1.1 |
| 62 | 62 | Pawna Module MSP | 1.1.8.1 | 4 | D1.1 Collation & syncronisation of all consultant designs | No | No | No | D1 DD 1 - 50% | 2027-06-28T18:30:00.000Z | 2027-08-08T18:30:00.000Z | 0 | 30 | 30 | Not Started | On Track | 0 | system@app.local | 2026-05-22T07:36:45.222Z | 2026-05-22T07:36:45.222Z | Pawna Module MSP.xml | 2026-05-22T07:36:45.222Z | No | 1.1.8 |
| 63 | 63 | Pawna Module MSP | 1.1.8.2 | 4 | D 1.2 Interiors Stage | No | No | Yes | D1 DD 1 - 50% | 2027-06-28T18:30:00.000Z | 2027-08-08T18:30:00.000Z | 0 | 30 | 30 | Not Started | On Track | 0 | system@app.local | 2026-05-22T07:36:45.222Z | 2026-05-22T07:36:45.222Z | Pawna Module MSP.xml | 2026-05-22T07:36:45.222Z | No | 1.1.8 |
| 65 | 65 | Pawna Module MSP | 1.1.8.3 | 4 | D1.4 Schedule & Site Logistics | No | No | No | D1 DD 1 - 50% | 2027-06-10T18:30:00.000Z | 2027-06-23T18:30:00.000Z | 0 | 10 | 10 | Not Started | On Track | 0 | system@app.local | 2026-05-22T07:36:45.222Z | 2026-05-22T07:36:45.222Z | Pawna Module MSP.xml | 2026-05-22T07:36:45.222Z | No | 1.1.8 |
| 66 | 66 | Pawna Module MSP | 1.1.8.4 | 4 | D1.5 DD1 Budget Review & Approval | No | No | Yes | D1 DD 1 - 50% | 2027-08-30T18:30:00.000Z | 2027-09-05T18:30:00.000Z | 0 | 5 | 5 | Not Started | On Track | 0 | system@app.local | 2026-05-22T07:36:45.222Z | 2026-05-22T07:36:45.222Z | Pawna Module MSP.xml | 2026-05-22T07:36:45.222Z | No | 1.1.8 |
| 67 | 67 | Pawna Module MSP | 1.1.8.5 | 4 | D1.7 BIM Model Update & Controls | No | Yes | No | D1 DD 1 - 50% | 2027-09-05T18:30:00.000Z | 2027-09-05T18:30:00.000Z | 0 | 0 | 0 | Not Started | On Track | 0 | system@app.local | 2026-05-22T07:36:45.222Z | 2026-05-22T07:36:45.222Z | Pawna Module MSP.xml | 2026-05-22T07:36:45.222Z | No | 1.1.8 |
| 68 | 68 | Pawna Module MSP | 1.1.8.6 | 4 | D1.8 Finance Review & Tracking | No | No | Yes | D1 DD 1 - 50% | 2027-09-06T18:30:00.000Z | 2027-09-12T18:30:00.000Z | 0 | 5 | 5 | Not Started | On Track | 0 | system@app.local | 2026-05-22T07:36:45.222Z | 2026-05-22T07:36:45.222Z | Pawna Module MSP.xml | 2026-05-22T07:36:45.222Z | No | 1.1.8 |
| 69 | 69 | Pawna Module MSP | 1.1.8.7 | 4 | D1 STAGE GATE | No | No | Yes | D1 DD 1 - 50% | 2027-09-13T18:30:00.000Z | 2027-09-15T18:30:00.000Z | 0 | 3 | 3 | Not Started | On Track | 0 | system@app.local | 2026-05-22T07:36:45.222Z | 2026-05-22T07:36:45.222Z | Pawna Module MSP.xml | 2026-05-22T07:36:45.222Z | No | 1.1.8 |
| 70 | 70 | Pawna Module MSP | 1.1.9 | 3 | D2 DD 2 - 100% | Yes | No | Yes | Precon Design Works | 2027-09-16T18:30:00.000Z | 2027-11-24T18:30:00.000Z | 0 | 50 | 50 | Not Started | On Track | 0 | system@app.local | 2026-05-22T07:36:45.222Z | 2026-05-22T07:36:45.222Z | Pawna Module MSP.xml | 2026-05-22T07:36:45.222Z | No | 1.1 |
| 71 | 71 | Pawna Module MSP | 1.1.9.1 | 4 | D2.1 Stage Coordinated Drwgs | No | No | Yes | D2 DD 2 - 100% | 2027-09-16T18:30:00.000Z | 2027-10-06T18:30:00.000Z | 0 | 15 | 15 | Not Started | On Track | 0 | system@app.local | 2026-05-22T07:36:45.222Z | 2026-05-22T07:36:45.222Z | Pawna Module MSP.xml | 2026-05-22T07:36:45.222Z | No | 1.1.9 |
| 72 | 72 | Pawna Module MSP | 1.1.9.2 | 4 | D2.2 Final Package Interior Finishes: Material Selection & Approval (Stage-wise) | No | No | Yes | D2 DD 2 - 100% | 2027-09-16T18:30:00.000Z | 2027-10-06T18:30:00.000Z | 0 | 15 | 15 | Not Started | On Track | 0 | system@app.local | 2026-05-22T07:36:45.222Z | 2026-05-22T07:36:45.222Z | Pawna Module MSP.xml | 2026-05-22T07:36:45.222Z | No | 1.1.9 |
| 73 | 73 | Pawna Module MSP | 1.1.9.3 | 4 | D2.2 Construction of Sample flat (at actual location/as per discussion with Management) | No | No | Yes | D2 DD 2 - 100% | 2027-09-16T18:30:00.000Z | 2027-10-06T18:30:00.000Z | 0 | 15 | 15 | Not Started | On Track | 0 | system@app.local | 2026-05-22T07:36:45.222Z | 2026-05-22T07:36:45.222Z | Pawna Module MSP.xml | 2026-05-22T07:36:45.222Z | No | 1.1.9 |
| 74 | 74 | Pawna Module MSP | 1.1.9.4 | 4 | D2.3 Schedule,ERP readiness to be reviewed & Approved | No | No | Yes | D2 DD 2 - 100% | 2027-10-07T18:30:00.000Z | 2027-10-20T18:30:00.000Z | 0 | 10 | 10 | Not Started | On Track | 0 | system@app.local | 2026-05-22T07:36:45.222Z | 2026-05-22T07:36:45.222Z | Pawna Module MSP.xml | 2026-05-22T07:36:45.222Z | No | 1.1.9 |
| 75 | 75 | Pawna Module MSP | 1.1.9.5 | 4 | D2.4 System finalization of Special Contracts | No | No | Yes | D2 DD 2 - 100% | 2027-10-21T18:30:00.000Z | 2027-11-10T18:30:00.000Z | 0 | 15 | 15 | Not Started | On Track | 0 | system@app.local | 2026-05-22T07:36:45.222Z | 2026-05-22T07:36:45.222Z | Pawna Module MSP.xml | 2026-05-22T07:36:45.222Z | No | 1.1.9 |
| 76 | 76 | Pawna Module MSP | 1.1.9.6 | 4 | D2.5 Contract & Procurement Strategy - Finalization | No | No | Yes | D2 DD 2 - 100% | 2027-10-21T18:30:00.000Z | 2027-11-10T18:30:00.000Z | 0 | 15 | 15 | Not Started | On Track | 0 | system@app.local | 2026-05-22T07:36:45.222Z | 2026-05-22T07:36:45.222Z | Pawna Module MSP.xml | 2026-05-22T07:36:45.222Z | No | 1.1.9 |
| 77 | 77 | Pawna Module MSP | 1.1.9.7 | 4 | D2.6 Finance Review & Approval | No | No | Yes | D2 DD 2 - 100% | 2027-11-11T18:30:00.000Z | 2027-11-17T18:30:00.000Z | 0 | 5 | 5 | Not Started | On Track | 0 | system@app.local | 2026-05-22T07:36:45.222Z | 2026-05-22T07:36:45.222Z | Pawna Module MSP.xml | 2026-05-22T07:36:45.222Z | No | 1.1.9 |
| 78 | 78 | Pawna Module MSP | 1.1.9.8 | 4 | DD2 STAGE GATE | No | No | Yes | D2 DD 2 - 100% | 2027-11-18T18:30:00.000Z | 2027-11-24T18:30:00.000Z | 0 | 5 | 5 | Not Started | On Track | 0 | system@app.local | 2026-05-22T07:36:45.222Z | 2026-05-22T07:36:45.222Z | Pawna Module MSP.xml | 2026-05-22T07:36:45.222Z | No | 1.1.9 |
| 79 | 79 | Pawna Module MSP | 1.1.10 | 3 | T1 Tender Issue Doc | Yes | No | No | Precon Design Works | 2026-03-23T18:30:00.000Z | 2028-05-10T18:30:00.000Z | 0 | 558 | 558 | In Progress | On Track | 0 | system@app.local | 2026-05-22T07:36:45.222Z | 2026-05-22T07:36:45.222Z | Pawna Module MSP.xml | 2026-05-22T07:36:45.222Z | No | 1.1 |
| 80 | 80 | Pawna Module MSP | 1.1.10.1 | 4 | T1.1 Issue of Tender drwgs for Tendering purpose | No | No | Yes | T1 Tender Issue Doc | 2027-11-25T18:30:00.000Z | 2027-12-15T18:30:00.000Z | 0 | 15 | 15 | Not Started | On Track | 0 | system@app.local | 2026-05-22T07:36:45.222Z | 2026-05-22T07:36:45.222Z | Pawna Module MSP.xml | 2026-05-22T07:36:45.222Z | No | 1.1.10 |
| 81 | 81 | Pawna Module MSP | 1.1.10.2 | 4 | T1.2 Prepration of Boq & Tender Doc for Floating tender/Review | No | No | Yes | T1 Tender Issue Doc | 2027-12-16T18:30:00.000Z | 2028-01-05T18:30:00.000Z | 0 | 15 | 15 | Not Started | On Track | 0 | system@app.local | 2026-05-22T07:36:45.222Z | 2026-05-22T07:36:45.222Z | Pawna Module MSP.xml | 2026-05-22T07:36:45.222Z | No | 1.1.10 |
| 83 | 83 | Pawna Module MSP | 1.1.10.3 | 4 | T1.4 Tender Issuance | No | No | No | T1 Tender Issue Doc | 2028-01-20T18:30:00.000Z | 2028-05-03T18:30:00.000Z | 0 | 75 | 75 | Not Started | On Track | 0 | system@app.local | 2026-05-22T07:36:45.222Z | 2026-05-22T07:36:45.222Z | Pawna Module MSP.xml | 2026-05-22T07:36:45.222Z | No | 1.1.10 |
| 84 | 84 | Pawna Module MSP | 1.1.10.4 | 4 | T1.5 Project Schedule | No | No | No | T1 Tender Issue Doc | 2028-05-04T18:30:00.000Z | 2028-05-10T18:30:00.000Z | 0 | 5 | 5 | Not Started | On Track | 0 | system@app.local | 2026-05-22T07:36:45.222Z | 2026-05-22T07:36:45.222Z | Pawna Module MSP.xml | 2026-05-22T07:36:45.222Z | No | 1.1.10 |
| 85 | 85 | Pawna Module MSP | 1.1.10.5 | 4 | T1.6 ERP | No | No | No | T1 Tender Issue Doc | 2026-03-23T18:30:00.000Z | 2026-04-12T18:30:00.000Z | 0 | 15 | 15 | Overdue | Delayed | 39 | system@app.local | 2026-05-22T07:36:45.222Z | 2026-05-22T07:36:45.222Z | Pawna Module MSP.xml | 2026-05-22T07:36:45.222Z | Yes | 1.1.10 |

| Task_UID | Row_ID | Project | WBS | Outline_Level | Task_Name | Is_Summary | Is_Milestone | Is_Critical | Phase | Planned_Start | Planned_Finish | Pct_Complete | Duration_Days | Remaining_Days | Status | Derail_Status | Derail_Days | Last_Updated_By | Last_Updated_At | Last_Synced | Source_File | Sync_Version | Action_Required | Parent_WBS |
| --- | --- | --- | --- | --- | --- | --- | --- | --- | --- | --- | --- | --- | --- | --- | --- | --- | --- | --- | --- | --- | --- | --- | --- | --- |
| 86 | 86 | Pawna Module MSP | 1.2 | 2 | B Stages of Budgeting | Yes | No | Yes | Pawna Project | 2026-06-15T18:30:00.000Z | 2028-01-19T18:30:00.000Z | 0 | 418 | 418 | Not Started | On Track | 0 | system@app.local | 2026-05-22T07:36:45.222Z | 2026-05-22T07:36:45.222Z | Pawna Module MSP.xml | 2026-05-22T07:36:45.222Z | No | 1 |
| 87 | 87 | Pawna Module MSP | 1.2.1 | 3 | B F1 Feasibility Stage Budget & P&L PB1 | No | No | Yes | B Stages of Budgeting | 2026-06-15T18:30:00.000Z | 2026-07-05T18:30:00.000Z | 0 | 15 | 15 | Not Started | On Track | 0 | system@app.local | 2026-05-22T07:36:45.222Z | 2026-05-22T07:36:45.222Z | Pawna Module MSP.xml | 2026-05-22T07:36:45.222Z | No | 1.2 |
| 88 | 88 | Pawna Module MSP | 1.2.2 | 3 | B F3 Collate Thumb rule data Per sqft basis & prepare Preliminary Feasibility Budget to be part of Feasibility report. | No | No | Yes | B Stages of Budgeting | 2026-09-21T18:30:00.000Z | 2026-10-11T18:30:00.000Z | 0 | 15 | 15 | Not Started | On Track | 0 | system@app.local | 2026-05-22T07:36:45.222Z | 2026-05-22T07:36:45.222Z | Pawna Module MSP.xml | 2026-05-22T07:36:45.222Z | No | 1.2 |
| 89 | 89 | Pawna Module MSP | 1.2.3 | 3 | B F3 Feasibility Stage Budget V3 | No | No | Yes | B Stages of Budgeting | 2026-10-12T18:30:00.000Z | 2026-10-18T18:30:00.000Z | 0 | 5 | 5 | Not Started | On Track | 0 | system@app.local | 2026-05-22T07:36:45.222Z | 2026-05-22T07:36:45.222Z | Pawna Module MSP.xml | 2026-05-22T07:36:45.222Z | No | 1.2 |
| 90 | 90 | Pawna Module MSP | 1.2.4 | 3 | B F3 Cash flow & Financial Projection for Project | No | No | Yes | B Stages of Budgeting | 2026-10-19T18:30:00.000Z | 2026-10-25T18:30:00.000Z | 0 | 5 | 5 | Not Started | On Track | 0 | system@app.local | 2026-05-22T07:36:45.222Z | 2026-05-22T07:36:45.222Z | Pawna Module MSP.xml | 2026-05-22T07:36:45.222Z | No | 1.2 |
| 91 | 91 | Pawna Module MSP | 1.2.5 | 3 | B C1 Budget (Work Out Rough Cost) | No | No | Yes | B Stages of Budgeting | 2026-12-30T18:30:00.000Z | 2027-01-07T18:30:00.000Z | 0 | 7 | 7 | Not Started | On Track | 0 | system@app.local | 2026-05-22T07:36:45.222Z | 2026-05-22T07:36:45.222Z | Pawna Module MSP.xml | 2026-05-22T07:36:45.222Z | No | 1.2 |
| 92 | 92 | Pawna Module MSP | 1.2.6 | 3 | B C1 Cost Efficiency and VE Review of Pre-concept package **CRITICAL Stage to be done in concert with Dir & CP | No | No | Yes | B Stages of Budgeting | 2027-01-10T18:30:00.000Z | 2027-01-18T18:30:00.000Z | 0 | 7 | 7 | Not Started | On Track | 0 | system@app.local | 2026-05-22T07:36:45.222Z | 2026-05-22T07:36:45.222Z | Pawna Module MSP.xml | 2026-05-22T07:36:45.222Z | No | 1.2 |
| 93 | 93 | Pawna Module MSP | 1.2.7 | 3 | B C2 Work Out Concept Costing & Check | No | No | Yes | B Stages of Budgeting | 2027-03-11T18:30:00.000Z | 2027-03-24T18:30:00.000Z | 0 | 10 | 10 | Not Started | On Track | 0 | system@app.local | 2026-05-22T07:36:45.222Z | 2026-05-22T07:36:45.222Z | Pawna Module MSP.xml | 2026-05-22T07:36:45.222Z | No | 1.2 |
| 94 | 94 | Pawna Module MSP | 1.2.8 | 3 | B S1 Budget Stage 3A | No | No | No | B Stages of Budgeting | 2027-05-20T18:30:00.000Z | 2027-05-30T18:30:00.000Z | 0 | 7 | 7 | Not Started | On Track | 0 | system@app.local | 2026-05-22T07:36:45.222Z | 2026-05-22T07:36:45.222Z | Pawna Module MSP.xml | 2026-05-22T07:36:45.222Z | No | 1.2 |
| 95 | 95 | Pawna Module MSP | 1.2.9 | 3 | B S2 Budget Stage 3B | No | No | Yes | B Stages of Budgeting | 2027-06-10T18:30:00.000Z | 2027-06-20T18:30:00.000Z | 0 | 7 | 7 | Not Started | On Track | 0 | system@app.local | 2026-05-22T07:36:45.222Z | 2026-05-22T07:36:45.222Z | Pawna Module MSP.xml | 2026-05-22T07:36:45.222Z | No | 1.2 |
| 96 | 96 | Pawna Module MSP | 1.2.10 | 3 | B DD1 Revised Budget with all Package & Special Contracts to be captured | No | No | Yes | B Stages of Budgeting | 2027-08-09T18:30:00.000Z | 2027-08-29T18:30:00.000Z | 0 | 15 | 15 | Not Started | On Track | 0 | system@app.local | 2026-05-22T07:36:45.222Z | 2026-05-22T07:36:45.222Z | Pawna Module MSP.xml | 2026-05-22T07:36:45.222Z | No | 1.2 |
| 97 | 97 | Pawna Module MSP | 1.2.11 | 3 | B DD2 Stage Budget | No | No | Yes | B Stages of Budgeting | 2027-10-07T18:30:00.000Z | 2027-10-20T18:30:00.000Z | 0 | 10 | 10 | Not Started | On Track | 0 | system@app.local | 2026-05-22T07:36:45.222Z | 2026-05-22T07:36:45.222Z | Pawna Module MSP.xml | 2026-05-22T07:36:45.222Z | No | 1.2 |
| 98 | 98 | Pawna Module MSP | 1.2.12 | 3 | B T Budget to be reviewed if any major changes & Highlighted | No | No | No | B Stages of Budgeting | 2028-01-06T18:30:00.000Z | 2028-01-19T18:30:00.000Z | 0 | 10 | 10 | Not Started | On Track | 0 | system@app.local | 2026-05-22T07:36:45.222Z | 2026-05-22T07:36:45.222Z | Pawna Module MSP.xml | 2026-05-22T07:36:45.222Z | No | 1.2 |
| 99 | 99 | Pawna Module MSP | 1.3 | 2 | L Stages of Liason | Yes | No | No | Pawna Project | 2026-03-23T18:30:00.000Z | 2030-10-09T18:30:00.000Z | 0 | 1188 | 1188 | In Progress | On Track | 0 | system@app.local | 2026-05-22T07:36:45.222Z | 2026-05-22T07:36:45.222Z | Pawna Module MSP.xml | 2026-05-22T07:36:45.222Z | No | 1 |
| 100 | 100 | Pawna Module MSP | 1.3.1 | 3 | L 1.1: 0 FSI IOD - Submit | No | No | No | L Stages of Liason | 2027-03-11T18:30:00.000Z | 2027-04-07T18:30:00.000Z | 0 | 20 | 20 | Not Started | On Track | 0 | system@app.local | 2026-05-22T07:36:45.222Z | 2026-05-22T07:36:45.222Z | Pawna Module MSP.xml | 2026-05-22T07:36:45.222Z | No | 1.3 |
| 101 | 101 | Pawna Module MSP | 1.3.2 | 3 | L 1.2 0 FSI IOD - Recieve | No | No | No | L Stages of Liason | 2027-04-08T18:30:00.000Z | 2027-04-28T18:30:00.000Z | 0 | 15 | 15 | Not Started | On Track | 0 | system@app.local | 2026-05-22T07:36:45.222Z | 2026-05-22T07:36:45.222Z | Pawna Module MSP.xml | 2026-05-22T07:36:45.222Z | No | 1.3 |
| 102 | 102 | Pawna Module MSP | 1.3.3 | 3 | L 2.1 0 FSI CC - Submit | No | No | No | L Stages of Liason | 2027-04-29T18:30:00.000Z | 2027-06-30T18:30:00.000Z | 0 | 45 | 45 | Not Started | On Track | 0 | system@app.local | 2026-05-22T07:36:45.222Z | 2026-05-22T07:36:45.222Z | Pawna Module MSP.xml | 2026-05-22T07:36:45.222Z | No | 1.3 |
| 103 | 103 | Pawna Module MSP | 1.3.4 | 3 | L 2.2 0 FSI CC - Recieve | No | No | No | L Stages of Liason | 2027-07-01T18:30:00.000Z | 2027-07-21T18:30:00.000Z | 0 | 15 | 15 | Not Started | On Track | 0 | system@app.local | 2026-05-22T07:36:45.222Z | 2026-05-22T07:36:45.222Z | Pawna Module MSP.xml | 2026-05-22T07:36:45.222Z | No | 1.3 |
| 104 | 104 | Pawna Module MSP | 1.3.5 | 3 | L 3.1 MOEF -Submit | No | No | No | L Stages of Liason | 2027-05-20T18:30:00.000Z | 2027-06-30T18:30:00.000Z | 0 | 30 | 30 | Not Started | On Track | 0 | system@app.local | 2026-05-22T07:36:45.222Z | 2026-05-22T07:36:45.222Z | Pawna Module MSP.xml | 2026-05-22T07:36:45.222Z | No | 1.3 |
| 105 | 105 | Pawna Module MSP | 1.3.6 | 3 | L 3.2 MOEF -Recieve | No | No | No | L Stages of Liason | 2027-07-01T18:30:00.000Z | 2028-01-24T18:30:00.000Z | 0 | 148 | 148 | Not Started | On Track | 0 | system@app.local | 2026-05-22T07:36:45.222Z | 2026-05-22T07:36:45.222Z | Pawna Module MSP.xml | 2026-05-22T07:36:45.222Z | No | 1.3 |
| 106 | 106 | Pawna Module MSP | 1.3.7 | 3 | L 4.1 CFO NOC -Submit | No | No | No | L Stages of Liason | 2027-05-20T18:30:00.000Z | 2027-06-09T18:30:00.000Z | 0 | 15 | 15 | Not Started | On Track | 0 | system@app.local | 2026-05-22T07:36:45.222Z | 2026-05-22T07:36:45.222Z | Pawna Module MSP.xml | 2026-05-22T07:36:45.222Z | No | 1.3 |
| 107 | 107 | Pawna Module MSP | 1.3.8 | 3 | L 4.2 CFO NOC -Recieve | No | No | No | L Stages of Liason | 2027-06-10T18:30:00.000Z | 2027-07-21T18:30:00.000Z | 0 | 30 | 30 | Not Started | On Track | 0 | system@app.local | 2026-05-22T07:36:45.222Z | 2026-05-22T07:36:45.222Z | Pawna Module MSP.xml | 2026-05-22T07:36:45.222Z | No | 1.3 |
| 108 | 108 | Pawna Module MSP | 1.3.9 | 3 | L 5.1 Concessions -Submit | No | No | No | L Stages of Liason | 2027-05-20T18:30:00.000Z | 2027-07-28T18:30:00.000Z | 0 | 50 | 50 | Not Started | On Track | 0 | system@app.local | 2026-05-22T07:36:45.222Z | 2026-05-22T07:36:45.222Z | Pawna Module MSP.xml | 2026-05-22T07:36:45.222Z | No | 1.3 |
| 109 | 109 | Pawna Module MSP | 1.3.10 | 3 | L 5.2 Concessions -Recieve | No | No | No | L Stages of Liason | 2027-07-29T18:30:00.000Z | 2027-09-29T18:30:00.000Z | 0 | 45 | 45 | Not Started | On Track | 0 | system@app.local | 2026-05-22T07:36:45.222Z | 2026-05-22T07:36:45.222Z | Pawna Module MSP.xml | 2026-05-22T07:36:45.222Z | No | 1.3 |
| 110 | 110 | Pawna Module MSP | 1.3.11 | 3 | L 6.1 Full IOD -Submit | No | No | No | L Stages of Liason | 2027-09-19T18:30:00.000Z | 2027-11-18T18:30:00.000Z | 0 | 45 | 45 | Not Started | On Track | 0 | system@app.local | 2026-05-22T07:36:45.222Z | 2026-05-22T07:36:45.222Z | Pawna Module MSP.xml | 2026-05-22T07:36:45.222Z | No | 1.3 |
| 111 | 111 | Pawna Module MSP | 1.3.12 | 3 | L 6.2 Full IOD -Recieve | No | No | No | L Stages of Liason | 2027-11-21T18:30:00.000Z | 2028-01-20T18:30:00.000Z | 0 | 45 | 45 | Not Started | On Track | 0 | system@app.local | 2026-05-22T07:36:45.222Z | 2026-05-22T07:36:45.222Z | Pawna Module MSP.xml | 2026-05-22T07:36:45.222Z | No | 1.3 |
| 112 | 112 | Pawna Module MSP | 1.3.13 | 3 | L 7.1 Society/Collector NOC -Submit | No | No | No | L Stages of Liason | 2027-09-30T18:30:00.000Z | 2027-10-06T18:30:00.000Z | 0 | 5 | 5 | Not Started | On Track | 0 | system@app.local | 2026-05-22T07:36:45.222Z | 2026-05-22T07:36:45.222Z | Pawna Module MSP.xml | 2026-05-22T07:36:45.222Z | No | 1.3 |
| 113 | 113 | Pawna Module MSP | 1.3.14 | 3 | L 7.2 Society/Collector NOC -Recieve | No | No | No | L Stages of Liason | 2027-10-07T18:30:00.000Z | 2027-11-17T18:30:00.000Z | 0 | 30 | 30 | Not Started | On Track | 0 | system@app.local | 2026-05-22T07:36:45.222Z | 2026-05-22T07:36:45.222Z | Pawna Module MSP.xml | 2026-05-22T07:36:45.222Z | No | 1.3 |
| 114 | 114 | Pawna Module MSP | 1.3.15 | 3 | L 8.1 Plinth CC -Submit | No | No | No | L Stages of Liason | 2028-01-23T18:30:00.000Z | 2028-03-02T18:30:00.000Z | 0 | 30 | 30 | Not Started | On Track | 0 | system@app.local | 2026-05-22T07:36:45.222Z | 2026-05-22T07:36:45.222Z | Pawna Module MSP.xml | 2026-05-22T07:36:45.222Z | No | 1.3 |
| 115 | 115 | Pawna Module MSP | 1.3.16 | 3 | L 8.2 Plinth CC -Recieve | No | No | No | L Stages of Liason | 2028-03-05T18:30:00.000Z | 2028-03-23T18:30:00.000Z | 0 | 15 | 15 | Not Started | On Track | 0 | system@app.local | 2026-05-22T07:36:45.222Z | 2026-05-22T07:36:45.222Z | Pawna Module MSP.xml | 2026-05-22T07:36:45.222Z | No | 1.3 |
| 156 | 156 | Pawna Module MSP | 1.3.17 | 3 | L 8.3 CC beyond Plinth - Submit | No | No | Yes | L Stages of Liason | 2028-08-03T18:30:00.000Z | 2028-08-23T18:30:00.000Z | 0 | 15 | 15 | Not Started | On Track | 0 | system@app.local | 2026-05-22T07:36:45.222Z | 2026-05-22T07:36:45.222Z | Pawna Module MSP.xml | 2026-05-22T07:36:45.222Z | No | 1.3 |
| 154 | 154 | Pawna Module MSP | 1.3.18 | 3 | L 8.4 CC beyond Plinth - Recieve | No | No | Yes | L Stages of Liason | 2028-08-24T18:30:00.000Z | 2028-10-04T18:30:00.000Z | 0 | 30 | 30 | Not Started | On Track | 0 | system@app.local | 2026-05-22T07:36:45.222Z | 2026-05-22T07:36:45.222Z | Pawna Module MSP.xml | 2026-05-22T07:36:45.222Z | No | 1.3 |
| 116 | 116 | Pawna Module MSP | 1.3.19 | 3 | L9 Further CCs (as per stages) | No | No | No | L Stages of Liason | 2026-03-23T18:30:00.000Z | 2026-05-03T18:30:00.000Z | 0 | 30 | 30 | Overdue | Delayed | 18 | system@app.local | 2026-05-22T07:36:45.222Z | 2026-05-22T07:36:45.222Z | Pawna Module MSP.xml | 2026-05-22T07:36:45.222Z | Yes | 1.3 |
| 117 | 117 | Pawna Module MSP | 1.3.20 | 3 | L 10.1 Final CFO - Submit | No | No | Yes | L Stages of Liason | 2030-04-25T18:30:00.000Z | 2030-05-15T18:30:00.000Z | 0 | 15 | 15 | Not Started | On Track | 0 | system@app.local | 2026-05-22T07:36:45.222Z | 2026-05-22T07:36:45.222Z | Pawna Module MSP.xml | 2026-05-22T07:36:45.222Z | No | 1.3 |
| 121 | 121 | Pawna Module MSP | 1.3.21 | 3 | L 10.2 Final CFO - Recieve | No | No | Yes | L Stages of Liason | 2030-05-16T18:30:00.000Z | 2030-06-26T18:30:00.000Z | 0 | 30 | 30 | Not Started | On Track | 0 | system@app.local | 2026-05-22T07:36:45.222Z | 2026-05-22T07:36:45.222Z | Pawna Module MSP.xml | 2026-05-22T07:36:45.222Z | No | 1.3 |
| 122 | 122 | Pawna Module MSP | 1.3.22 | 3 | L 11.1 OC - Submit | No | No | Yes | L Stages of Liason | 2030-06-27T18:30:00.000Z | 2030-07-17T18:30:00.000Z | 0 | 15 | 15 | Not Started | On Track | 0 | system@app.local | 2026-05-22T07:36:45.222Z | 2026-05-22T07:36:45.222Z | Pawna Module MSP.xml | 2026-05-22T07:36:45.222Z | No | 1.3 |
| 124 | 124 | Pawna Module MSP | 1.3.23 | 3 | L 11.2 OC - Recieve | No | No | Yes | L Stages of Liason | 2030-07-18T18:30:00.000Z | 2030-10-09T18:30:00.000Z | 0 | 60 | 60 | Not Started | On Track | 0 | system@app.local | 2026-05-22T07:36:45.222Z | 2026-05-22T07:36:45.222Z | Pawna Module MSP.xml | 2026-05-22T07:36:45.222Z | No | 1.3 |
| 125 | 125 | Pawna Module MSP | 1.4 | 2 | LG Stages of Legal | Yes | No | No | Pawna Project | 2026-03-23T18:30:00.000Z | 2028-02-10T18:30:00.000Z | 0 | 494 | 494 | In Progress | On Track | 0 | system@app.local | 2026-05-22T07:36:45.222Z | 2026-05-22T07:36:45.222Z | Pawna Module MSP.xml | 2026-05-22T07:36:45.222Z | No | 1 |
| 126 | 126 | Pawna Module MSP | 1.4.1 | 3 | LG 1 Legal 1: Project Acquisition Package | No | No | No | LG Stages of Legal | 2026-03-23T18:30:00.000Z | 2026-03-23T18:30:00.000Z | 0 | 1 | 1 | Overdue | Delayed | 59 | system@app.local | 2026-05-22T07:36:45.222Z | 2026-05-22T07:36:45.222Z | Pawna Module MSP.xml | 2026-05-22T07:36:45.222Z | Yes | 1.4 |
| 127 | 127 | Pawna Module MSP | 1.4.2 | 3 | LG 2 Legal 2: Customer Legal Set Package | No | No | No | LG Stages of Legal | 2027-11-21T18:30:00.000Z | 2027-12-09T18:30:00.000Z | 0 | 15 | 15 | Not Started | On Track | 0 | system@app.local | 2026-05-22T07:36:45.222Z | 2026-05-22T07:36:45.222Z | Pawna Module MSP.xml | 2026-05-22T07:36:45.222Z | No | 1.4 |
| 128 | 128 | Pawna Module MSP | 1.4.3 | 3 | LG 3 Legal 3: Sales Process Documents Package | No | No | No | LG Stages of Legal | 2028-01-23T18:30:00.000Z | 2028-02-10T18:30:00.000Z | 0 | 15 | 15 | Not Started | On Track | 0 | system@app.local | 2026-05-22T07:36:45.222Z | 2026-05-22T07:36:45.222Z | Pawna Module MSP.xml | 2026-05-22T07:36:45.222Z | No | 1.4 |
| 129 | 129 | Pawna Module MSP | 1.4.4 | 3 | LG 4 Legal 4: RERA Submission Package | No | No | No | LG Stages of Legal | 2027-09-30T18:30:00.000Z | 2027-10-20T18:30:00.000Z | 0 | 15 | 15 | Not Started | On Track | 0 | system@app.local | 2026-05-22T07:36:45.222Z | 2026-05-22T07:36:45.222Z | Pawna Module MSP.xml | 2026-05-22T07:36:45.222Z | No | 1.4 |
| 130 | 130 | Pawna Module MSP | 1.4.5 | 3 | LG5 Legal 5: Project Legal Closing Package | No | No | No | LG Stages of Legal | 2026-03-23T18:30:00.000Z | 2026-04-12T18:30:00.000Z | 0 | 15 | 15 | Overdue | Delayed | 39 | system@app.local | 2026-05-22T07:36:45.222Z | 2026-05-22T07:36:45.222Z | Pawna Module MSP.xml | 2026-05-22T07:36:45.222Z | Yes | 1.4 |
| 131 | 131 | Pawna Module MSP | 1.5 | 2 | M Marketing | Yes | No | No | Pawna Project | 2027-01-28T18:30:00.000Z | 2028-01-23T18:30:00.000Z | 0 | 257 | 257 | Not Started | On Track | 0 | system@app.local | 2026-05-22T07:36:45.222Z | 2026-05-22T07:36:45.222Z | Pawna Module MSP.xml | 2026-05-22T07:36:45.222Z | No | 1 |
| 132 | 132 | Pawna Module MSP | 1.5.1 | 3 | M1: TEASER | No | No | No | M Marketing | 2027-01-28T18:30:00.000Z | 2027-06-02T18:30:00.000Z | 0 | 90 | 90 | Not Started | On Track | 0 | system@app.local | 2026-05-22T07:36:45.222Z | 2026-05-22T07:36:45.222Z | Pawna Module MSP.xml | 2026-05-22T07:36:45.222Z | No | 1.5 |
| 133 | 133 | Pawna Module MSP | 1.5.2 | 3 | M2: Expression Of Interest | No | No | No | M Marketing | 2027-05-20T18:30:00.000Z | 2027-12-01T18:30:00.000Z | 0 | 140 | 140 | Not Started | On Track | 0 | system@app.local | 2026-05-22T07:36:45.222Z | 2026-05-22T07:36:45.222Z | Pawna Module MSP.xml | 2026-05-22T07:36:45.222Z | No | 1.5 |
| 134 | 134 | Pawna Module MSP | 1.5.3 | 3 | M3: Pre Launch | No | No | No | M Marketing | 2027-05-20T18:30:00.000Z | 2027-11-03T18:30:00.000Z | 0 | 120 | 120 | Not Started | On Track | 0 | system@app.local | 2026-05-22T07:36:45.222Z | 2026-05-22T07:36:45.222Z | Pawna Module MSP.xml | 2026-05-22T07:36:45.222Z | No | 1.5 |
| 135 | 135 | Pawna Module MSP | 1.5.4 | 3 | M4: LAUNCH | No | No | No | M Marketing | 2027-06-28T18:30:00.000Z | 2028-01-23T18:30:00.000Z | 0 | 150 | 150 | Not Started | On Track | 0 | system@app.local | 2026-05-22T07:36:45.222Z | 2026-05-22T07:36:45.222Z | Pawna Module MSP.xml | 2026-05-22T07:36:45.222Z | No | 1.5 |
| 136 | 136 | Pawna Module MSP | 1.6 | 2 | CP Contract & Procurement | Yes | No | Yes | Pawna Project | 2028-01-06T18:30:00.000Z | 2028-04-19T18:30:00.000Z | 0 | 75 | 75 | Not Started | On Track | 0 | system@app.local | 2026-05-22T07:36:45.222Z | 2026-05-22T07:36:45.222Z | Pawna Module MSP.xml | 2026-05-22T07:36:45.222Z | No | 1 |
| 137 | 137 | Pawna Module MSP | 1.6.1 | 3 | CP1 Excavation Work | No | No | Yes | CP Contract & Procurement | 2028-01-06T18:30:00.000Z | 2028-03-29T18:30:00.000Z | 0 | 60 | 60 | Not Started | On Track | 0 | system@app.local | 2026-05-22T07:36:45.222Z | 2026-05-22T07:36:45.222Z | Pawna Module MSP.xml | 2026-05-22T07:36:45.222Z | No | 1.6 |
| 138 | 138 | Pawna Module MSP | 1.6.2 | 3 | CP2 Core & Shell Work | No | No | No | CP Contract & Procurement | 2028-01-06T18:30:00.000Z | 2028-04-19T18:30:00.000Z | 0 | 75 | 75 | Not Started | On Track | 0 | system@app.local | 2026-05-22T07:36:45.222Z | 2026-05-22T07:36:45.222Z | Pawna Module MSP.xml | 2026-05-22T07:36:45.222Z | No | 1.6 |
| 139 | 139 | Pawna Module MSP | 1.6.3 | 3 | CP3 MEP Works | No | No | No | CP Contract & Procurement | 2028-01-06T18:30:00.000Z | 2028-03-29T18:30:00.000Z | 0 | 60 | 60 | Not Started | On Track | 0 | system@app.local | 2026-05-22T07:36:45.222Z | 2026-05-22T07:36:45.222Z | Pawna Module MSP.xml | 2026-05-22T07:36:45.222Z | No | 1.6 |
| 140 | 140 | Pawna Module MSP | 1.6.4 | 3 | CP4 Interior Work | No | No | No | CP Contract & Procurement | 2028-01-06T18:30:00.000Z | 2028-03-29T18:30:00.000Z | 0 | 60 | 60 | Not Started | On Track | 0 | system@app.local | 2026-05-22T07:36:45.222Z | 2026-05-22T07:36:45.222Z | Pawna Module MSP.xml | 2026-05-22T07:36:45.222Z | No | 1.6 |
| 143 | 143 | Pawna Module MSP | 1.7 | 2 | E Execution | Yes | No | Yes | Pawna Project | 2027-03-11T18:30:00.000Z | 2031-01-01T18:30:00.000Z | 0 | 995 | 995 | Not Started | On Track | 0 | system@app.local | 2026-05-22T07:36:45.222Z | 2026-05-22T07:36:45.222Z | Pawna Module MSP.xml | 2026-05-22T07:36:45.222Z | No | 1 |
| 144 | 144 | Pawna Module MSP | 1.7.1 | 3 | E1 Site Preparation | No | No | No | E Execution | 2027-03-11T18:30:00.000Z | 2027-04-21T18:30:00.000Z | 0 | 30 | 30 | Not Started | On Track | 0 | system@app.local | 2026-05-22T07:36:45.222Z | 2026-05-22T07:36:45.222Z | Pawna Module MSP.xml | 2026-05-22T07:36:45.222Z | No | 1.7 |
| 145 | 145 | Pawna Module MSP | 1.7.2 | 3 | E2 Excavation Work | No | No | Yes | E Execution | 2028-04-20T18:30:00.000Z | 2028-05-31T18:30:00.000Z | 0 | 30 | 30 | Not Started | On Track | 0 | system@app.local | 2026-05-22T07:36:45.222Z | 2026-05-22T07:36:45.222Z | Pawna Module MSP.xml | 2026-05-22T07:36:45.222Z | No | 1.7 |
| 146 | 146 | Pawna Module MSP | 1.7.3 | 3 | E3 Substructure Work | No | No | Yes | E Execution | 2028-06-01T18:30:00.000Z | 2028-08-23T18:30:00.000Z | 0 | 60 | 60 | Not Started | On Track | 0 | system@app.local | 2026-05-22T07:36:45.222Z | 2026-05-22T07:36:45.222Z | Pawna Module MSP.xml | 2026-05-22T07:36:45.222Z | No | 1.7 |
| 147 | 147 | Pawna Module MSP | 1.7.4 | 3 | E4 Super Structure Work | No | No | Yes | E Execution | 2028-10-05T18:30:00.000Z | 2029-06-13T18:30:00.000Z | 0 | 180 | 180 | Not Started | On Track | 0 | system@app.local | 2026-05-22T07:36:45.222Z | 2026-05-22T07:36:45.222Z | Pawna Module MSP.xml | 2026-05-22T07:36:45.222Z | No | 1.7 |
| 148 | 148 | Pawna Module MSP | 1.7.5 | 3 | E5 Finishing & MEP Work | No | No | Yes | E Execution | 2029-12-27T18:30:00.000Z | 2030-05-15T18:30:00.000Z | 0 | 100 | 100 | Not Started | On Track | 0 | system@app.local | 2026-05-22T07:36:45.222Z | 2026-05-22T07:36:45.222Z | Pawna Module MSP.xml | 2026-05-22T07:36:45.222Z | No | 1.7 |
| 153 | 153 | Pawna Module MSP | 1.7.6 | 3 | E6 Handover | No | No | Yes | E Execution | 2030-10-10T18:30:00.000Z | 2031-01-01T18:30:00.000Z | 0 | 60 | 60 | Not Started | On Track | 0 | system@app.local | 2026-05-22T07:36:45.222Z | 2026-05-22T07:36:45.222Z | Pawna Module MSP.xml | 2026-05-22T07:36:45.222Z | No | 1.7 |
| 157 | 157 | Raya Terraces Module MSP | 1 | 1 | Raya Terraces | Yes | No | Yes | Raya Terraces | 2026-03-19T18:30:00.000Z | 2030-02-06T18:30:00.000Z | 0 | 1015 | 1015 | In Progress | On Track | 0 | system@app.local | 2026-05-22T07:36:49.511Z | 2026-05-22T07:36:49.511Z | Raya Terraces Module MSP.xml | 2026-05-22T07:36:49.511Z | No |  |
| 149 | 149 | Raya Terraces Module MSP | 1.1 | 2 | Precon Design Works | Yes | No | Yes | Raya Terraces | 2026-03-19T18:30:00.000Z | 2027-03-17T18:30:00.000Z | 0 | 260 | 260 | In Progress | On Track | 0 | system@app.local | 2026-05-22T07:36:49.511Z | 2026-05-22T07:36:49.511Z | Raya Terraces Module MSP.xml | 2026-05-22T07:36:49.511Z | No | 1 |
| 1 | 1 | Raya Terraces Module MSP | 1.1.1 | 3 | F1 Feasibility Take off | Yes | No | No | Precon Design Works | 2026-03-23T18:30:00.000Z | 2026-05-03T18:30:00.000Z | 0 | 30 | 30 | Overdue | Delayed | 18 | system@app.local | 2026-05-22T07:36:49.511Z | 2026-05-22T07:36:49.511Z | Raya Terraces Module MSP.xml | 2026-05-22T07:36:49.511Z | Yes | 1.1 |
| 2 | 2 | Raya Terraces Module MSP | 1.1.1.1 | 4 | F1.1 Initial Management Note | No | No | No | F1 Feasibility Take off | 2026-03-23T18:30:00.000Z | 2026-05-03T18:30:00.000Z | 0 | 30 | 30 | Overdue | Delayed | 18 | system@app.local | 2026-05-22T07:36:49.511Z | 2026-05-22T07:36:49.511Z | Raya Terraces Module MSP.xml | 2026-05-22T07:36:49.511Z | Yes | 1.1.1 |
| 3 | 3 | Raya Terraces Module MSP | 1.1.1.2 | 4 | F1.2 Legal Title check | No | No | No | F1 Feasibility Take off | 2026-03-23T18:30:00.000Z | 2026-05-03T18:30:00.000Z | 0 | 30 | 30 | Overdue | Delayed | 18 | system@app.local | 2026-05-22T07:36:49.511Z | 2026-05-22T07:36:49.511Z | Raya Terraces Module MSP.xml | 2026-05-22T07:36:49.511Z | Yes | 1.1.1 |
| 4 | 4 | Raya Terraces Module MSP | 1.1.1.3 | 4 | F1.3 Initial Liaison Note | No | No | No | F1 Feasibility Take off | 2026-03-23T18:30:00.000Z | 2026-05-03T18:30:00.000Z | 0 | 30 | 30 | Overdue | Delayed | 18 | system@app.local | 2026-05-22T07:36:49.511Z | 2026-05-22T07:36:49.511Z | Raya Terraces Module MSP.xml | 2026-05-22T07:36:49.511Z | Yes | 1.1.1 |
| 5 | 5 | Raya Terraces Module MSP | 1.1.1.4 | 4 | F1.4 Initial Sales & Marketing Note | No | No | No | F1 Feasibility Take off | 2026-03-23T18:30:00.000Z | 2026-05-03T18:30:00.000Z | 0 | 30 | 30 | Overdue | Delayed | 18 | system@app.local | 2026-05-22T07:36:49.511Z | 2026-05-22T07:36:49.511Z | Raya Terraces Module MSP.xml | 2026-05-22T07:36:49.511Z | Yes | 1.1.1 |
| 6 | 6 | Raya Terraces Module MSP | 1.1.1.5 | 4 | F1.5 Initial Architectural Note | No | No | No | F1 Feasibility Take off | 2026-03-23T18:30:00.000Z | 2026-05-03T18:30:00.000Z | 0 | 30 | 30 | Overdue | Delayed | 18 | system@app.local | 2026-05-22T07:36:49.511Z | 2026-05-22T07:36:49.511Z | Raya Terraces Module MSP.xml | 2026-05-22T07:36:49.511Z | Yes | 1.1.1 |
| 11 | 11 | Raya Terraces Module MSP | 1.1.1.6 | 4 | F1.7 Project VISION Doc Sign off | No | No | No | F1 Feasibility Take off | 2026-03-23T18:30:00.000Z | 2026-03-29T18:30:00.000Z | 0 | 5 | 5 | Overdue | Delayed | 53 | system@app.local | 2026-05-22T07:36:49.511Z | 2026-05-22T07:36:49.511Z | Raya Terraces Module MSP.xml | 2026-05-22T07:36:49.511Z | Yes | 1.1.1 |
| 12 | 12 | Raya Terraces Module MSP | 1.1.2 | 3 | F2 Feasibility Study Advance | Yes | No | No | Precon Design Works | 2026-03-23T18:30:00.000Z | 2026-04-12T18:30:00.000Z | 0 | 15 | 15 | Overdue | Delayed | 39 | system@app.local | 2026-05-22T07:36:49.511Z | 2026-05-22T07:36:49.511Z | Raya Terraces Module MSP.xml | 2026-05-22T07:36:49.511Z | Yes | 1.1 |

| Task_UID | Row_ID | Project | WBS | Outline_Level | Task_Name | Is_Summary | Is_Milestone | Is_Critical | Phase | Planned_Start | Planned_Finish | Pct_Complete | Duration_Days | Remaining_Days | Status | Derail_Status | Derail_Days | Last_Updated_By | Last_Updated_At | Last_Synced | Source_File | Sync_Version | Action_Required | Parent_WBS |
| --- | --- | --- | --- | --- | --- | --- | --- | --- | --- | --- | --- | --- | --- | --- | --- | --- | --- | --- | --- | --- | --- | --- | --- | --- |
| 13 | 13 | Raya Terraces Module MSP | 1.1.2.1 | 4 | F2.1 Appoint Liaison Arch | No | No | No | F2 Feasibility Study Advance | 2026-03-23T18:30:00.000Z | 2026-04-12T18:30:00.000Z | 0 | 15 | 15 | Overdue | Delayed | 39 | system@app.local | 2026-05-22T07:36:49.511Z | 2026-05-22T07:36:49.511Z | Raya Terraces Module MSP.xml | 2026-05-22T07:36:49.511Z | Yes | 1.1.2 |
| 14 | 14 | Raya Terraces Module MSP | 1.1.2.2 | 4 | F2.2 Appoint Architect (Feasibility Study only) | No | No | No | F2 Feasibility Study Advance | 2026-03-23T18:30:00.000Z | 2026-04-12T18:30:00.000Z | 0 | 15 | 15 | Overdue | Delayed | 39 | system@app.local | 2026-05-22T07:36:49.511Z | 2026-05-22T07:36:49.511Z | Raya Terraces Module MSP.xml | 2026-05-22T07:36:49.511Z | Yes | 1.1.2 |
| 15 | 15 | Raya Terraces Module MSP | 1.1.2.3 | 4 | F2.3 Appoint Structural consultant | No | No | No | F2 Feasibility Study Advance | 2026-03-23T18:30:00.000Z | 2026-04-12T18:30:00.000Z | 0 | 15 | 15 | Overdue | Delayed | 39 | system@app.local | 2026-05-22T07:36:49.511Z | 2026-05-22T07:36:49.511Z | Raya Terraces Module MSP.xml | 2026-05-22T07:36:49.511Z | Yes | 1.1.2 |
| 16 | 16 | Raya Terraces Module MSP | 1.1.2.4 | 4 | F2.4 Legal team check initial TITLE Check | No | No | No | F2 Feasibility Study Advance | 2026-03-23T18:30:00.000Z | 2026-04-12T18:30:00.000Z | 0 | 15 | 15 | Overdue | Delayed | 39 | system@app.local | 2026-05-22T07:36:49.511Z | 2026-05-22T07:36:49.511Z | Raya Terraces Module MSP.xml | 2026-05-22T07:36:49.511Z | Yes | 1.1.2 |
| 17 | 17 | Raya Terraces Module MSP | 1.1.2.5 | 4 | F2.5 Appoint Cost Consultant | No | No | No | F2 Feasibility Study Advance | 2026-03-23T18:30:00.000Z | 2026-04-12T18:30:00.000Z | 0 | 15 | 15 | Overdue | Delayed | 39 | system@app.local | 2026-05-22T07:36:49.511Z | 2026-05-22T07:36:49.511Z | Raya Terraces Module MSP.xml | 2026-05-22T07:36:49.511Z | Yes | 1.1.2 |
| 18 | 18 | Raya Terraces Module MSP | 1.1.2.6 | 4 | F2.6 Appoint Geo-Technical Agency | No | No | No | F2 Feasibility Study Advance | 2026-03-23T18:30:00.000Z | 2026-04-12T18:30:00.000Z | 0 | 15 | 15 | Overdue | Delayed | 39 | system@app.local | 2026-05-22T07:36:49.511Z | 2026-05-22T07:36:49.511Z | Raya Terraces Module MSP.xml | 2026-05-22T07:36:49.511Z | Yes | 1.1.2 |
| 19 | 19 | Raya Terraces Module MSP | 1.1.2.7 | 4 | F2.7 Appoint Surveyor | No | No | No | F2 Feasibility Study Advance | 2026-03-23T18:30:00.000Z | 2026-04-12T18:30:00.000Z | 0 | 15 | 15 | Overdue | Delayed | 39 | system@app.local | 2026-05-22T07:36:49.511Z | 2026-05-22T07:36:49.511Z | Raya Terraces Module MSP.xml | 2026-05-22T07:36:49.511Z | Yes | 1.1.2 |
| 20 | 20 | Raya Terraces Module MSP | 1.1.2.8 | 4 | F2.8 Appoint MOEF Consultant | No | No | No | F2 Feasibility Study Advance | 2026-03-23T18:30:00.000Z | 2026-04-12T18:30:00.000Z | 0 | 15 | 15 | Overdue | Delayed | 39 | system@app.local | 2026-05-22T07:36:49.511Z | 2026-05-22T07:36:49.511Z | Raya Terraces Module MSP.xml | 2026-05-22T07:36:49.511Z | Yes | 1.1.2 |
| 21 | 21 | Raya Terraces Module MSP | 1.1.2.9 | 4 | F2.9 Sign off | No | No | No | F2 Feasibility Study Advance | 2026-03-23T18:30:00.000Z | 2026-03-29T18:30:00.000Z | 0 | 5 | 5 | Overdue | Delayed | 53 | system@app.local | 2026-05-22T07:36:49.511Z | 2026-05-22T07:36:49.511Z | Raya Terraces Module MSP.xml | 2026-05-22T07:36:49.511Z | Yes | 1.1.2 |
| 22 | 22 | Raya Terraces Module MSP | 1.1.3 | 3 | F3 Feasibility Approval | Yes | No | No | Precon Design Works | 2026-03-23T18:30:00.000Z | 2026-05-03T18:30:00.000Z | 0 | 30 | 30 | Overdue | Delayed | 18 | system@app.local | 2026-05-22T07:36:49.511Z | 2026-05-22T07:36:49.511Z | Raya Terraces Module MSP.xml | 2026-05-22T07:36:49.511Z | Yes | 1.1 |
| 23 | 23 | Raya Terraces Module MSP | 1.1.3.1 | 4 | F3.1 Conduct Commercial Due Diligence | No | No | No | F3 Feasibility Approval | 2026-03-23T18:30:00.000Z | 2026-05-03T18:30:00.000Z | 0 | 30 | 30 | Overdue | Delayed | 18 | system@app.local | 2026-05-22T07:36:49.511Z | 2026-05-22T07:36:49.511Z | Raya Terraces Module MSP.xml | 2026-05-22T07:36:49.511Z | Yes | 1.1.3 |
| 24 | 24 | Raya Terraces Module MSP | 1.1.3.2 | 4 | F3.1 Conduct PRE -Legal Due Diligence | No | No | No | F3 Feasibility Approval | 2026-03-23T18:30:00.000Z | 2026-05-03T18:30:00.000Z | 0 | 30 | 30 | Overdue | Delayed | 18 | system@app.local | 2026-05-22T07:36:49.511Z | 2026-05-22T07:36:49.511Z | Raya Terraces Module MSP.xml | 2026-05-22T07:36:49.511Z | Yes | 1.1.3 |
| 25 | 25 | Raya Terraces Module MSP | 1.1.3.3 | 4 | F3.1 Conduct Preliminary Liaison DD | No | No | No | F3 Feasibility Approval | 2026-03-23T18:30:00.000Z | 2026-05-03T18:30:00.000Z | 0 | 30 | 30 | Overdue | Delayed | 18 | system@app.local | 2026-05-22T07:36:49.511Z | 2026-05-22T07:36:49.511Z | Raya Terraces Module MSP.xml | 2026-05-22T07:36:49.511Z | Yes | 1.1.3 |
| 26 | 26 | Raya Terraces Module MSP | 1.1.3.4 | 4 | F3.1 Conduct Preliminary Construction Due Diligence | No | No | No | F3 Feasibility Approval | 2026-03-23T18:30:00.000Z | 2026-05-03T18:30:00.000Z | 0 | 30 | 30 | Overdue | Delayed | 18 | system@app.local | 2026-05-22T07:36:49.511Z | 2026-05-22T07:36:49.511Z | Raya Terraces Module MSP.xml | 2026-05-22T07:36:49.511Z | Yes | 1.1.3 |
| 27 | 27 | Raya Terraces Module MSP | 1.1.3.5 | 4 | F3.4 FINAL Feasibility Report | No | No | No | F3 Feasibility Approval | 2026-03-23T18:30:00.000Z | 2026-03-29T18:30:00.000Z | 0 | 5 | 5 | Overdue | Delayed | 53 | system@app.local | 2026-05-22T07:36:49.511Z | 2026-05-22T07:36:49.511Z | Raya Terraces Module MSP.xml | 2026-05-22T07:36:49.511Z | Yes | 1.1.3 |
| 28 | 28 | Raya Terraces Module MSP | 1.1.3.6 | 4 | F3.5 Land Acquisition | No | Yes | No | F3 Feasibility Approval | 2026-03-23T18:30:00.000Z | 2026-03-23T18:30:00.000Z | 0 | 0 | 0 | Overdue | Delayed | 59 | system@app.local | 2026-05-22T07:36:49.511Z | 2026-05-22T07:36:49.511Z | Raya Terraces Module MSP.xml | 2026-05-22T07:36:49.511Z | Yes | 1.1.3 |
| 29 | 29 | Raya Terraces Module MSP | 1.1.4 | 3 | C1 Develop Project Master Plan & Concept | Yes | No | No | Precon Design Works | 2026-03-23T18:30:00.000Z | 2026-05-03T18:30:00.000Z | 0 | 30 | 30 | Overdue | Delayed | 18 | system@app.local | 2026-05-22T07:36:49.511Z | 2026-05-22T07:36:49.511Z | Raya Terraces Module MSP.xml | 2026-05-22T07:36:49.511Z | Yes | 1.1 |
| 30 | 30 | Raya Terraces Module MSP | 1.1.4.1 | 4 | C1.1 ERP Creation of WBS (Limited to Costs related to Concept Budget only) | No | No | No | C1 Develop Project Master Plan & Concept | 2026-03-23T18:30:00.000Z | 2026-03-24T18:30:00.000Z | 0 | 2 | 2 | Overdue | Delayed | 58 | system@app.local | 2026-05-22T07:36:49.511Z | 2026-05-22T07:36:49.511Z | Raya Terraces Module MSP.xml | 2026-05-22T07:36:49.511Z | Yes | 1.1.4 |
| 31 | 31 | Raya Terraces Module MSP | 1.1.4.2 | 4 | C1.1 Appointment of Consultants | No | No | No | C1 Develop Project Master Plan & Concept | 2026-03-23T18:30:00.000Z | 2026-03-29T18:30:00.000Z | 0 | 5 | 5 | Overdue | Delayed | 53 | system@app.local | 2026-05-22T07:36:49.511Z | 2026-05-22T07:36:49.511Z | Raya Terraces Module MSP.xml | 2026-05-22T07:36:49.511Z | Yes | 1.1.4 |
| 32 | 32 | Raya Terraces Module MSP | 1.1.4.3 | 4 | C1.2 Master Layout Concept Initiation | No | No | No | C1 Develop Project Master Plan & Concept | 2026-03-23T18:30:00.000Z | 2026-05-03T18:30:00.000Z | 0 | 30 | 30 | Overdue | Delayed | 18 | system@app.local | 2026-05-22T07:36:49.511Z | 2026-05-22T07:36:49.511Z | Raya Terraces Module MSP.xml | 2026-05-22T07:36:49.511Z | Yes | 1.1.4 |
| 33 | 33 | Raya Terraces Module MSP | 1.1.4.4 | 4 | C1.2 Preparation of Arch Concept Package | No | No | No | C1 Develop Project Master Plan & Concept | 2026-03-23T18:30:00.000Z | 2026-05-03T18:30:00.000Z | 0 | 30 | 30 | Overdue | Delayed | 18 | system@app.local | 2026-05-22T07:36:49.511Z | 2026-05-22T07:36:49.511Z | Raya Terraces Module MSP.xml | 2026-05-22T07:36:49.511Z | Yes | 1.1.4 |
| 34 | 34 | Raya Terraces Module MSP | 1.1.4.5 | 4 | C1.2 Structural | No | No | No | C1 Develop Project Master Plan & Concept | 2026-03-23T18:30:00.000Z | 2026-05-03T18:30:00.000Z | 0 | 30 | 30 | Overdue | Delayed | 18 | system@app.local | 2026-05-22T07:36:49.511Z | 2026-05-22T07:36:49.511Z | Raya Terraces Module MSP.xml | 2026-05-22T07:36:49.511Z | Yes | 1.1.4 |
| 35 | 35 | Raya Terraces Module MSP | 1.1.4.6 | 4 | C1.2 Services (MEP Inputs) | No | No | No | C1 Develop Project Master Plan & Concept | 2026-03-23T18:30:00.000Z | 2026-05-03T18:30:00.000Z | 0 | 30 | 30 | Overdue | Delayed | 18 | system@app.local | 2026-05-22T07:36:49.511Z | 2026-05-22T07:36:49.511Z | Raya Terraces Module MSP.xml | 2026-05-22T07:36:49.511Z | Yes | 1.1.4 |
| 36 | 36 | Raya Terraces Module MSP | 1.1.4.7 | 4 | C1.2 Liaison | No | No | No | C1 Develop Project Master Plan & Concept | 2026-03-23T18:30:00.000Z | 2026-04-05T18:30:00.000Z | 0 | 10 | 10 | Overdue | Delayed | 46 | system@app.local | 2026-05-22T07:36:49.511Z | 2026-05-22T07:36:49.511Z | Raya Terraces Module MSP.xml | 2026-05-22T07:36:49.511Z | Yes | 1.1.4 |
| 37 | 37 | Raya Terraces Module MSP | 1.1.4.8 | 4 | C1.3 Project Schedule | No | No | No | C1 Develop Project Master Plan & Concept | 2026-03-23T18:30:00.000Z | 2026-03-25T18:30:00.000Z | 0 | 3 | 3 | Overdue | Delayed | 57 | system@app.local | 2026-05-22T07:36:49.511Z | 2026-05-22T07:36:49.511Z | Raya Terraces Module MSP.xml | 2026-05-22T07:36:49.511Z | Yes | 1.1.4 |
| 38 | 38 | Raya Terraces Module MSP | 1.1.4.9 | 4 | C1.3 Signoff Directors + PMD Head | No | No | No | C1 Develop Project Master Plan & Concept | 2026-03-23T18:30:00.000Z | 2026-03-26T18:30:00.000Z | 0 | 4 | 4 | Overdue | Delayed | 56 | system@app.local | 2026-05-22T07:36:49.511Z | 2026-05-22T07:36:49.511Z | Raya Terraces Module MSP.xml | 2026-05-22T07:36:49.511Z | Yes | 1.1.4 |
| 39 | 39 | Raya Terraces Module MSP | 1.1.5 | 3 | C2 Project Review C2 stage & Approval | Yes | No | No | Precon Design Works | 2026-03-23T18:30:00.000Z | 2026-04-12T18:30:00.000Z | 0 | 15 | 15 | Overdue | Delayed | 39 | system@app.local | 2026-05-22T07:36:49.511Z | 2026-05-22T07:36:49.511Z | Raya Terraces Module MSP.xml | 2026-05-22T07:36:49.511Z | Yes | 1.1 |
| 40 | 40 | Raya Terraces Module MSP | 1.1.5.1 | 4 | C2.1 Add Comments, Suggestions in Concept stage Approvals. | No | No | No | C2 Project Review C2 stage & Approval | 2026-03-23T18:30:00.000Z | 2026-04-12T18:30:00.000Z | 0 | 15 | 15 | Overdue | Delayed | 39 | system@app.local | 2026-05-22T07:36:49.511Z | 2026-05-22T07:36:49.511Z | Raya Terraces Module MSP.xml | 2026-05-22T07:36:49.511Z | Yes | 1.1.5 |
| 41 | 41 | Raya Terraces Module MSP | 1.1.5.2 | 4 | C2.1 Arch Design Concept stage 1 closure | No | No | No | C2 Project Review C2 stage & Approval | 2026-03-23T18:30:00.000Z | 2026-04-12T18:30:00.000Z | 0 | 15 | 15 | Overdue | Delayed | 39 | system@app.local | 2026-05-22T07:36:49.511Z | 2026-05-22T07:36:49.511Z | Raya Terraces Module MSP.xml | 2026-05-22T07:36:49.511Z | Yes | 1.1.5 |
| 42 | 42 | Raya Terraces Module MSP | 1.1.5.3 | 4 | C2.2 Update Project Plan in MSP. | No | No | No | C2 Project Review C2 stage & Approval | 2026-03-23T18:30:00.000Z | 2026-03-29T18:30:00.000Z | 0 | 5 | 5 | Overdue | Delayed | 53 | system@app.local | 2026-05-22T07:36:49.511Z | 2026-05-22T07:36:49.511Z | Raya Terraces Module MSP.xml | 2026-05-22T07:36:49.511Z | Yes | 1.1.5 |
| 43 | 43 | Raya Terraces Module MSP | 1.1.5.4 | 4 | C2.3 Review for Approvability - Advance Concept | No | No | No | C2 Project Review C2 stage & Approval | 2026-03-23T18:30:00.000Z | 2026-03-29T18:30:00.000Z | 0 | 5 | 5 | Overdue | Delayed | 53 | system@app.local | 2026-05-22T07:36:49.511Z | 2026-05-22T07:36:49.511Z | Raya Terraces Module MSP.xml | 2026-05-22T07:36:49.511Z | Yes | 1.1.5 |
| 150 | 150 | Raya Terraces Module MSP | 1.1.5.5 | 4 | C2.3 LAND Acquisition to complete | No | Yes | No | C2 Project Review C2 stage & Approval | 2026-03-23T18:30:00.000Z | 2026-03-23T18:30:00.000Z | 0 | 0 | 0 | Overdue | Delayed | 59 | system@app.local | 2026-05-22T07:36:49.511Z | 2026-05-22T07:36:49.511Z | Raya Terraces Module MSP.xml | 2026-05-22T07:36:49.511Z | Yes | 1.1.5 |
| 151 | 151 | Raya Terraces Module MSP | 1.1.5.6 | 4 | Signoff Directors + PMD Head | No | No | No | C2 Project Review C2 stage & Approval | 2026-03-23T18:30:00.000Z | 2026-03-29T18:30:00.000Z | 0 | 5 | 5 | Overdue | Delayed | 53 | system@app.local | 2026-05-22T07:36:49.511Z | 2026-05-22T07:36:49.511Z | Raya Terraces Module MSP.xml | 2026-05-22T07:36:49.511Z | Yes | 1.1.5 |
| 44 | 44 | Raya Terraces Module MSP | 1.1.6 | 3 | S1 Schematic - 50% | Yes | No | Yes | Precon Design Works | 2026-03-19T18:30:00.000Z | 2026-05-24T18:30:00.000Z | 0 | 47 | 47 | In Progress | At Risk | 0 | system@app.local | 2026-05-22T07:36:49.511Z | 2026-05-22T07:36:49.511Z | Raya Terraces Module MSP.xml | 2026-05-22T07:36:49.511Z | No | 1.1 |
| 45 | 45 | Raya Terraces Module MSP | 1.1.6.1 | 4 | S1.1 Initial DBR STAGE - Structure + MEP to initiate design | No | No | No | S1 Schematic - 50% | 2026-03-23T18:30:00.000Z | 2026-03-29T18:30:00.000Z | 0 | 5 | 5 | Overdue | Delayed | 53 | system@app.local | 2026-05-22T07:36:49.511Z | 2026-05-22T07:36:49.511Z | Raya Terraces Module MSP.xml | 2026-05-22T07:36:49.511Z | Yes | 1.1.6 |
| 46 | 46 | Raya Terraces Module MSP | 1.1.6.2 | 4 | S1.2 Architectural Schematic Drawings | No | No | No | S1 Schematic - 50% | 2026-03-23T18:30:00.000Z | 2026-04-26T18:30:00.000Z | 0 | 25 | 25 | Overdue | Delayed | 25 | system@app.local | 2026-05-22T07:36:49.511Z | 2026-05-22T07:36:49.511Z | Raya Terraces Module MSP.xml | 2026-05-22T07:36:49.511Z | Yes | 1.1.6 |
| 47 | 47 | Raya Terraces Module MSP | 1.1.6.3 | 4 | S1.2 Structural Schematic Drawings | No | No | No | S1 Schematic - 50% | 2026-03-23T18:30:00.000Z | 2026-04-26T18:30:00.000Z | 0 | 25 | 25 | Overdue | Delayed | 25 | system@app.local | 2026-05-22T07:36:49.511Z | 2026-05-22T07:36:49.511Z | Raya Terraces Module MSP.xml | 2026-05-22T07:36:49.511Z | Yes | 1.1.6 |
| 48 | 48 | Raya Terraces Module MSP | 1.1.6.4 | 4 | S1.2 MEP Schematic drawings | No | No | No | S1 Schematic - 50% | 2026-03-23T18:30:00.000Z | 2026-04-26T18:30:00.000Z | 0 | 25 | 25 | Overdue | Delayed | 25 | system@app.local | 2026-05-22T07:36:49.511Z | 2026-05-22T07:36:49.511Z | Raya Terraces Module MSP.xml | 2026-05-22T07:36:49.511Z | Yes | 1.1.6 |
| 49 | 49 | Raya Terraces Module MSP | 1.1.6.5 | 4 | S1.2 Landscape schematic dwgs | No | No | No | S1 Schematic - 50% | 2026-03-23T18:30:00.000Z | 2026-04-26T18:30:00.000Z | 0 | 25 | 25 | Overdue | Delayed | 25 | system@app.local | 2026-05-22T07:36:49.511Z | 2026-05-22T07:36:49.511Z | Raya Terraces Module MSP.xml | 2026-05-22T07:36:49.511Z | Yes | 1.1.6 |
| 50 | 50 | Raya Terraces Module MSP | 1.1.6.6 | 4 | S1.2 Coordinated drwgs Workshop will All Consultants & Stakeholders | No | No | No | S1 Schematic - 50% | 2026-03-23T18:30:00.000Z | 2026-04-26T18:30:00.000Z | 0 | 25 | 25 | Overdue | Delayed | 25 | system@app.local | 2026-05-22T07:36:49.511Z | 2026-05-22T07:36:49.511Z | Raya Terraces Module MSP.xml | 2026-05-22T07:36:49.511Z | Yes | 1.1.6 |
| 51 | 51 | Raya Terraces Module MSP | 1.1.6.7 | 4 | S1.2 Sign off Coordinated Drwgs | No | No | Yes | S1 Schematic - 50% | 2026-03-19T18:30:00.000Z | 2026-03-25T18:30:00.000Z | 0 | 5 | 5 | Overdue | Delayed | 57 | system@app.local | 2026-05-22T07:36:49.511Z | 2026-05-22T07:36:49.511Z | Raya Terraces Module MSP.xml | 2026-05-22T07:36:49.511Z | Yes | 1.1.6 |
| 52 | 52 | Raya Terraces Module MSP | 1.1.6.8 | 4 | S1.3 Project Schedule | No | No | No | S1 Schematic - 50% | 2026-03-23T18:30:00.000Z | 2026-04-26T18:30:00.000Z | 0 | 25 | 25 | Overdue | Delayed | 25 | system@app.local | 2026-05-22T07:36:49.511Z | 2026-05-22T07:36:49.511Z | Raya Terraces Module MSP.xml | 2026-05-22T07:36:49.511Z | Yes | 1.1.6 |
| 53 | 53 | Raya Terraces Module MSP | 1.1.6.9 | 4 | S1.4 Construction of Experience centre/Sales office/Sample flat,show flat | No | No | No | S1 Schematic - 50% | 2026-03-23T18:30:00.000Z | 2026-05-24T18:30:00.000Z | 0 | 45 | 45 | In Progress | At Risk | 0 | system@app.local | 2026-05-22T07:36:49.511Z | 2026-05-22T07:36:49.511Z | Raya Terraces Module MSP.xml | 2026-05-22T07:36:49.511Z | No | 1.1.6 |
| 152 | 152 | Raya Terraces Module MSP | 1.1.6.10 | 4 | Sign Off | No | No | No | S1 Schematic - 50% | 2026-03-23T18:30:00.000Z | 2026-03-29T18:30:00.000Z | 0 | 5 | 5 | Overdue | Delayed | 53 | system@app.local | 2026-05-22T07:36:49.511Z | 2026-05-22T07:36:49.511Z | Raya Terraces Module MSP.xml | 2026-05-22T07:36:49.511Z | Yes | 1.1.6 |
| 54 | 54 | Raya Terraces Module MSP | 1.1.7 | 3 | S2 Schematic - 100% | Yes | No | No | Precon Design Works | 2026-03-23T18:30:00.000Z | 2026-05-03T18:30:00.000Z | 0 | 30 | 30 | Overdue | Delayed | 18 | system@app.local | 2026-05-22T07:36:49.511Z | 2026-05-22T07:36:49.511Z | Raya Terraces Module MSP.xml | 2026-05-22T07:36:49.511Z | Yes | 1.1 |
| 55 | 55 | Raya Terraces Module MSP | 1.1.7.1 | 4 | S2.1 Shortlisting of products and vendors | No | No | No | S2 Schematic - 100% | 2026-03-23T18:30:00.000Z | 2026-03-23T18:30:00.000Z | 0 | 1 | 1 | Overdue | Delayed | 59 | system@app.local | 2026-05-22T07:36:49.511Z | 2026-05-22T07:36:49.511Z | Raya Terraces Module MSP.xml | 2026-05-22T07:36:49.511Z | Yes | 1.1.7 |
| 56 | 56 | Raya Terraces Module MSP | 1.1.7.2 | 4 | S2.2 Structural | No | No | Yes | S2 Schematic - 100% | 2026-03-26T18:30:00.000Z | 2026-04-15T18:30:00.000Z | 0 | 15 | 15 | Overdue | Delayed | 36 | system@app.local | 2026-05-22T07:36:49.511Z | 2026-05-22T07:36:49.511Z | Raya Terraces Module MSP.xml | 2026-05-22T07:36:49.511Z | Yes | 1.1.7 |
| 57 | 57 | Raya Terraces Module MSP | 1.1.7.3 | 4 | S2.2 Architecture | No | No | Yes | S2 Schematic - 100% | 2026-03-26T18:30:00.000Z | 2026-04-15T18:30:00.000Z | 0 | 15 | 15 | Overdue | Delayed | 36 | system@app.local | 2026-05-22T07:36:49.511Z | 2026-05-22T07:36:49.511Z | Raya Terraces Module MSP.xml | 2026-05-22T07:36:49.511Z | Yes | 1.1.7 |
| 58 | 58 | Raya Terraces Module MSP | 1.1.7.4 | 4 | S2.2 MEP (Services) | No | No | Yes | S2 Schematic - 100% | 2026-03-26T18:30:00.000Z | 2026-04-15T18:30:00.000Z | 0 | 15 | 15 | Overdue | Delayed | 36 | system@app.local | 2026-05-22T07:36:49.511Z | 2026-05-22T07:36:49.511Z | Raya Terraces Module MSP.xml | 2026-05-22T07:36:49.511Z | Yes | 1.1.7 |
| 59 | 59 | Raya Terraces Module MSP | 1.1.7.5 | 4 | S2.3 BIM Drwg Coordination | No | Yes | No | S2 Schematic - 100% | 2026-04-15T18:30:00.000Z | 2026-04-15T18:30:00.000Z | 0 | 0 | 0 | Overdue | Delayed | 36 | system@app.local | 2026-05-22T07:36:49.511Z | 2026-05-22T07:36:49.511Z | Raya Terraces Module MSP.xml | 2026-05-22T07:36:49.511Z | Yes | 1.1.7 |
| 60 | 60 | Raya Terraces Module MSP | 1.1.7.6 | 4 | Sign Off | No | No | Yes | S2 Schematic - 100% | 2026-04-27T18:30:00.000Z | 2026-05-03T18:30:00.000Z | 0 | 5 | 5 | Overdue | Delayed | 18 | system@app.local | 2026-05-22T07:36:49.511Z | 2026-05-22T07:36:49.511Z | Raya Terraces Module MSP.xml | 2026-05-22T07:36:49.511Z | Yes | 1.1.7 |
| 61 | 61 | Raya Terraces Module MSP | 1.1.8 | 3 | D1 DD 1 - 50% | Yes | No | No | Precon Design Works | 2026-04-16T18:30:00.000Z | 2026-07-22T18:30:00.000Z | 0 | 70 | 70 | In Progress | On Track | 0 | system@app.local | 2026-05-22T07:36:49.511Z | 2026-05-22T07:36:49.511Z | Raya Terraces Module MSP.xml | 2026-05-22T07:36:49.511Z | No | 1.1 |
| 62 | 62 | Raya Terraces Module MSP | 1.1.8.1 | 4 | D1.1 Collation & syncronisation of all consultant designs | No | No | No | D1 DD 1 - 50% | 2026-05-04T18:30:00.000Z | 2026-06-14T18:30:00.000Z | 0 | 30 | 30 | In Progress | On Track | 0 | system@app.local | 2026-05-22T07:36:49.511Z | 2026-05-22T07:36:49.511Z | Raya Terraces Module MSP.xml | 2026-05-22T07:36:49.511Z | No | 1.1.8 |
| 63 | 63 | Raya Terraces Module MSP | 1.1.8.2 | 4 | D 1.2 Interiors Stage | No | No | Yes | D1 DD 1 - 50% | 2026-05-04T18:30:00.000Z | 2026-06-14T18:30:00.000Z | 0 | 30 | 30 | In Progress | On Track | 0 | system@app.local | 2026-05-22T07:36:49.511Z | 2026-05-22T07:36:49.511Z | Raya Terraces Module MSP.xml | 2026-05-22T07:36:49.511Z | No | 1.1.8 |
| 65 | 65 | Raya Terraces Module MSP | 1.1.8.3 | 4 | D1.4 Schedule & Site Logistics | No | No | No | D1 DD 1 - 50% | 2026-04-16T18:30:00.000Z | 2026-04-29T18:30:00.000Z | 0 | 10 | 10 | Overdue | Delayed | 22 | system@app.local | 2026-05-22T07:36:49.511Z | 2026-05-22T07:36:49.511Z | Raya Terraces Module MSP.xml | 2026-05-22T07:36:49.511Z | Yes | 1.1.8 |
| 66 | 66 | Raya Terraces Module MSP | 1.1.8.4 | 4 | D1.5 DD1 Budget Review & Approval | No | No | Yes | D1 DD 1 - 50% | 2026-07-06T18:30:00.000Z | 2026-07-12T18:30:00.000Z | 0 | 5 | 5 | Not Started | On Track | 0 | system@app.local | 2026-05-22T07:36:49.511Z | 2026-05-22T07:36:49.511Z | Raya Terraces Module MSP.xml | 2026-05-22T07:36:49.511Z | No | 1.1.8 |
| 67 | 67 | Raya Terraces Module MSP | 1.1.8.5 | 4 | D1.7 BIM Model Update & Controls | No | Yes | No | D1 DD 1 - 50% | 2026-07-12T18:30:00.000Z | 2026-07-12T18:30:00.000Z | 0 | 0 | 0 | Not Started | On Track | 0 | system@app.local | 2026-05-22T07:36:49.511Z | 2026-05-22T07:36:49.511Z | Raya Terraces Module MSP.xml | 2026-05-22T07:36:49.511Z | No | 1.1.8 |
| 68 | 68 | Raya Terraces Module MSP | 1.1.8.6 | 4 | D1.8 Finance Review & Tracking | No | No | Yes | D1 DD 1 - 50% | 2026-07-13T18:30:00.000Z | 2026-07-19T18:30:00.000Z | 0 | 5 | 5 | Not Started | On Track | 0 | system@app.local | 2026-05-22T07:36:49.511Z | 2026-05-22T07:36:49.511Z | Raya Terraces Module MSP.xml | 2026-05-22T07:36:49.511Z | No | 1.1.8 |
| 69 | 69 | Raya Terraces Module MSP | 1.1.8.7 | 4 | D1 STAGE GATE | No | No | Yes | D1 DD 1 - 50% | 2026-07-20T18:30:00.000Z | 2026-07-22T18:30:00.000Z | 0 | 3 | 3 | Not Started | On Track | 0 | system@app.local | 2026-05-22T07:36:49.511Z | 2026-05-22T07:36:49.511Z | Raya Terraces Module MSP.xml | 2026-05-22T07:36:49.511Z | No | 1.1.8 |
| 70 | 70 | Raya Terraces Module MSP | 1.1.9 | 3 | D2 DD 2 - 100% | Yes | No | Yes | Precon Design Works | 2026-07-23T18:30:00.000Z | 2026-09-30T18:30:00.000Z | 0 | 50 | 50 | Not Started | On Track | 0 | system@app.local | 2026-05-22T07:36:49.511Z | 2026-05-22T07:36:49.511Z | Raya Terraces Module MSP.xml | 2026-05-22T07:36:49.511Z | No | 1.1 |
| 71 | 71 | Raya Terraces Module MSP | 1.1.9.1 | 4 | D2.1 Stage Coordinated Drwgs | No | No | Yes | D2 DD 2 - 100% | 2026-07-23T18:30:00.000Z | 2026-08-12T18:30:00.000Z | 0 | 15 | 15 | Not Started | On Track | 0 | system@app.local | 2026-05-22T07:36:49.511Z | 2026-05-22T07:36:49.511Z | Raya Terraces Module MSP.xml | 2026-05-22T07:36:49.511Z | No | 1.1.9 |
| 72 | 72 | Raya Terraces Module MSP | 1.1.9.2 | 4 | D2.2 Final Package Interior Finishes: Material Selection & Approval (Stage-wise) | No | No | Yes | D2 DD 2 - 100% | 2026-07-23T18:30:00.000Z | 2026-08-12T18:30:00.000Z | 0 | 15 | 15 | Not Started | On Track | 0 | system@app.local | 2026-05-22T07:36:49.511Z | 2026-05-22T07:36:49.511Z | Raya Terraces Module MSP.xml | 2026-05-22T07:36:49.511Z | No | 1.1.9 |
| 73 | 73 | Raya Terraces Module MSP | 1.1.9.3 | 4 | D2.2 Construction of Sample flat (at actual location/as per discussion with Management) | No | No | Yes | D2 DD 2 - 100% | 2026-07-23T18:30:00.000Z | 2026-08-12T18:30:00.000Z | 0 | 15 | 15 | Not Started | On Track | 0 | system@app.local | 2026-05-22T07:36:49.511Z | 2026-05-22T07:36:49.511Z | Raya Terraces Module MSP.xml | 2026-05-22T07:36:49.511Z | No | 1.1.9 |
| 74 | 74 | Raya Terraces Module MSP | 1.1.9.4 | 4 | D2.3 Schedule,ERP readiness to be reviewed & Approved | No | No | Yes | D2 DD 2 - 100% | 2026-08-13T18:30:00.000Z | 2026-08-26T18:30:00.000Z | 0 | 10 | 10 | Not Started | On Track | 0 | system@app.local | 2026-05-22T07:36:49.511Z | 2026-05-22T07:36:49.511Z | Raya Terraces Module MSP.xml | 2026-05-22T07:36:49.511Z | No | 1.1.9 |
| 75 | 75 | Raya Terraces Module MSP | 1.1.9.5 | 4 | D2.4 System finalization of Special Contracts | No | No | Yes | D2 DD 2 - 100% | 2026-08-27T18:30:00.000Z | 2026-09-16T18:30:00.000Z | 0 | 15 | 15 | Not Started | On Track | 0 | system@app.local | 2026-05-22T07:36:49.511Z | 2026-05-22T07:36:49.511Z | Raya Terraces Module MSP.xml | 2026-05-22T07:36:49.511Z | No | 1.1.9 |
| 76 | 76 | Raya Terraces Module MSP | 1.1.9.6 | 4 | D2.5 Contract & Procurement Strategy - Finalization | No | No | Yes | D2 DD 2 - 100% | 2026-08-27T18:30:00.000Z | 2026-09-16T18:30:00.000Z | 0 | 15 | 15 | Not Started | On Track | 0 | system@app.local | 2026-05-22T07:36:49.511Z | 2026-05-22T07:36:49.511Z | Raya Terraces Module MSP.xml | 2026-05-22T07:36:49.511Z | No | 1.1.9 |
| 77 | 77 | Raya Terraces Module MSP | 1.1.9.7 | 4 | D2.6 Finance Review & Approval | No | No | Yes | D2 DD 2 - 100% | 2026-09-17T18:30:00.000Z | 2026-09-23T18:30:00.000Z | 0 | 5 | 5 | Not Started | On Track | 0 | system@app.local | 2026-05-22T07:36:49.511Z | 2026-05-22T07:36:49.511Z | Raya Terraces Module MSP.xml | 2026-05-22T07:36:49.511Z | No | 1.1.9 |
| 78 | 78 | Raya Terraces Module MSP | 1.1.9.8 | 4 | DD2 STAGE GATE | No | No | Yes | D2 DD 2 - 100% | 2026-09-24T18:30:00.000Z | 2026-09-30T18:30:00.000Z | 0 | 5 | 5 | Not Started | On Track | 0 | system@app.local | 2026-05-22T07:36:49.511Z | 2026-05-22T07:36:49.511Z | Raya Terraces Module MSP.xml | 2026-05-22T07:36:49.511Z | No | 1.1.9 |
| 79 | 79 | Raya Terraces Module MSP | 1.1.10 | 3 | T1 Tender Issue Doc | Yes | No | No | Precon Design Works | 2026-03-23T18:30:00.000Z | 2027-03-17T18:30:00.000Z | 0 | 258 | 258 | In Progress | On Track | 0 | system@app.local | 2026-05-22T07:36:49.511Z | 2026-05-22T07:36:49.511Z | Raya Terraces Module MSP.xml | 2026-05-22T07:36:49.511Z | No | 1.1 |
| 80 | 80 | Raya Terraces Module MSP | 1.1.10.1 | 4 | T1.1 Issue of Tender drwgs for Tendering purpose | No | No | Yes | T1 Tender Issue Doc | 2026-10-01T18:30:00.000Z | 2026-10-21T18:30:00.000Z | 0 | 15 | 15 | Not Started | On Track | 0 | system@app.local | 2026-05-22T07:36:49.511Z | 2026-05-22T07:36:49.511Z | Raya Terraces Module MSP.xml | 2026-05-22T07:36:49.511Z | No | 1.1.10 |

| Task_UID | Row_ID | Project | WBS | Outline_Level | Task_Name | Is_Summary | Is_Milestone | Is_Critical | Phase | Planned_Start | Planned_Finish | Pct_Complete | Duration_Days | Remaining_Days | Status | Derail_Status | Derail_Days | Last_Updated_By | Last_Updated_At | Last_Synced | Source_File | Sync_Version | Action_Required | Parent_WBS |
| --- | --- | --- | --- | --- | --- | --- | --- | --- | --- | --- | --- | --- | --- | --- | --- | --- | --- | --- | --- | --- | --- | --- | --- | --- |
| 81 | 81 | Raya Terraces Module MSP | 1.1.10.2 | 4 | T1.2 Prepration of Boq & Tender Doc for Floating tender/Review | No | No | Yes | T1 Tender Issue Doc | 2026-10-22T18:30:00.000Z | 2026-11-11T18:30:00.000Z | 0 | 15 | 15 | Not Started | On Track | 0 | system@app.local | 2026-05-22T07:36:49.511Z | 2026-05-22T07:36:49.511Z | Raya Terraces Module MSP.xml | 2026-05-22T07:36:49.511Z | No | 1.1.10 |
| 83 | 83 | Raya Terraces Module MSP | 1.1.10.3 | 4 | T1.4 Tender Issuance | No | No | No | T1 Tender Issue Doc | 2026-11-26T18:30:00.000Z | 2027-03-10T18:30:00.000Z | 0 | 75 | 75 | Not Started | On Track | 0 | system@app.local | 2026-05-22T07:36:49.511Z | 2026-05-22T07:36:49.511Z | Raya Terraces Module MSP.xml | 2026-05-22T07:36:49.511Z | No | 1.1.10 |
| 84 | 84 | Raya Terraces Module MSP | 1.1.10.4 | 4 | T1.5 Project Schedule | No | No | No | T1 Tender Issue Doc | 2027-03-11T18:30:00.000Z | 2027-03-17T18:30:00.000Z | 0 | 5 | 5 | Not Started | On Track | 0 | system@app.local | 2026-05-22T07:36:49.511Z | 2026-05-22T07:36:49.511Z | Raya Terraces Module MSP.xml | 2026-05-22T07:36:49.511Z | No | 1.1.10 |
| 85 | 85 | Raya Terraces Module MSP | 1.1.10.5 | 4 | T1.6 ERP | No | No | No | T1 Tender Issue Doc | 2026-03-23T18:30:00.000Z | 2026-04-12T18:30:00.000Z | 0 | 15 | 15 | Overdue | Delayed | 39 | system@app.local | 2026-05-22T07:36:49.511Z | 2026-05-22T07:36:49.511Z | Raya Terraces Module MSP.xml | 2026-05-22T07:36:49.511Z | Yes | 1.1.10 |
| 86 | 86 | Raya Terraces Module MSP | 1.2 | 2 | B Stages of Budgeting | Yes | No | No | Raya Terraces | 2026-03-26T18:30:00.000Z | 2026-11-25T18:30:00.000Z | 0 | 175 | 175 | In Progress | On Track | 0 | system@app.local | 2026-05-22T07:36:49.511Z | 2026-05-22T07:36:49.511Z | Raya Terraces Module MSP.xml | 2026-05-22T07:36:49.511Z | No | 1 |
| 87 | 87 | Raya Terraces Module MSP | 1.2.1 | 3 | B F1 Feasibility Stage Budget & P&L PB1 | No | No | No | B Stages of Budgeting | 2026-05-04T18:30:00.000Z | 2026-05-24T18:30:00.000Z | 0 | 15 | 15 | In Progress | At Risk | 0 | system@app.local | 2026-05-22T07:36:49.511Z | 2026-05-22T07:36:49.511Z | Raya Terraces Module MSP.xml | 2026-05-22T07:36:49.511Z | No | 1.2 |
| 88 | 88 | Raya Terraces Module MSP | 1.2.2 | 3 | B F3 Collate Thumb rule data Per sqft basis & prepare Preliminary Feasibility Budget to be part of Feasibility report. | No | No | No | B Stages of Budgeting | 2026-05-04T18:30:00.000Z | 2026-05-24T18:30:00.000Z | 0 | 15 | 15 | In Progress | At Risk | 0 | system@app.local | 2026-05-22T07:36:49.511Z | 2026-05-22T07:36:49.511Z | Raya Terraces Module MSP.xml | 2026-05-22T07:36:49.511Z | No | 1.2 |
| 89 | 89 | Raya Terraces Module MSP | 1.2.3 | 3 | B F3 Feasibility Stage Budget V3 | No | No | No | B Stages of Budgeting | 2026-05-25T18:30:00.000Z | 2026-05-31T18:30:00.000Z | 0 | 5 | 5 | Not Started | On Track | 0 | system@app.local | 2026-05-22T07:36:49.511Z | 2026-05-22T07:36:49.511Z | Raya Terraces Module MSP.xml | 2026-05-22T07:36:49.511Z | No | 1.2 |
| 90 | 90 | Raya Terraces Module MSP | 1.2.4 | 3 | B F3 Cash flow & Financial Projection for Project | No | No | No | B Stages of Budgeting | 2026-06-01T18:30:00.000Z | 2026-06-07T18:30:00.000Z | 0 | 5 | 5 | Not Started | On Track | 0 | system@app.local | 2026-05-22T07:36:49.511Z | 2026-05-22T07:36:49.511Z | Raya Terraces Module MSP.xml | 2026-05-22T07:36:49.511Z | No | 1.2 |
| 91 | 91 | Raya Terraces Module MSP | 1.2.5 | 3 | B C1 Budget (Work Out Rough Cost) | No | No | No | B Stages of Budgeting | 2026-04-06T18:30:00.000Z | 2026-04-14T18:30:00.000Z | 0 | 7 | 7 | Overdue | Delayed | 37 | system@app.local | 2026-05-22T07:36:49.511Z | 2026-05-22T07:36:49.511Z | Raya Terraces Module MSP.xml | 2026-05-22T07:36:49.511Z | Yes | 1.2 |
| 92 | 92 | Raya Terraces Module MSP | 1.2.6 | 3 | B C1 Cost Efficiency and VE Review of Pre-concept package **CRITICAL Stage to be done in concert with Dir & CP | No | No | No | B Stages of Budgeting | 2026-04-15T18:30:00.000Z | 2026-04-23T18:30:00.000Z | 0 | 7 | 7 | Overdue | Delayed | 28 | system@app.local | 2026-05-22T07:36:49.511Z | 2026-05-22T07:36:49.511Z | Raya Terraces Module MSP.xml | 2026-05-22T07:36:49.511Z | Yes | 1.2 |
| 93 | 93 | Raya Terraces Module MSP | 1.2.7 | 3 | B C2 Work Out Concept Costing & Check | No | No | No | B Stages of Budgeting | 2026-04-13T18:30:00.000Z | 2026-04-26T18:30:00.000Z | 0 | 10 | 10 | Overdue | Delayed | 25 | system@app.local | 2026-05-22T07:36:49.511Z | 2026-05-22T07:36:49.511Z | Raya Terraces Module MSP.xml | 2026-05-22T07:36:49.511Z | Yes | 1.2 |
| 94 | 94 | Raya Terraces Module MSP | 1.2.8 | 3 | B S1 Budget Stage 3A | No | No | No | B Stages of Budgeting | 2026-03-26T18:30:00.000Z | 2026-04-05T18:30:00.000Z | 0 | 7 | 7 | Overdue | Delayed | 46 | system@app.local | 2026-05-22T07:36:49.511Z | 2026-05-22T07:36:49.511Z | Raya Terraces Module MSP.xml | 2026-05-22T07:36:49.511Z | Yes | 1.2 |
| 95 | 95 | Raya Terraces Module MSP | 1.2.9 | 3 | B S2 Budget Stage 3B | No | No | Yes | B Stages of Budgeting | 2026-04-16T18:30:00.000Z | 2026-04-26T18:30:00.000Z | 0 | 7 | 7 | Overdue | Delayed | 25 | system@app.local | 2026-05-22T07:36:49.511Z | 2026-05-22T07:36:49.511Z | Raya Terraces Module MSP.xml | 2026-05-22T07:36:49.511Z | Yes | 1.2 |
| 96 | 96 | Raya Terraces Module MSP | 1.2.10 | 3 | B DD1 Revised Budget with all Package & Special Contracts to be captured | No | No | Yes | B Stages of Budgeting | 2026-06-15T18:30:00.000Z | 2026-07-05T18:30:00.000Z | 0 | 15 | 15 | Not Started | On Track | 0 | system@app.local | 2026-05-22T07:36:49.511Z | 2026-05-22T07:36:49.511Z | Raya Terraces Module MSP.xml | 2026-05-22T07:36:49.511Z | No | 1.2 |
| 97 | 97 | Raya Terraces Module MSP | 1.2.11 | 3 | B DD2 Stage Budget | No | No | Yes | B Stages of Budgeting | 2026-08-13T18:30:00.000Z | 2026-08-26T18:30:00.000Z | 0 | 10 | 10 | Not Started | On Track | 0 | system@app.local | 2026-05-22T07:36:49.511Z | 2026-05-22T07:36:49.511Z | Raya Terraces Module MSP.xml | 2026-05-22T07:36:49.511Z | No | 1.2 |
| 98 | 98 | Raya Terraces Module MSP | 1.2.12 | 3 | B T Budget to be reviewed if any major changes & Highlighted | No | No | No | B Stages of Budgeting | 2026-11-12T18:30:00.000Z | 2026-11-25T18:30:00.000Z | 0 | 10 | 10 | Not Started | On Track | 0 | system@app.local | 2026-05-22T07:36:49.511Z | 2026-05-22T07:36:49.511Z | Raya Terraces Module MSP.xml | 2026-05-22T07:36:49.511Z | No | 1.2 |
| 99 | 99 | Raya Terraces Module MSP | 1.3 | 2 | L Stages of Liason | Yes | No | No | Raya Terraces | 2026-03-23T18:30:00.000Z | 2029-11-14T18:30:00.000Z | 0 | 953 | 953 | In Progress | On Track | 0 | system@app.local | 2026-05-22T07:36:49.511Z | 2026-05-22T07:36:49.511Z | Raya Terraces Module MSP.xml | 2026-05-22T07:36:49.511Z | No | 1 |
| 100 | 100 | Raya Terraces Module MSP | 1.3.1 | 3 | L 1.1: 0 FSI IOD - Submit | No | No | No | L Stages of Liason | 2026-04-13T18:30:00.000Z | 2026-05-10T18:30:00.000Z | 0 | 20 | 20 | Overdue | Delayed | 11 | system@app.local | 2026-05-22T07:36:49.511Z | 2026-05-22T07:36:49.511Z | Raya Terraces Module MSP.xml | 2026-05-22T07:36:49.511Z | Yes | 1.3 |
| 101 | 101 | Raya Terraces Module MSP | 1.3.2 | 3 | L 1.2 0 FSI IOD - Recieve | No | No | No | L Stages of Liason | 2026-05-11T18:30:00.000Z | 2026-05-31T18:30:00.000Z | 0 | 15 | 15 | In Progress | At Risk | 0 | system@app.local | 2026-05-22T07:36:49.511Z | 2026-05-22T07:36:49.511Z | Raya Terraces Module MSP.xml | 2026-05-22T07:36:49.511Z | No | 1.3 |
| 102 | 102 | Raya Terraces Module MSP | 1.3.3 | 3 | L 2.1 0 FSI CC - Submit | No | No | No | L Stages of Liason | 2026-06-01T18:30:00.000Z | 2026-08-02T18:30:00.000Z | 0 | 45 | 45 | Not Started | On Track | 0 | system@app.local | 2026-05-22T07:36:49.511Z | 2026-05-22T07:36:49.511Z | Raya Terraces Module MSP.xml | 2026-05-22T07:36:49.511Z | No | 1.3 |
| 103 | 103 | Raya Terraces Module MSP | 1.3.4 | 3 | L 2.2 0 FSI CC - Recieve | No | No | No | L Stages of Liason | 2026-08-03T18:30:00.000Z | 2026-08-23T18:30:00.000Z | 0 | 15 | 15 | Not Started | On Track | 0 | system@app.local | 2026-05-22T07:36:49.511Z | 2026-05-22T07:36:49.511Z | Raya Terraces Module MSP.xml | 2026-05-22T07:36:49.511Z | No | 1.3 |
| 104 | 104 | Raya Terraces Module MSP | 1.3.5 | 3 | L 3.1 MOEF -Submit | No | No | No | L Stages of Liason | 2026-03-26T18:30:00.000Z | 2026-05-06T18:30:00.000Z | 0 | 30 | 30 | Overdue | Delayed | 15 | system@app.local | 2026-05-22T07:36:49.511Z | 2026-05-22T07:36:49.511Z | Raya Terraces Module MSP.xml | 2026-05-22T07:36:49.511Z | Yes | 1.3 |
| 105 | 105 | Raya Terraces Module MSP | 1.3.6 | 3 | L 3.2 MOEF -Recieve | No | No | No | L Stages of Liason | 2026-05-07T18:30:00.000Z | 2026-11-30T18:30:00.000Z | 0 | 148 | 148 | In Progress | On Track | 0 | system@app.local | 2026-05-22T07:36:49.511Z | 2026-05-22T07:36:49.511Z | Raya Terraces Module MSP.xml | 2026-05-22T07:36:49.511Z | No | 1.3 |
| 106 | 106 | Raya Terraces Module MSP | 1.3.7 | 3 | L 4.1 CFO NOC -Submit | No | No | No | L Stages of Liason | 2026-03-26T18:30:00.000Z | 2026-04-15T18:30:00.000Z | 0 | 15 | 15 | Overdue | Delayed | 36 | system@app.local | 2026-05-22T07:36:49.511Z | 2026-05-22T07:36:49.511Z | Raya Terraces Module MSP.xml | 2026-05-22T07:36:49.511Z | Yes | 1.3 |
| 107 | 107 | Raya Terraces Module MSP | 1.3.8 | 3 | L 4.2 CFO NOC -Recieve | No | No | No | L Stages of Liason | 2026-04-16T18:30:00.000Z | 2026-05-27T18:30:00.000Z | 0 | 30 | 30 | In Progress | At Risk | 0 | system@app.local | 2026-05-22T07:36:49.511Z | 2026-05-22T07:36:49.511Z | Raya Terraces Module MSP.xml | 2026-05-22T07:36:49.511Z | No | 1.3 |
| 108 | 108 | Raya Terraces Module MSP | 1.3.9 | 3 | L 5.1 Concessions -Submit | No | No | No | L Stages of Liason | 2026-03-26T18:30:00.000Z | 2026-06-03T18:30:00.000Z | 0 | 50 | 50 | In Progress | At Risk | 0 | system@app.local | 2026-05-22T07:36:49.511Z | 2026-05-22T07:36:49.511Z | Raya Terraces Module MSP.xml | 2026-05-22T07:36:49.511Z | No | 1.3 |
| 109 | 109 | Raya Terraces Module MSP | 1.3.10 | 3 | L 5.2 Concessions -Recieve | No | No | No | L Stages of Liason | 2026-06-04T18:30:00.000Z | 2026-08-05T18:30:00.000Z | 0 | 45 | 45 | Not Started | On Track | 0 | system@app.local | 2026-05-22T07:36:49.511Z | 2026-05-22T07:36:49.511Z | Raya Terraces Module MSP.xml | 2026-05-22T07:36:49.511Z | No | 1.3 |
| 110 | 110 | Raya Terraces Module MSP | 1.3.11 | 3 | L 6.1 Full IOD -Submit | No | No | No | L Stages of Liason | 2026-07-26T18:30:00.000Z | 2026-09-24T18:30:00.000Z | 0 | 45 | 45 | Not Started | On Track | 0 | system@app.local | 2026-05-22T07:36:49.511Z | 2026-05-22T07:36:49.511Z | Raya Terraces Module MSP.xml | 2026-05-22T07:36:49.511Z | No | 1.3 |
| 111 | 111 | Raya Terraces Module MSP | 1.3.12 | 3 | L 6.2 Full IOD -Recieve | No | No | No | L Stages of Liason | 2026-09-27T18:30:00.000Z | 2026-11-26T18:30:00.000Z | 0 | 45 | 45 | Not Started | On Track | 0 | system@app.local | 2026-05-22T07:36:49.511Z | 2026-05-22T07:36:49.511Z | Raya Terraces Module MSP.xml | 2026-05-22T07:36:49.511Z | No | 1.3 |
| 112 | 112 | Raya Terraces Module MSP | 1.3.13 | 3 | L 7.1 Society/Collector NOC -Submit | No | No | No | L Stages of Liason | 2026-08-06T18:30:00.000Z | 2026-08-12T18:30:00.000Z | 0 | 5 | 5 | Not Started | On Track | 0 | system@app.local | 2026-05-22T07:36:49.511Z | 2026-05-22T07:36:49.511Z | Raya Terraces Module MSP.xml | 2026-05-22T07:36:49.511Z | No | 1.3 |
| 113 | 113 | Raya Terraces Module MSP | 1.3.14 | 3 | L 7.2 Society/Collector NOC -Recieve | No | No | No | L Stages of Liason | 2026-08-13T18:30:00.000Z | 2026-09-23T18:30:00.000Z | 0 | 30 | 30 | Not Started | On Track | 0 | system@app.local | 2026-05-22T07:36:49.511Z | 2026-05-22T07:36:49.511Z | Raya Terraces Module MSP.xml | 2026-05-22T07:36:49.511Z | No | 1.3 |
| 114 | 114 | Raya Terraces Module MSP | 1.3.15 | 3 | L 8.1 Plinth CC -Submit | No | No | No | L Stages of Liason | 2026-11-29T18:30:00.000Z | 2027-01-07T18:30:00.000Z | 0 | 30 | 30 | Not Started | On Track | 0 | system@app.local | 2026-05-22T07:36:49.511Z | 2026-05-22T07:36:49.511Z | Raya Terraces Module MSP.xml | 2026-05-22T07:36:49.511Z | No | 1.3 |
| 115 | 115 | Raya Terraces Module MSP | 1.3.16 | 3 | L 8.2 Plinth CC -Recieve | No | No | No | L Stages of Liason | 2027-01-10T18:30:00.000Z | 2027-01-28T18:30:00.000Z | 0 | 15 | 15 | Not Started | On Track | 0 | system@app.local | 2026-05-22T07:36:49.511Z | 2026-05-22T07:36:49.511Z | Raya Terraces Module MSP.xml | 2026-05-22T07:36:49.511Z | No | 1.3 |
| 156 | 156 | Raya Terraces Module MSP | 1.3.17 | 3 | L 8.3 CC beyond Plinth - Submit | No | No | Yes | L Stages of Liason | 2027-08-12T18:30:00.000Z | 2027-09-01T18:30:00.000Z | 0 | 15 | 15 | Not Started | On Track | 0 | system@app.local | 2026-05-22T07:36:49.511Z | 2026-05-22T07:36:49.511Z | Raya Terraces Module MSP.xml | 2026-05-22T07:36:49.511Z | No | 1.3 |
| 154 | 154 | Raya Terraces Module MSP | 1.3.18 | 3 | L 8.4 CC beyond Plinth - Recieve | No | No | Yes | L Stages of Liason | 2027-09-02T18:30:00.000Z | 2027-10-13T18:30:00.000Z | 0 | 30 | 30 | Not Started | On Track | 0 | system@app.local | 2026-05-22T07:36:49.511Z | 2026-05-22T07:36:49.511Z | Raya Terraces Module MSP.xml | 2026-05-22T07:36:49.511Z | No | 1.3 |
| 116 | 116 | Raya Terraces Module MSP | 1.3.19 | 3 | L9 Further CCs (as per stages) | No | No | No | L Stages of Liason | 2026-03-23T18:30:00.000Z | 2026-05-03T18:30:00.000Z | 0 | 30 | 30 | Overdue | Delayed | 18 | system@app.local | 2026-05-22T07:36:49.511Z | 2026-05-22T07:36:49.511Z | Raya Terraces Module MSP.xml | 2026-05-22T07:36:49.511Z | Yes | 1.3 |
| 117 | 117 | Raya Terraces Module MSP | 1.3.20 | 3 | L 10.1 Final CFO - Submit | No | No | Yes | L Stages of Liason | 2029-05-31T18:30:00.000Z | 2029-06-20T18:30:00.000Z | 0 | 15 | 15 | Not Started | On Track | 0 | system@app.local | 2026-05-22T07:36:49.511Z | 2026-05-22T07:36:49.511Z | Raya Terraces Module MSP.xml | 2026-05-22T07:36:49.511Z | No | 1.3 |
| 121 | 121 | Raya Terraces Module MSP | 1.3.21 | 3 | L 10.2 Final CFO - Recieve | No | No | Yes | L Stages of Liason | 2029-06-21T18:30:00.000Z | 2029-08-01T18:30:00.000Z | 0 | 30 | 30 | Not Started | On Track | 0 | system@app.local | 2026-05-22T07:36:49.511Z | 2026-05-22T07:36:49.511Z | Raya Terraces Module MSP.xml | 2026-05-22T07:36:49.511Z | No | 1.3 |
| 122 | 122 | Raya Terraces Module MSP | 1.3.22 | 3 | L 11.1 OC - Submit | No | No | Yes | L Stages of Liason | 2029-08-02T18:30:00.000Z | 2029-08-22T18:30:00.000Z | 0 | 15 | 15 | Not Started | On Track | 0 | system@app.local | 2026-05-22T07:36:49.511Z | 2026-05-22T07:36:49.511Z | Raya Terraces Module MSP.xml | 2026-05-22T07:36:49.511Z | No | 1.3 |
| 124 | 124 | Raya Terraces Module MSP | 1.3.23 | 3 | L 11.2 OC - Recieve | No | No | Yes | L Stages of Liason | 2029-08-23T18:30:00.000Z | 2029-11-14T18:30:00.000Z | 0 | 60 | 60 | Not Started | On Track | 0 | system@app.local | 2026-05-22T07:36:49.511Z | 2026-05-22T07:36:49.511Z | Raya Terraces Module MSP.xml | 2026-05-22T07:36:49.511Z | No | 1.3 |
| 125 | 125 | Raya Terraces Module MSP | 1.4 | 2 | LG Stages of Legal | Yes | No | No | Raya Terraces | 2026-03-23T18:30:00.000Z | 2026-12-17T18:30:00.000Z | 0 | 194 | 194 | In Progress | On Track | 0 | system@app.local | 2026-05-22T07:36:49.511Z | 2026-05-22T07:36:49.511Z | Raya Terraces Module MSP.xml | 2026-05-22T07:36:49.511Z | No | 1 |
| 126 | 126 | Raya Terraces Module MSP | 1.4.1 | 3 | LG 1 Legal 1: Project Acquisition Package | No | No | No | LG Stages of Legal | 2026-03-23T18:30:00.000Z | 2026-03-23T18:30:00.000Z | 0 | 1 | 1 | Overdue | Delayed | 59 | system@app.local | 2026-05-22T07:36:49.511Z | 2026-05-22T07:36:49.511Z | Raya Terraces Module MSP.xml | 2026-05-22T07:36:49.511Z | Yes | 1.4 |
| 127 | 127 | Raya Terraces Module MSP | 1.4.2 | 3 | LG 2 Legal 2: Customer Legal Set Package | No | No | No | LG Stages of Legal | 2026-09-27T18:30:00.000Z | 2026-10-15T18:30:00.000Z | 0 | 15 | 15 | Not Started | On Track | 0 | system@app.local | 2026-05-22T07:36:49.511Z | 2026-05-22T07:36:49.511Z | Raya Terraces Module MSP.xml | 2026-05-22T07:36:49.511Z | No | 1.4 |
| 128 | 128 | Raya Terraces Module MSP | 1.4.3 | 3 | LG 3 Legal 3: Sales Process Documents Package | No | No | No | LG Stages of Legal | 2026-11-29T18:30:00.000Z | 2026-12-17T18:30:00.000Z | 0 | 15 | 15 | Not Started | On Track | 0 | system@app.local | 2026-05-22T07:36:49.511Z | 2026-05-22T07:36:49.511Z | Raya Terraces Module MSP.xml | 2026-05-22T07:36:49.511Z | No | 1.4 |
| 129 | 129 | Raya Terraces Module MSP | 1.4.4 | 3 | LG 4 Legal 4: RERA Submission Package | No | No | No | LG Stages of Legal | 2026-08-06T18:30:00.000Z | 2026-08-26T18:30:00.000Z | 0 | 15 | 15 | Not Started | On Track | 0 | system@app.local | 2026-05-22T07:36:49.511Z | 2026-05-22T07:36:49.511Z | Raya Terraces Module MSP.xml | 2026-05-22T07:36:49.511Z | No | 1.4 |
| 130 | 130 | Raya Terraces Module MSP | 1.4.5 | 3 | LG5 Legal 5: Project Legal Closing Package | No | No | No | LG Stages of Legal | 2026-03-23T18:30:00.000Z | 2026-04-12T18:30:00.000Z | 0 | 15 | 15 | Overdue | Delayed | 39 | system@app.local | 2026-05-22T07:36:49.511Z | 2026-05-22T07:36:49.511Z | Raya Terraces Module MSP.xml | 2026-05-22T07:36:49.511Z | Yes | 1.4 |
| 131 | 131 | Raya Terraces Module MSP | 1.5 | 2 | M Marketing | Yes | No | No | Raya Terraces | 2026-03-26T18:30:00.000Z | 2026-11-29T18:30:00.000Z | 0 | 177 | 177 | In Progress | On Track | 0 | system@app.local | 2026-05-22T07:36:49.511Z | 2026-05-22T07:36:49.511Z | Raya Terraces Module MSP.xml | 2026-05-22T07:36:49.511Z | No | 1 |
| 132 | 132 | Raya Terraces Module MSP | 1.5.1 | 3 | M1: TEASER | No | No | No | M Marketing | 2026-03-29T18:30:00.000Z | 2026-07-30T18:30:00.000Z | 0 | 90 | 90 | In Progress | On Track | 0 | system@app.local | 2026-05-22T07:36:49.511Z | 2026-05-22T07:36:49.511Z | Raya Terraces Module MSP.xml | 2026-05-22T07:36:49.511Z | No | 1.5 |
| 133 | 133 | Raya Terraces Module MSP | 1.5.2 | 3 | M2: Expression Of Interest | No | No | No | M Marketing | 2026-03-26T18:30:00.000Z | 2026-10-07T18:30:00.000Z | 0 | 140 | 140 | In Progress | On Track | 0 | system@app.local | 2026-05-22T07:36:49.511Z | 2026-05-22T07:36:49.511Z | Raya Terraces Module MSP.xml | 2026-05-22T07:36:49.511Z | No | 1.5 |
| 134 | 134 | Raya Terraces Module MSP | 1.5.3 | 3 | M3: Pre Launch | No | No | No | M Marketing | 2026-03-26T18:30:00.000Z | 2026-09-09T18:30:00.000Z | 0 | 120 | 120 | In Progress | On Track | 0 | system@app.local | 2026-05-22T07:36:49.511Z | 2026-05-22T07:36:49.511Z | Raya Terraces Module MSP.xml | 2026-05-22T07:36:49.511Z | No | 1.5 |
| 135 | 135 | Raya Terraces Module MSP | 1.5.4 | 3 | M4: LAUNCH | No | No | No | M Marketing | 2026-05-04T18:30:00.000Z | 2026-11-29T18:30:00.000Z | 0 | 150 | 150 | In Progress | On Track | 0 | system@app.local | 2026-05-22T07:36:49.511Z | 2026-05-22T07:36:49.511Z | Raya Terraces Module MSP.xml | 2026-05-22T07:36:49.511Z | No | 1.5 |
| 136 | 136 | Raya Terraces Module MSP | 1.6 | 2 | CP Contract & Procurement | Yes | No | Yes | Raya Terraces | 2026-11-12T18:30:00.000Z | 2027-02-24T18:30:00.000Z | 0 | 75 | 75 | Not Started | On Track | 0 | system@app.local | 2026-05-22T07:36:49.511Z | 2026-05-22T07:36:49.511Z | Raya Terraces Module MSP.xml | 2026-05-22T07:36:49.511Z | No | 1 |
| 137 | 137 | Raya Terraces Module MSP | 1.6.1 | 3 | CP1 Shore Pile & Excavation Work | No | No | No | CP Contract & Procurement | 2026-11-12T18:30:00.000Z | 2027-02-03T18:30:00.000Z | 0 | 60 | 60 | Not Started | On Track | 0 | system@app.local | 2026-05-22T07:36:49.511Z | 2026-05-22T07:36:49.511Z | Raya Terraces Module MSP.xml | 2026-05-22T07:36:49.511Z | No | 1.6 |
| 138 | 138 | Raya Terraces Module MSP | 1.6.2 | 3 | CP2 Core & Shell Work | No | No | Yes | CP Contract & Procurement | 2026-11-12T18:30:00.000Z | 2027-02-24T18:30:00.000Z | 0 | 75 | 75 | Not Started | On Track | 0 | system@app.local | 2026-05-22T07:36:49.511Z | 2026-05-22T07:36:49.511Z | Raya Terraces Module MSP.xml | 2026-05-22T07:36:49.511Z | No | 1.6 |
| 139 | 139 | Raya Terraces Module MSP | 1.6.3 | 3 | CP3 MEP Works | No | No | No | CP Contract & Procurement | 2026-11-12T18:30:00.000Z | 2027-02-03T18:30:00.000Z | 0 | 60 | 60 | Not Started | On Track | 0 | system@app.local | 2026-05-22T07:36:49.511Z | 2026-05-22T07:36:49.511Z | Raya Terraces Module MSP.xml | 2026-05-22T07:36:49.511Z | No | 1.6 |
| 140 | 140 | Raya Terraces Module MSP | 1.6.4 | 3 | CP4 Interior Work | No | No | No | CP Contract & Procurement | 2026-11-12T18:30:00.000Z | 2027-02-03T18:30:00.000Z | 0 | 60 | 60 | Not Started | On Track | 0 | system@app.local | 2026-05-22T07:36:49.511Z | 2026-05-22T07:36:49.511Z | Raya Terraces Module MSP.xml | 2026-05-22T07:36:49.511Z | No | 1.6 |
| 141 | 141 | Raya Terraces Module MSP | 1.6.5 | 3 | CP5 Mechanical Parking | No | No | No | CP Contract & Procurement | 2026-11-12T18:30:00.000Z | 2027-02-03T18:30:00.000Z | 0 | 60 | 60 | Not Started | On Track | 0 | system@app.local | 2026-05-22T07:36:49.511Z | 2026-05-22T07:36:49.511Z | Raya Terraces Module MSP.xml | 2026-05-22T07:36:49.511Z | No | 1.6 |
| 142 | 142 | Raya Terraces Module MSP | 1.6.6 | 3 | CP6 Vertical Tranportation | No | No | No | CP Contract & Procurement | 2026-11-12T18:30:00.000Z | 2027-02-03T18:30:00.000Z | 0 | 60 | 60 | Not Started | On Track | 0 | system@app.local | 2026-05-22T07:36:49.511Z | 2026-05-22T07:36:49.511Z | Raya Terraces Module MSP.xml | 2026-05-22T07:36:49.511Z | No | 1.6 |
| 143 | 143 | Raya Terraces Module MSP | 1.7 | 2 | E Execution | Yes | No | Yes | Raya Terraces | 2026-04-13T18:30:00.000Z | 2030-02-06T18:30:00.000Z | 0 | 998 | 998 | In Progress | On Track | 0 | system@app.local | 2026-05-22T07:36:49.511Z | 2026-05-22T07:36:49.511Z | Raya Terraces Module MSP.xml | 2026-05-22T07:36:49.511Z | No | 1 |
| 144 | 144 | Raya Terraces Module MSP | 1.7.1 | 3 | E1 Site Preparation | No | No | No | E Execution | 2026-04-13T18:30:00.000Z | 2026-06-14T18:30:00.000Z | 0 | 45 | 45 | In Progress | On Track | 0 | system@app.local | 2026-05-22T07:36:49.511Z | 2026-05-22T07:36:49.511Z | Raya Terraces Module MSP.xml | 2026-05-22T07:36:49.511Z | No | 1.7 |
| 145 | 145 | Raya Terraces Module MSP | 1.7.2 | 3 | E2 Shore Piling/ Piling & Excavation Work | No | No | No | E Execution | 2026-05-31T18:30:00.000Z | 2027-03-04T18:30:00.000Z | 0 | 200 | 200 | Not Started | On Track | 0 | system@app.local | 2026-05-22T07:36:49.511Z | 2026-05-22T07:36:49.511Z | Raya Terraces Module MSP.xml | 2026-05-22T07:36:49.511Z | No | 1.7 |
| 146 | 146 | Raya Terraces Module MSP | 1.7.3 | 3 | E3 Substructure Work | No | No | Yes | E Execution | 2027-03-18T18:30:00.000Z | 2027-09-01T18:30:00.000Z | 0 | 120 | 120 | Not Started | On Track | 0 | system@app.local | 2026-05-22T07:36:49.511Z | 2026-05-22T07:36:49.511Z | Raya Terraces Module MSP.xml | 2026-05-22T07:36:49.511Z | No | 1.7 |
| 147 | 147 | Raya Terraces Module MSP | 1.7.4 | 3 | E4 Super Structure Work | No | No | Yes | E Execution | 2027-10-14T18:30:00.000Z | 2028-07-19T18:30:00.000Z | 0 | 200 | 200 | Not Started | On Track | 0 | system@app.local | 2026-05-22T07:36:49.511Z | 2026-05-22T07:36:49.511Z | Raya Terraces Module MSP.xml | 2026-05-22T07:36:49.511Z | No | 1.7 |
| 148 | 148 | Raya Terraces Module MSP | 1.7.5 | 3 | E5 Finishing & MEP Work | No | No | Yes | E Execution | 2027-07-08T18:30:00.000Z | 2029-06-20T18:30:00.000Z | 0 | 510 | 510 | Not Started | On Track | 0 | system@app.local | 2026-05-22T07:36:49.511Z | 2026-05-22T07:36:49.511Z | Raya Terraces Module MSP.xml | 2026-05-22T07:36:49.511Z | No | 1.7 |
| 153 | 153 | Raya Terraces Module MSP | 1.7.6 | 3 | E6 Handover | No | No | Yes | E Execution | 2029-11-15T18:30:00.000Z | 2030-02-06T18:30:00.000Z | 0 | 60 | 60 | Not Started | On Track | 0 | system@app.local | 2026-05-22T07:36:49.511Z | 2026-05-22T07:36:49.511Z | Raya Terraces Module MSP.xml | 2026-05-22T07:36:49.511Z | No | 1.7 |
